# Source_data_A1.0

Schedule from Primavera P6, 2019-12-09 to 2021-04-20, data date 2019-12-08.
? / 21/11/17 / Assign Site compund activity codes to serving DES / Increase Main compund duration to 85 days / 13/11/17 / Assign activity codes and revise HS2 chainages (UDF's) for TILOS import. / 'TILOS Import' saved as project layout. / 10/11/17 / Link site compound activities to the work packages they are serving. / Linked as per documents 2DE03-ARP-CL-WKG-L003-000009 & / 2DE03-ARP-CL-WKG-L004-000011 / 08/11/17 / Introduce Jacked box construction template under Community Area: TEMPLATE' / WBS / 03/11/17 / Link GIVE/GETS milestones to GIVE/GETS milestones in the / HS2 Phase 2B - Construction Interface Milestone Schedule / Leeds 'Alternative' nodes removed and content integrated with / main programme / 01/10/17 / Revsied viaduct piers and spans as per revised lengths as per / CP1 DES schedule DES 2DE03-ARP-DS-SCH-L003-000001and / 2DE03-ARP-DS-SCH-L004-000001 / 30/10/17 / Leeds spur work packages and sub-elements revised in / accordance with CP1 DES schedule 2DE03-ARP-DS-SCH-L004-000001 / 24/10/17 / Modify chainages and add new DES and modify existing / DES according to revised DES 2DE03-ARP-DS-SCH-L003-000001 / 20/10/17 / Delete all DNO locations, once DNO locations confirmed add back DNO's / Delete surplus site compounds activities and retain compounds as per / Appendix H2 / Delete surplus material processing plant activities and retain material / processing plant activities with material class 1 & 6 > 100,000 m3 / 19/10/17 / Made 'Start crossings' and 'Piling platform' activities ALAP to follow the / resource levelled 'Piling' activities / Deleted mass haul resources assigned to sub-grade as they were preventing / the activities ALAP constraint pushing them to the end of the earthworks / window for each work package. The downside is there may be a 1,000m3 a day / 'blip' at each WP at the back end. / Cascade the ‘Site haul road’ tasks starting from the transfer node / locations and reference Transfer nodes as per CP1 v0.3 draft TILOS programme / Cascade the ‘Temporary boundary fencing & compound hoarding’ tasks / starting from the transfer node locations / 18/10/17 / Topsoil strip, resoil and sub-ballast activities superseded with mass haul / data imported on 17/10 deleted / Mandatory finish imposed on 'Planned Completion' activity for DA3 of / 30/09/2031 / PLANNING SYSTEMS (HS2) added max output restriction on piling of 22 rigs / per day. NOTE THIS IS A ROUTEWIDE CAP, NOT JUST P2B-DA3 / activities resource levelled based on HS2.DV.P.EO.DA3 and X resources / 17/10/17 / Mass Haul data imported 2DE03-ARP-CL-SCH-L004-000014 P02.1 / 16/10/17 / Adjusted MWCC contract award until 6m after royal assent / All construction works to occur after May 2025 (post 12m detailed design / and ecological mitigation) / PLANNING SYSTEMS (HS2) added resource library for mass haul movements / under HS2.DV.P.EO.DA3 with max output set to 2000m3/d per work package / 11/07/17 / Add activity codes for cut and cover tunnels / 10/17/17 / Add piers to viaducts type 'twin box girders' as per length of the viaduct / 09/10/17 / Add activity codes for viaducts (beam and slab & Box girder) / Renumber activity codes according to work packages / 28/09/17 / Reschedule the programme and check logic for structures / 27/09/17 / Copy 'HS2 procurement' and 'Route wide' wbs from Phase 2a programme (C861 / - CP3) and paste into the level 1 wbs / 26/09/17 / Modify number of piers required for viaduct construction / Modify outputs for cut and cover tunnel and bored tunnels / 05/09/17 / Copy relevant WBS from the construction template to the main programme / work packages / 04/09/17 / Allocation of Plant Resources to Construction template based on 'Design / Snapshot' Appendix G gang codes now complete / Add curing and bearing activities under Overbridge & Viaducts WBS in / the construction template / Appendix G resources added to the HS2 resource library with Noise data and / British standard reference / 30/08/17 / Started assigning Plant Resources to Construction template based on / 'Design Snapshot' Appendix G gang codes / Baseline programme for tracking changes to the template / Revise Footbridge outputs and durations to match up with HS2 outputs / 15/08/2017 / Non-C233 scope deleted from the programme (all under the non-C233 scope / WBS field in 'Design Snapshot'). / WBS - 'Irreconcilable 'Preferred Route B' Content (to be superseded at / CP1)' deleted from the programme / Stripped all remaining Motts logic from the programme (excluding / ecological for now) / Started adding plant resource to the template based on 'Design Snapshot' / Appendix G gang codes / 14/08/2017 / First draft of construction template circulated around the C&L team / for feedback prior to implementation / 11/08/2017 / Started developing a standalone construction template covering all types / of design element excluding depot and station construction, which will be / bespoke items / 27/07/2017 / Programme frozen for design snapshot / 18/07/2017 / Logic linked new scope into existing C321 programme without affecting / existing task start and finish dates to create a representative snapshot / bassline / New culvert activities given a 200d duration and ALAP constraint FS to / fill tasks / new Siphons FF off cuts, again 200d duration / New underbridges 200d and FF 90d to associated roadworks / New Roadworks 150d duration / 10/07/2017 / Assigned new activity IDs to align tasks with DES reference / Delete UDF_Text12 values / 06/07/2017 / Rename C321 activities in accordance with DES / Assign Arup+ chainages / Imported new tasks into programme to cover scope development since C321, / new activities all sat on data date / 05/07/2017 / Amended community area WBS naming convention based on file ref: / 2DE03-ARP-EN-WKG-L000-000001 / Assigned 'C233 Compound Area' project activity codes to programme based on / draft schedules to facilitate preparation of Appendix H1 - Compounds for / Design Snapshot / Global change to move C321 activity names into UDF_Text11 for record / purposes / 04/07/2017 / Moved Lot 2 and Rail Systems related activities to new WBS field / 'non C233 scope' / Created new WBS structure based on Snapshot DES ref: / 2DE03-ARP-DS-SCH-L003-000001 & 2DE03-ARP-DS-SCH-L004-000001 and by / community area. / Write access granted by HS2 to Tom Honnywill Arup+ / Generic programme content specific to now defunct HSL areas has been / grouped under WBS 'Irreconcilable 'Preferred Route' content, to be superseded / at CP1 / 23/06/2017 / All WBS and activities from 'PSC Phase 2B - C321 - Motts Construction / Programme' copied into programme / Global change - C321 IDs saved under UDF 'UDF_Text10'; these IDs are to be / retained as they are used to update TILOS as the VC321 tasks will become the / work package summary activities in this programme. <Change log> / WBS structure added to Community Area level (work packages TBC) / based on file '170605 Phase Two - WBS v2.2 (002) by Design Lots For Amendments / (002).xlsx received from Nick Edwards on 16/06/17. / C321 programme baselined / ? / UDF Allocations: / UDF_Text01 / Unit / UDF_Text02 / Quantity / UDF_Text03 / Output / UDF_Text04 / Appendix G ref. / UDF_Text05 / Assumptions / Comments – PRA / UDF_Text06 / UDF_Text07 / UDF_Text08 / UDF_Text09 / UDF_Text10 / Motts AID / UDF_Text11 / Motts Act. Name / UDF_Integer / Uncertainty Minimum Duration as % of Remaining / Duration – PRA Configuration / UDF_Integer1 / Uncertainty Maximum Duration as % of Remaining / Duration – PRA Configuration / UDF_Integer2 / Uncertainty Minimum – PRA / Configuration / UDF_Number / Uncertainty Most Likely Duration – PRA / Configuration / UDF_Number1 / Uncertainty Maximum Duration – PRA / Configuration / Chainage adjustements made to 'HS2 Start Ch' and 'HS2 End Ch' fields for / TILOS: / SY / -100,000 / L / +100,000 / LS / +100,000 / T / +110,000 / S / +200,000
Must finish by 2033-12-31

## Calendars

- HS2 - 8h x 5d Workweek (Nonwork Bank Holidays and 1w Xmas) [upto 2040] DEFAULT: Mon-Fri 08:00-16:00; Sat-Sun off. Exceptions (off unless hours are given): 2019-12-25 to 2019-12-27, 2019-12-30 to 2020-01-01, 2020-04-10, 2020-04-13, 2020-05-08, 2020-05-25, 2020-08-31, 2020-12-25, 2020-12-28 to 2021-01-01, 2021-04-02, 2021-04-05.
- HS2 - 24h x 7d Workweek (No Holidays): Mon-Sun 00:00-00:00.

## Schedule

| ID | WBS | Activity | Type | Duration | Start | Finish | Predecessors | Total float | Free float | Constraint | Calendar |
| --- | --- | --- | --- | --- | --- | --- | --- | --- | --- | --- | --- |
|  | 007 | **Work Package 007** |  |  | 2019-12-09 | 2021-04-20 |  |  |  |  |  |
|  | BOXJ | **Jacked Box Under a Road** |  |  | 2019-12-09 | 2021-04-20 |  |  |  |  |  |
| A1000 |  | Box jacked under a road | WBS summary | 338d | 2019-12-09 | 2021-04-20 |  | 0d |  |  |  |
| A1010 |  | Start crossing | milestone | 0d | 2019-12-09 | 2019-12-09 |  | 1392d | 0d | as late as possible |  |
| A1020 |  | Finish crossing | milestone | 0d | 2021-04-20 | 2021-04-20 | A1200 FF, A1100 FF, A1120 FF, A1220 FF | 0d |  | finish on or before 2021-04-20 |  |
|  | S1 | **Section 1** |  |  | 2019-12-09 | 2020-12-11 |  |  |  |  |  |
|  | 1 | **Box construction** |  |  | 2019-12-09 | 2020-07-31 |  |  |  |  |  |
| A1030 |  | FRC slab (box) |  | 30d | 2019-12-09 | 2020-01-27 |  | 0d |  |  |  |
| A1040 |  | FRC walls (box) |  | 65d | 2020-01-28 | 2020-04-29 | A1030 | 0d |  |  |  |
| A1050 |  | FRC soffit (box) |  | 40d | 2020-04-30 | 2020-06-26 | A1040 | 0d |  |  |  |
| A1060 |  | Curing & strike shutters |  | 20d | 2020-06-29 | 2020-07-24 | A1050 | 0d |  |  |  |
| A1070 |  | Waterproofing |  | 5d | 2020-07-27 | 2020-07-31 | A1060 | 0d |  |  |  |
|  | 2 | **Finishes** |  |  | 2020-11-16 | 2020-12-11 |  |  |  |  |  |
| A1120 |  | Track drainage & preperation |  | 20d | 2020-11-16 | 2020-12-11 | A1070, A1090 | 84d |  |  |  |
|  | 7 | **Box jacking** |  |  | 2020-08-03 | 2020-11-27 |  |  |  |  |  |
| A1080 |  | Set up jacking rig (1st summer season) |  | 60d | 2020-08-03 | 2020-10-26 | A1040, A1070 | 0d |  |  |  |
| A1090 |  | Jack box & excavate to formation |  | 20d | 2020-10-27 | 2020-11-16 | A1080, A1110 | 0d |  |  | HS2 - 24h x 7d Workweek (No Holidays) |
| A1110 |  | Close road | milestone | 0d | 2020-10-27 | 2020-10-27 | A1060, A1080 | 0d |  |  |  |
| A1100 |  | Demobilise jacking rig |  | 10d | 2020-11-16 | 2020-11-27 | A1090 | 0d |  |  |  |
|  | S2 | **Section 2** |  |  | 2019-12-09 | 2021-04-20 |  |  |  |  |  |
|  | 1 | **Box construction** |  |  | 2019-12-09 | 2020-07-31 |  |  |  |  |  |
| A1130 |  | FRC slab (box) |  | 30d | 2019-12-09 | 2020-01-27 | A1010 SS, A1030 SS | 84d | 0d |  |  |
| A1140 |  | FRC walls (box) |  | 65d | 2020-01-28 | 2020-04-29 | A1130 | 84d | 0d |  |  |
| A1150 |  | FRC soffit (box) |  | 40d | 2020-04-30 | 2020-06-26 | A1140 | 84d | 0d |  |  |
| A1160 |  | Curing & strike shutters |  | 20d | 2020-06-29 | 2020-07-24 | A1150 | 84d | 0d |  |  |
| A1170 |  | Waterproofing |  | 5d | 2020-07-27 | 2020-07-31 | A1160 | 84d |  |  |  |

| ID | WBS | Activity | Type | Duration | Start | Finish | Predecessors | Total float | Calendar |
| --- | --- | --- | --- | --- | --- | --- | --- | --- | --- |
|  | 7 | **Box jacking** |  |  | 2020-11-30 | 2021-04-06 |  |  |  |
| A1180 |  | Set up Jacking rig |  | 60d | 2020-11-30 | 2021-03-01 | A1140, A1100, A1170 | 0d |  |
| A1190 |  | Jack box & excavate to formation |  | 20d | 2021-03-02 | 2021-03-22 | A1180, A1210 | 0d | HS2 - 24h x 7d Workweek (No Holidays) |
| A1210 |  | Close road | milestone | 0d | 2021-03-02 | 2021-03-02 | A1160, A1180 | 0d |  |
| A1200 |  | Demobilise jacking rig |  | 10d | 2021-03-22 | 2021-04-06 | A1190 | 10d |  |
|  | 2 | **Finishes** |  |  | 2021-03-22 | 2021-04-20 |  |  |  |
| A1220 |  | Track preperation |  | 20d | 2021-03-22 | 2021-04-20 | A1170, A1190 | 0d |  |
