# Project W4 GRIP 4 SI/GI Programme

Schedule from Primavera P6, 2019-04-20 to 2021-06-11, data date 2020-07-05, A marks actual dates.

## Calendars

- A04 7 Day Workweek (BH & Xmas as Work): Mon-Sun 08:00-12:00, 13:00-17:00.
- A03 5 Day Workweek (BH & Xmas as Work): Mon-Fri 08:00-12:00, 13:00-17:00; Sat-Sun off.
- A02 5 Day Workweek (BH as Work & Xmas as Non-Work): Mon-Fri 08:00-12:00, 13:00-17:00; Sat-Sun off. Exceptions (off unless hours are given): 2019-12-23 to 2019-12-27, 2019-12-30 to 2020-01-03.

## Schedule

| ID | WBS | Activity | Type | Duration | Start | Finish | Predecessors | Complete | Planned start | Planned finish | Total float | Free float | Text 1 | Comment | Company Responsible | Location / ELR | GI Reference Number | On-Track Off-Track | Week Number | Weekend/Midweek | Location | Discipline | 02.3 Progress Note | 12.2 Progress Note | Mileage | Access Point | 03.1 Progress Note |
| --- | --- | --- | --- | --- | --- | --- | --- | --- | --- | --- | --- | --- | --- | --- | --- | --- | --- | --- | --- | --- | --- | --- | --- | --- | --- | --- | --- |
| A72630 |  | Project Start | milestone | 0d | 2019-05-18 A | 2019-05-18 A |  | 100% | 2020-03-15 | 2020-03-15 |  |  |  |  |  |  |  |  |  |  |  |  |  |  |  |  |  |
| A72640 |  | Project Completion | milestone | 0d | 2021-06-11 | 2021-06-11 | A45970, A75060, A75050, A75070, A75090, A75110, A75150, A75160 |  |  |  | 0d |  |  |  |  |  |  |  |  |  |  |  |  |  |  |  |  |
|  | 3 | **GRIP 4 DESIGN** |  |  |  |  |  |  |  |  |  |  |  |  |  |  |  |  |  |  |  |  |  |  |  |  |  |
|  | 5 | **External Interface Milestones** |  |  | 2020-05-11 | 2021-06-11 |  |  |  |  |  |  |  |  |  |  |  |  |  |  |  |  |  |  |  |  |  |
|  | 1 | **EXT IN** |  |  |  |  |  |  |  |  |  |  |  |  |  |  |  |  |  |  |  |  |  |  |  |  |  |
|  | 2 | **EXT OUT** |  |  | 2020-05-11 | 2021-06-11 |  |  |  |  |  |  |  |  |  |  |  |  |  |  |  |  |  |  |  |  |  |
|  | 5 | **Legacy Info to be removed 13032020?** |  |  |  |  |  |  |  |  |  |  |  |  |  |  |  |  |  |  |  |  |  |  |  |  |  |
|  | 1 | **SECTION A - 33m 42ch to 34m 54ch** |  |  | 2020-05-11 | 2020-12-11 |  |  |  |  |  |  |  |  |  |  |  |  |  |  |  |  |  |  |  |  |  |
| A65330.271 |  | [EXT OUT] Structural Off-Track Drainage - Survey Info Available - DESCOPED | milestone | 0d | 2020-05-11 A | 2020-05-11 A |  | 100% |  |  |  |  | W46 | GINNY BAYNES | Amey | Design Team: Structures | DESCOPED | On Track | Interface | Weekend | Batley to Morley Tunnel | Interface Milestone | 200518 JM - being pushed by data date |  |  |  |  |
| A65330.431 |  | [EXT OUT] Off-Track Survey - Dewsbury Station inc. Roads & MDL1/16 George St, MDL1/17 Ashworth Gardens - Data Available | milestone | 0d | 2020-06-02 A | 2020-06-02 A | A65780 | 100% | 2020-06-22 | 2020-06-22 |  |  | W46 |  | Bam Nuttall | TOPOGRAPHICAL SURVEY | Rail Strings & Referenced Structures | On Track | Interface | Weekend | Batley to Morley Tunnel | Interface Milestone |  |  |  |  |  |
| A65330.441 |  | [EXT OUT] Track Survey - 34m 10ch to 34m 30ch // Off-Track - Dewsbury Disused Tunnel, MDL1/23 Wood Lane - Data Available | milestone | 0d | 2020-07-17 | 2020-07-17 | A70320 |  |  |  | 329d | 0d | W46 |  | Bam Nuttall | TOPOGRAPHICAL SURVEY | Rail Strings | On Track | Interface | Weekend | Batley to Morley Tunnel | Interface Milestone |  |  |  |  |  |
| A65330.141 |  | [EXT OUT] ABS - Survey Info Available | milestone | 0d | 2020-07-31 | 2020-07-31 | A62690 |  |  |  | 123d | 0d | W46 | JAMES BACKHURST MARK BOTTOMLEY MATT GREEN | Bam Nuttall | Design Team: Track Bed Investigation |  | On Track | Interface | Weekend | Batley to Morley Tunnel | Interface Milestone | 200518 JM - report likely on this date | 200214 CV - NEW Now inter-project linked |  |  |  |
| A65330.361 |  | [EXT OUT] Dewsbury Station GPR - Survey Info Available | milestone | 0d | 2020-08-14 | 2020-08-14 | A69290 |  |  |  | 152d | 0d | W46 | JOHN KELLY | Amey | Design Team: Stations |  | On Track | Interface | Weekend | Batley to Morley Tunnel | Interface Milestone |  |  |  |  |  |
| A65330.381 |  | [EXT OUT] Dewsbury Station Off-Track Drainage - Survey Info Available | milestone | 0d | 2020-08-14 | 2020-08-14 | A69330 |  |  |  | 152d | 0d | W46 | JOHN KELLY | Amey | Design Team: Stations |  | On Track | Interface | Weekend | Batley to Morley Tunnel | Interface Milestone |  |  |  |  |  |
| A65330.451 |  | [EXT OUT] Track Survey - 34m 30ch to 34m 60ch // Off-Track - MDL1/24 Jack Lane - Data Available | milestone | 0d | 2020-08-14 | 2020-08-14 | A70260 |  |  |  | 202d | 0d | W46 |  | Bam Nuttall | TOPOGRAPHICAL SURVEY | Rail Strings | On Track | Interface | Weekend | Batley to Morley Tunnel | Interface Milestone |  |  |  |  |  |
| A65330.251 |  | [EXT OUT] Structural Trial Pits - Survey Info Available | milestone | 0d | 2020-09-04 | 2020-09-04 | A63010, A63250 |  |  |  | 280d | 0d | W46 | GINNY BAYNES | Amey | Design Team: Structures | MDL1/16 & MDL1/23 | On Track | Interface | Weekend | Batley to Morley Tunnel | Interface Milestone |  |  |  |  |  |
| A65330.151 |  | [EXT OUT] Window Samples - Survey Info Available | milestone | 0d | 2020-09-18 | 2020-09-18 | A62810 |  |  |  | 74d | 35d | W46 | JAMES BACKHURST MARK BOTTOMLEY MATT GREEN | Amey | Design Team: Track Bed Investigation |  | On Track | Interface | Weekend | Batley to Morley Tunnel | Interface Milestone |  | 200214 CV - NEW Now inter-project linked |  |  |  |
| A65330.161 |  | [EXT OUT] Trial Pits - Survey Info Available | milestone | 0d | 2020-09-28 | 2020-09-28 | A62770 |  |  |  | 20d | 0d | W46 | JAMES BACKHURST MARK BOTTOMLEY MATT GREEN | Amey | Design Team: Track Bed Investigation |  | On Track | Interface | Weekend | Batley to Morley Tunnel | Interface Milestone |  | 200214 CV - NEW Now inter-project linked |  |  |  |
| A65330.351 |  | [EXT OUT] Dewsbury Station: Coring, Trial Pits & Paint Samples - Survey Info Available | milestone | 0d | 2020-10-02 | 2020-10-02 | A63850, A63890, A63930 |  |  |  | 103d | 0d | W46 | JOHN KELLY | Amey/Bam Nuttall | Design Team: Stations |  | On Track | Interface | Weekend | Batley to Morley Tunnel | Interface Milestone | 200518 JM - Station manager approval required |  |  |  |  |
| A65330.371 |  | [EXT OUT] Dewsbury Station Asbestos - Survey Info Available | milestone | 0d | 2020-10-16 | 2020-10-16 | A69250 |  |  |  | 89d | 0d | W46 | JOHN KELLY | Amey | Design Team: Stations |  | On Track | Interface | Weekend | Batley to Morley Tunnel | Interface Milestone |  |  |  |  |  |
| A65330.261 |  | [EXT OUT] Structural Coring & Paint Samples - Survey Info Available | milestone | 0d | 2020-10-30 | 2020-10-30 | A62970, A68830, A63930 |  |  |  | 224d | 0d | W46 | GINNY BAYNES | Amey/Bam Nuttall | Design Team: Structures | MDL1/16, MDL1/19 & MDL1/23 | On Track | Interface | Weekend | Batley to Morley Tunnel | Interface Milestone | 200518 JM - slippage due to Heritage Approval |  |  |  |  |
| A65330.591 |  | [EXT OUT] Drainage - Survey Info Available | milestone | 0d | 2020-11-13 | 2020-11-13 | A66430 |  |  |  | 210d | 0d | W46 | BANDANA SHRESTHA | Amey | Design Team: Drainage |  | On Track | Interface | Weekend | Batley to Morley Tunnel | Interface Milestone | 200518 JM - teething troubles with new supplier |  |  |  |  |
| A65330.171 |  | [EXT OUT] Boreholes - Survey Info Available | milestone | 0d | 2020-12-11 | 2020-12-11 | A68130 |  |  |  | -5d | 0d | W46 | JAMES BACKHURST MARK BOTTOMLEY MATT GREEN | Bam Nuttall | Design Team: Track Bed Investigation |  | On Track | Interface | Weekend | Batley to Morley Tunnel | Interface Milestone |  | 200214 CV - NEW Now inter-project linked |  |  |  |
|  | 2 | **SECTION B - 34m 54ch to 38m 10ch** |  |  | 2020-05-11 | 2020-12-01 |  |  |  |  |  |  |  |  |  |  |  |  |  |  |  |  |  |  |  |  |  |
| A65330.301 |  | [EXT OUT] Structural Off-Track Drainage - Survey Info Available - DESCOPED | milestone | 0d | 2020-05-11 A | 2020-05-11 A |  | 100% |  |  |  |  | W46 | GINNY BAYNES | Amey | Design Team: Structures | DESCOPED | On Track | Interface | Weekend | Batley to Morley Tunnel | Interface Milestone |  |  |  |  |  |
| A65330.201 |  | [EXT OUT] Trial Pits - Survey Info Available - DESCOPED | milestone | 0d | 2020-05-22 A | 2020-05-22 A | A68250 FF | 100% |  |  |  |  | W46 | JAMES BACKHURST MARK BOTTOMLEY MATT GREEN | Amey | Design Team: Track Bed Investigation | TRIAL PITS DESCOPED | On Track | Interface | Weekend | Batley to Morley Tunnel | Interface Milestone |  | 200214 CV - NEW Now inter-project linked | DESCOPED | DESCOPED |  |
| A65330.461 |  | [EXT OUT] Track Survey - 34m70ch - 35m30ch - Fence to Fence Where Possible inc. Platforms - Data Available | milestone | 0d | 2020-07-05 | 2020-07-05 | A65830 |  |  |  | 342d | 11d | W46 |  | Bam Nuttall | TOPOGRAPHICAL SURVEY | Rail Strings | On Track | Interface | Weekend | Batley to Morley Tunnel | Interface Milestone |  |  |  |  |  |
| A65330.471 |  | [EXT OUT] Batley Station On & Off Track Survey & MDL1/27, MDL1/28, MDL1/29 - Data Available | milestone | 0d | 2020-07-31 | 2020-07-31 | A69660 |  |  |  | 222d | 0d | W46 |  | Bam Nuttall | TOPOGRAPHICAL SURVEY | Rail Strings & Referenced Structures | On Track | Interface | Weekend | Batley to Morley Tunnel | Interface Milestone |  |  |  |  |  |
| A65330.281 |  | [EXT OUT] Structural Trial Pits - Survey Info Available | milestone | 0d | 2020-08-14 | 2020-08-14 | A68790, A63490 |  |  |  | 301d | 0d | W46 | GINNY BAYNES | Amey | Design Team: Structures | MDL1/29, MDL1/33 & MDL1/36/P2 | On Track | Interface | Weekend | Batley to Morley Tunnel | Interface Milestone |  |  |  |  |  |
| A65330.311 |  | [EXT OUT] Structural Slit Trench/GPR - Survey Info Available | milestone | 0d | 2020-08-14 | 2020-08-14 | A63530 |  |  |  | 301d | 0d | W46 | GINNY BAYNES | Amey/Bam Nuttall | Design Team: Structures | MDL1/29 & MDL1/36/P2 | On Track | Interface | Weekend | Batley to Morley Tunnel | Interface Milestone |  |  |  |  |  |
| A65330.401 |  | [EXT OUT] Batley Station GPR - Survey Info Available | milestone | 0d | 2020-08-14 | 2020-08-14 | A69170 |  |  |  | 208d | 0d | W46 | JOHN KELLY | Amey | Design Team: Stations |  | On Track | Interface | Weekend | Batley to Morley Tunnel | Interface Milestone |  |  |  |  |  |
| A65330.421 |  | [EXT OUT] Batley Station Off-Track Drainage - Survey Info Available | milestone | 0d | 2020-08-14 | 2020-08-14 | A69210 |  |  |  | 208d | 0d | W46 | JOHN KELLY | Amey | Design Team: Stations |  | On Track | Interface | Weekend | Batley to Morley Tunnel | Interface Milestone |  |  |  |  |  |
| A65330.481 |  | [EXT OUT] Track Survey 35m 30ch to 35m 70ch - Data Available | milestone | 0d | 2020-08-19 | 2020-08-19 | A69710 |  |  |  | 296d | 0d | W46 |  | Bam Nuttall | TOPOGRAPHICAL SURVEY | Rail Strings | On Track | Interface | Weekend | Batley to Morley Tunnel | Interface Milestone |  |  |  |  |  |
| A65330.491 |  | [EXT OUT] Track Survey 35m 70ch to 36m 20ch inc. MDL1/34, MDL1/35 - Data Available | milestone | 0d | 2020-08-19 | 2020-08-19 | A69770 |  |  |  | 296d | 0d | W46 |  | Bam Nuttall | TOPOGRAPHICAL SURVEY | Rail Strings | On Track | Interface | Weekend | Batley to Morley Tunnel | Interface Milestone |  |  |  |  |  |
| A65330.631 |  | [EXT OUT] Morley Tunnel Trial Pits - Survey Info Available | milestone | 0d | 2020-08-21 | 2020-08-21 | A64090 |  |  |  | 294d | 0d | W46 | JAMES BACKHURST MARK BOTTOMLEY MATT GREEN | Amey | Design Team: Tunnels |  | On Track | Interface | Weekend | Batley to Morley Tunnel | Interface Milestone |  |  |  |  |  |
| A65330.241 |  | [EXT OUT] Boreholes - Survey Info Available | milestone | 0d | 2020-09-18 | 2020-09-18 | A68210 |  |  |  | 30d | 0d | W46 | JAMES BACKHURST MARK BOTTOMLEY MATT GREEN | Bam Nuttall | Design Team: Track Bed Investigation |  | On Track | Interface | Weekend | Batley to Morley Tunnel | Interface Milestone |  | 200214 CV - NEW Now inter-project linked |  |  |  |
| A65330.411 |  | [EXT OUT] Batley Station Asbestos - Survey Info Available | milestone | 0d | 2020-09-18 | 2020-09-18 | A69130 |  |  |  | 173d | 0d | W46 | JOHN KELLY | Amey | Design Team: Stations |  | On Track | Interface | Weekend | Batley to Morley Tunnel | Interface Milestone |  |  |  |  |  |
| A65330.651 |  | [EXT OUT] Morley Tunnel Geophysics - Survey Info Available | milestone | 0d | 2020-10-02 | 2020-10-02 | A69090 |  |  |  | 135d | 0d | W46 | JAMES BACKHURST MARK BOTTOMLEY MATT GREEN | Amey | Design Team: Tunnels |  | On Track | Interface | Weekend | Batley to Morley Tunnel | Interface Milestone |  |  |  |  |  |
| A65330.501 |  | [EXT OUT] Morley Tunnel Survey 36m 20ch to 38m 20ch - Data Available | milestone | 0d | 2020-10-07 | 2020-10-07 | A69830 |  |  |  | 247d | 0d | W46 |  | Bam Nuttall | TOPOGRAPHICAL SURVEY | Rail Strings | On Track | Interface | Weekend | Batley to Morley Tunnel | Interface Milestone |  |  |  |  |  |
| A65330.181 |  | [EXT OUT] ABS (On Track) - Survey Info Available | milestone | 0d | 2020-10-16 | 2020-10-16 | A68170 |  |  |  | 9d | 0d | W46 | JAMES BACKHURST MARK BOTTOMLEY MATT GREEN | Bam Nuttall | Design Team: Track Bed Investigation |  | On Track | Interface | Weekend | Batley to Morley Tunnel | Interface Milestone |  | 200214 CV - NEW Now inter-project linked |  |  | 200530 CV - Survey Critical |
| A65330.391 |  | [EXT OUT] Batley Station: Coring & Paint Samples - Survey Info Available | milestone | 0d | 2020-10-16 | 2020-10-16 | A63970, A64010 |  |  |  | 145d | 0d | W46 | JOHN KELLY | Amey/Bam Nuttall | Design Team: Stations |  | On Track | Interface | Weekend | Batley to Morley Tunnel | Interface Milestone |  |  |  |  |  |
| A65330.291 |  | [EXT OUT] Structural Coring - Survey Info Available | milestone | 0d | 2020-10-23 | 2020-10-23 | A68870, A68910, A63770, A63450 |  |  |  | 231d | 0d | W46 | GINNY BAYNES | Amey/Bam Nuttall | Design Team: Structures | MDL1/29, MDL1/33, MDL1/36/B1 & MDL1/36/P2 | On Track | Interface | Weekend | Batley to Morley Tunnel | Interface Milestone | 200518 JM - working at height issues |  |  |  |  |
| A65330.601 |  | [EXT OUT] Drainage - Survey Info Available | milestone | 0d | 2020-11-13 | 2020-11-13 | A68750 |  |  |  | 210d | 0d | W46 | BANDANA SHRESTHA | Amey | Design Team: Drainage |  | On Track | Interface | Weekend | Batley to Morley Tunnel | Interface Milestone |  |  |  |  |  |
| A65330.641 |  | [EXT OUT] Morley Tunnel Drainage (Tunnel Bore & Portals) - Survey Info Available | milestone | 0d | 2020-11-13 | 2020-11-13 | A66350 |  |  |  | 210d | 0d | W46 | JAMES BACKHURST BANDANA SHRESTHA MARK BOTTOMLEY MATT GREEN | Amey | Design Team: Tunnels |  | On Track | Interface | Weekend | Batley to Morley Tunnel | Interface Milestone |  |  |  |  |  |
| A65330.621 |  | [EXT OUT] Morley Tunnel Coring - Survey Info Available | milestone | 0d | 2020-11-27 | 2020-11-27 | A64050 |  |  |  | 196d | 0d | W46 | JAMES BACKHURST MARK BOTTOMLEY MATT GREEN | Amey/Bam Nuttall | Design Team: Tunnels |  | On Track | Interface | Weekend | Batley to Morley Tunnel | Interface Milestone |  |  |  |  |  |
| A65330.191 |  | [EXT OUT] Window Samples - Survey Info Available | milestone | 0d | 2020-12-01 | 2020-12-01 | A68290 |  |  |  | 5d | 0d | W46 | JAMES BACKHURST MARK BOTTOMLEY MATT GREEN | Amey | Design Team: Track Bed Investigation |  | On Track | Interface | Weekend | Batley to Morley Tunnel | Interface Milestone | 200518 JM - date under pressure | 200214 CV - NEW Now inter-project linked |  |  |  |

Notes:
- A65330.271: General Comments: 25/03 - Moving with data date. No plan received for these / works.
- A65330.141: General Comments: 25/03 - Cancellation of Midweek 52 works due to COVID-19. 24no ABS / resceduled around access availability.
- A65330.371: General Comments: 25/03 - Possession limits for week 5 (original plan) changed, no longer / being suitable for the works. Moved to week 8.
- A65330.401: General Comments: 25/03 - Cancellation of Midweek 52 works due to COVID-19. GPR / resceduled around access & resource availability.
- A65330.411: General Comments: 25/03 - Possession limits for week 5 (original plan) changed, no longer / being suitable for the works. Moved to week 7
- A65330.181: General Comments: 25/03 - Cancellation of Midweek 52 works due to COVID-19. 24no ABS / resceduled around access availability.
- A65330.601: General Comments: 25/03 - Further delay to getting supplier under contract. Advised by Ben / Cantrell (Amey Rail Systems PM) to push works back 3 weeks to allow for / contractual issues to be sorted.

| ID | WBS | Activity | Type | Duration | Start | Finish | Predecessors | Total float | Free float | Text 1 | Company Responsible | Location / ELR | GI Reference Number | On-Track Off-Track | Week Number | Weekend/Midweek | Location | Discipline | Comment | 12.2 Progress Note | 02.3 Progress Note |
| --- | --- | --- | --- | --- | --- | --- | --- | --- | --- | --- | --- | --- | --- | --- | --- | --- | --- | --- | --- | --- | --- |
|  | 3 | **SECTION C - 39m 62ch to 41m 78ch** |  |  | 2020-07-24 | 2020-12-01 |  |  |  |  |  |  |  |  |  |  |  |  |  |  |  |
| A65330.511 |  | [EXT OUT] Track Survey - 39m 60ch to 40m 30ch Churwell Viaduct - Data Available | milestone | 0d | 2020-07-24 | 2020-07-24 | A69960 | 322d | 0d | W46 | Bam Nuttall | TOPOGRAPHICAL SURVEY | Rail Strings | On Track | Interface | Weekend | Batley to Morley Tunnel | Interface Milestone |  |  |  |
| A65330.541 |  | [EXT OUT] Track Survey - 40m 30ch to 41m 10ch - Data Available | milestone | 0d | 2020-07-24 | 2020-07-24 | A70140 | 322d | 0d | W46 | Bam Nuttall | TOPOGRAPHICAL SURVEY | Rail Strings | On Track | Interface | Weekend | Batley to Morley Tunnel | Interface Milestone |  |  |  |
| A65330.551 |  | [EXT OUT] Track Survey - 41m 10ch to 41m 40ch & Off Track - MDL1/47 Whitehall Road / Dragon bridge - Data Available | milestone | 0d | 2020-07-24 | 2020-07-24 | A69900 | 322d | 13d | W46 | Bam Nuttall | TOPOGRAPHICAL SURVEY | Rail Strings & Referenced Structures | On Track | Interface | Weekend | Batley to Morley Tunnel | Interface Milestone |  |  |  |
| A65330.531 |  | [EXT OUT] Off-Track Survey - MDL1/41A Cottingley Footbridge - Data Available | milestone | 0d | 2020-08-06 | 2020-08-06 | A70090 | 309d | 0d | W46 | Bam Nuttall | TOPOGRAPHICAL SURVEY | Referenced Structures | On Track | Interface | Weekend | Batley to Morley Tunnel | Interface Milestone |  |  |  |
| A65330.521 |  | [EXT OUT] Off-Track Survey - MDL1/40 Churwell Viaduct - Data Available | milestone | 0d | 2020-08-07 | 2020-08-07 | A70030 | 308d | 0d | W46 | Bam Nuttall | TOPOGRAPHICAL SURVEY | Referenced Structures | On Track | Interface | Weekend | Batley to Morley Tunnel | Interface Milestone |  |  |  |
| A65330.231 |  | [EXT OUT] Trial Pits - Survey Info Available | milestone | 0d | 2020-08-14 | 2020-08-14 | A62890 | 65d | 0d | W46 | Amey | Design Team: Track Bed Investigation |  | On Track | Interface | Weekend | Batley to Morley Tunnel | Interface Milestone | JAMES BACKHURST MARK BOTTOMLEY MATT GREEN | 200214 CV - NEW Now inter-project linked |  |
| A65330.321 |  | [EXT OUT] Structural Trial Pits - Survey Info Available | milestone | 0d | 2020-08-14 | 2020-08-14 | A63570, A63650 | 301d | 0d | W46 | Amey | Design Team: Structures | MDL1/41 & MDL1/47 | On Track | Interface | Weekend | Batley to Morley Tunnel | Interface Milestone | GINNY BAYNES |  |  |
| A65330.571 |  | [EXT OUT] Off-Track Survey - MDL1/48 Search's Footbridge - Data Available | milestone | 0d | 2020-08-21 | 2020-08-21 | A70210 | 294d | 0d | W46 | Bam Nuttall | TOPOGRAPHICAL SURVEY | Referenced Structures | On Track | Interface | Weekend | Batley to Morley Tunnel | Interface Milestone |  |  | 200518 JM - teething troubles new supplier |
| A65330.341 |  | [EXT OUT] Structural Off-Track Drainage - Survey Info Available | milestone | 0d | 2020-09-18 | 2020-09-18 | A69530 | 266d | 0d | W46 | Amey | Design Team: Structures | MDL1/43 & MDL1/47 | On Track | Interface | Weekend | Batley to Morley Tunnel | Interface Milestone | GINNY BAYNES |  |  |
| A65330.331 |  | [EXT OUT] Structural Coring & Paint Samples - Survey Info Available | milestone | 0d | 2020-10-02 | 2020-10-02 | A63810, A68950, A63690, A63730 | 252d | 0d | W46 | Amey/Bam Nuttall | Design Team: Structures | MDL1/40, MDL1/41, MDL1/47 & MDL1/51 | On Track | Interface | Weekend | Batley to Morley Tunnel | Interface Milestone | GINNY BAYNES |  |  |
| A65330.211 |  | [EXT OUT] ABS (On Track) - Survey Info Available | milestone | 0d | 2020-10-16 | 2020-10-16 | A62850 | 46d | 0d | W46 | Bam Nuttall | Design Team: Track Bed Investigation |  | On Track | Interface | Weekend | Batley to Morley Tunnel | Interface Milestone | JAMES BACKHURST MARK BOTTOMLEY MATT GREEN | 200214 CV - NEW Now inter-project linked |  |
| A65330.581 |  | [EXT OUT] Track Survey - 41m40ch to 42m20ch - Data Available | milestone | 0d | 2020-10-16 | 2020-10-16 | A66670 | 238d | 0d | W46 | Bam Nuttall | TOPOGRAPHICAL SURVEY | Rail Strings | On Track | Interface | Weekend | Batley to Morley Tunnel | Interface Milestone |  |  |  |
| A65330.611 |  | [EXT OUT] Drainage - Survey Info Available | milestone | 0d | 2020-10-23 | 2020-10-23 | A66390 | 49d | 0d | W46 | Amey | Design Team: Drainage |  | On Track | Interface | Weekend | Batley to Morley Tunnel | Interface Milestone | BANDANA SHRESTHA |  |  |
| A65330.561 |  | [EXT OUT] Track Survey - MDL1/49 to DOL2/41 - Data Available | milestone | 0d | 2020-11-06 | 2020-11-06 | A66730 | 217d | 0d | W46 | Bam Nuttall | TOPOGRAPHICAL SURVEY | Rail Strings | On Track | Interface | Weekend | Batley to Morley Tunnel | Interface Milestone |  |  |  |
| A65330.221 |  | [EXT OUT] Window Samples - Survey Info Available | milestone | 0d | 2020-12-01 | 2020-12-01 | A62930 | 0d | 2d | W46 | Amey | Design Team: Track Bed Investigation |  | On Track | Interface | Weekend | Batley to Morley Tunnel | Interface Milestone | JAMES BACKHURST MARK BOTTOMLEY MATT GREEN | 200214 CV - NEW Now inter-project linked |  |
|  | 4 | **FULL W4 MILEAGE - 33m 42ch to 41m 78ch** |  |  | 2020-08-14 | 2021-06-11 |  |  |  |  |  |  |  |  |  |  |  |  |  |  |  |
| A65330.681 |  | [EXT OUT] Gauging - Survey Info Available | milestone | 0d | 2020-08-14 | 2020-08-14 | A70620 | 103d | 0d | W46 | Amey | Design Team: Track |  | On Track | Interface | Weekend | Batley to Morley Tunnel | Interface Milestone | JAMES BACKHURST |  |  |
| A65330.691 |  | [EXT OUT] Pedestrian Flow - Survey Info Available | milestone | 0d | 2020-08-14 | 2020-08-14 | A70580 | 269d | 0d | W46 | Amey | Design Team: |  | On Track | Interface | Weekend | Batley to Morley Tunnel | Interface Milestone |  |  |  |
| A65330.721 |  | [EXT OUT] Telecoms: Cable Route - Survey Info Available | milestone | 0d | 2020-08-14 | 2020-08-14 | A69370 | 68d | 0d | W46 | Amey | Design Team: Telecoms |  | On Track | Interface | Weekend | Batley to Morley Tunnel | Interface Milestone | JOHN HOLLAND |  |  |
| A65330.701 |  | [EXT OUT] Off-Track Culvert Inspections - Survey Info Available | milestone | 0d | 2020-08-28 | 2020-08-28 | A70540 | 287d | 0d | W46 | Bam Nuttall | Design Team: Drainage |  | On Track | Interface | Weekend | Batley to Morley Tunnel | Interface Milestone | BANDANA SHRESTHA |  |  |
| A65330.711 |  | [EXT OUT] E&P - Survey Info Available | milestone | 0d | 2020-09-09 | 2020-09-09 | A70500 | 270d | 0d | W46 | Amey | Design Team: E&P |  | On Track | Interface | Weekend | Batley to Morley Tunnel | Interface Milestone | PAUL BRITNELL |  |  |
| A65330.731 |  | [EXT OUT] Telecoms: SISS, Cable Verification & Fringe Signal Box - Survey Info Available | milestone | 0d | 2020-09-11 | 2020-09-11 | A70460 | 96d | 0d | W46 | Amey | Design Team: Telecoms |  | On Track | Interface | Weekend | Batley to Morley Tunnel | Interface Milestone | JOHN HOLLAND |  |  |
| A65330.671 |  | [EXT OUT] Powerline Crossings / Heights & Staggers / Bonding - Survey Info Available | milestone | 0d | 2020-09-18 | 2020-09-18 | A69050 | 263d | 0d | W46 | Bam Nuttall | Design Team: OLE |  | On Track | Interface | Weekend | Batley to Morley Tunnel | Interface Milestone | WAJ IRSHAD |  |  |
| A65330.661 |  | [EXT OUT] OLE Trial Holes - Survey Info Available | milestone | 0d | 2021-06-11 | 2021-06-11 | A69010 | 0d |  | W46 | Bam Nuttall | Design Team: OLE |  | On Track | Interface | Weekend | Batley to Morley Tunnel | Interface Milestone | WAJ IRSHAD |  |  |

Notes:
- A65330.321: General Comments: 25/03 - Cancellation of Midweek 52 works due to / COVID-19. 4no Structural Trial Pits rescheduled around access / availability.
- A65330.211: General Comments: 25/03 - Cancellation of Midweek 52 works due to COVID-19. 24no ABS / resceduled around access availability.
- A65330.221: General Comments: 25/03 - Cancellation of Midweek 52 works due to COVID-19. 12no Window / Samples rescheduled around access availability.

| ID | WBS | Activity | Type | Duration | Start | Finish | Predecessors | Complete | Planned start | Planned finish | Total float | Calendar | Week Number | Discipline | GI Reference Number |
| --- | --- | --- | --- | --- | --- | --- | --- | --- | --- | --- | --- | --- | --- | --- | --- |
|  | 2 | **Reporting Milestones** |  |  | 2020-12-01 | 2021-06-11 |  |  |  |  |  |  |  |  |  |
| A45970 |  | Project W4 Survey Scope & Factual Reports Complete | milestone | 0d | 2021-06-11 | 2021-06-11 | A68320, A68310, A68300, A69890 |  |  |  | 0d | A03 5 Day Workweek (BH & Xmas as Work) | Reporting Milestones |  |  |
|  | 1 | **SECTION A - 33m 42ch to 34m 54ch** |  |  | 2020-12-11 | 2020-12-11 |  |  |  |  |  |  |  |  |  |
| A68320 |  | Section A Factual Reports Complete | milestone | 0d | 2020-12-11 | 2020-12-11 | A68130, A68830, A69330, A69290, A69250, A65820, A66430, A62690, A62770, A62810, A62970, A63010, A63210, A63250, A63850, A63890, A63930 |  |  |  | 130d | A03 5 Day Workweek (BH & Xmas as Work) | Reporting Milestones | N/A |  |
|  | 2 | **SECTION B - 34m 54ch to 38m 10ch** |  |  | 2020-12-01 | 2020-12-01 |  |  |  |  |  |  |  |  |  |
| A68310 |  | Section B Factual Reports Complete | milestone | 0d | 2020-12-01 | 2020-12-01 | A68170, A68210, A68290, A68870, A68910, A68790, A69210, A69170, A69130, A65880, A69700, A69760, A69820, A69880, A66350, A69090, A68750, A63770, A63450, A63490, A63530, A63970, A64010, A64050, A64090 |  |  |  | 138d | A03 5 Day Workweek (BH & Xmas as Work) | Reporting Milestones | N/A |  |
|  | 3 | **SECTION C - 39m 62ch to 41m 78ch** |  |  | 2020-12-18 | 2020-12-18 |  |  |  |  |  |  |  |  |  |
| A68300 |  | Section C Factual Reports Complete | milestone | 0d | 2020-12-18 | 2020-12-18 | A68950, A69530, A66720, A66780, A66390, A62850, A62890, A62930, A63810, A63570, A63690, A63650, A63730 |  |  |  | 125d | A03 5 Day Workweek (BH & Xmas as Work) | Reporting Milestones | N/A |  |
|  | 4 | **FULL W4 MILEAGE - 33m 42ch to 41m 78ch** |  |  | 2021-06-11 | 2021-06-11 |  |  |  |  |  |  |  |  |  |
| A69890 |  | Overarching W4 Factual Reports Complete | milestone | 0d | 2021-06-11 | 2021-06-11 | A69370, A69050, A69010, A70620, A70580, A70540, A70500, A70460 |  |  |  | 0d | A03 5 Day Workweek (BH & Xmas as Work) | Reporting Milestones |  | OLE / TELECOMS / E&P / GAUGING / CULVERTS / PED FLOW |
|  | 13 | **On Site Activities** |  |  |  |  |  |  |  |  |  |  |  |  |  |
|  | 18 | **Survey Milestones** |  |  | 2019-11-21 | 2021-04-30 |  |  |  |  |  |  |  |  |  |
|  | 1 | **Site Works Complete - SECTION A - 33m 42ch to 34m 54ch** |  |  | 2019-11-21 | 2020-10-30 |  |  |  |  |  |  |  |  |  |
|  | 1 | **Geotech** |  |  | 2019-11-21 | 2020-10-30 |  |  |  |  |  |  |  |  |  |
| A68330 |  | ABS Complete | milestone | 0d | 2019-11-21 A | 2019-11-21 A |  | 100% | 2020-03-02 | 2020-03-02 |  | A03 5 Day Workweek (BH & Xmas as Work) | Reporting Milestones | ABS | ABS |
| A68360 |  | Window Samples Complete | milestone | 0d | 2020-08-10 | 2020-08-10 | A60220 |  |  |  | 220d | A03 5 Day Workweek (BH & Xmas as Work) | Reporting Milestones | Window Sample | WINDOW SAMPLES |
| A68350 |  | Trial Pits Complete | milestone | 0d | 2020-08-17 | 2020-08-17 | A60330, A60260, A60290, A60340, A60350 |  |  |  | 214d | A03 5 Day Workweek (BH & Xmas as Work) | Reporting Milestones | Trial Pit | TRIAL PITS |
| A68340 |  | Boreholes Complete | milestone | 0d | 2020-10-30 | 2020-10-30 | A60270, A60280 |  |  |  | 160d | A03 5 Day Workweek (BH & Xmas as Work) | Reporting Milestones | Borehole | BOREHOLES |
|  | 2 | **Structures** |  |  | 2020-07-27 | 2020-09-21 |  |  |  |  |  |  |  |  |  |
| A68470 |  | Structural Trial Holes Complete | milestone | 0d | 2020-07-27 | 2020-07-27 | A61070, A61080, A61090, A61100 |  |  |  | 230d | A03 5 Day Workweek (BH & Xmas as Work) | Reporting Milestones | Trial Pit | STRUCTURAL TRIAL HOLES |
| A69610 |  | Structural Drainage Complete | milestone | 0d | 2020-08-12 | 2020-08-12 | A61660, A81300 |  |  |  | 217d | A03 5 Day Workweek (BH & Xmas as Work) | Reporting Milestones | Drainage | STRUCTURAL DRAINAGE |
| A68460 |  | Structural Paint Samples Complete | milestone | 0d | 2020-09-14 | 2020-09-14 | A61320 |  |  |  | 195d | A03 5 Day Workweek (BH & Xmas as Work) | Reporting Milestones | Paint Sample | STRUCTURAL PAINT SAMPLES |
| A68450 |  | Structural Coring Complete | milestone | 0d | 2020-09-21 | 2020-09-21 | A66850, A66860, A66870, A66880, A66890, A66900, A66910, A66920, A66930, A66940, A66950, A66960, A66970, A66980, A66990, A67000, A67010, A67020, A67030, A67040, A60820, A60830, A60840, A60850, A60860, A60810, A60800, A60790, A60610, A60630, A60640, A60600, A60580, A60570, A60680, A60670, A60660, A60650, A60620, A60590 |  |  |  | 190d | A03 5 Day Workweek (BH & Xmas as Work) | Reporting Milestones | Coring | STRUCTURAL CORING |
|  | 3 | **Stations** |  |  | 2020-05-04 | 2020-09-07 |  |  |  |  |  |  |  |  |  |
|  | 1 | **Dewsbury Station** |  |  | 2020-05-04 | 2020-09-07 |  |  |  |  |  |  |  |  |  |
| A69590 |  | Station Existing Services/GPR Complete | milestone | 0d | 2020-05-04 A | 2020-05-04 A | A62410 | 100% |  |  |  | A03 5 Day Workweek (BH & Xmas as Work) | Reporting Milestones | GPR | STATION EXISTING SERVICES |
| A69600 |  | Station Drainage Complete | milestone | 0d | 2020-07-06 | 2020-07-06 | A62390 |  |  |  | 245d | A03 5 Day Workweek (BH & Xmas as Work) | Reporting Milestones | Drainage | STATION DRAINAGE |
| A68570 |  | Station Paint Samples Complete | milestone | 0d | 2020-08-10 | 2020-08-10 | A62460 |  |  |  | 220d | A03 5 Day Workweek (BH & Xmas as Work) | Reporting Milestones | Paint Sample | STATION PAINT SAMPLES |
| A68560 |  | Station Coring Complete | milestone | 0d | 2020-08-21 | 2020-08-21 | A62020, A62010, A61940, A61930, A61920, A61970, A61960, A61950, A62000, A61990, A61980 |  |  |  | 210d | A03 5 Day Workweek (BH & Xmas as Work) | Reporting Milestones | Coring | STATION CORING |
| A68580 |  | Station Trial Holes Complete | milestone | 0d | 2020-08-21 | 2020-08-21 | A62060, A62050, A62040, A62030 |  |  |  | 210d | A03 5 Day Workweek (BH & Xmas as Work) | Reporting Milestones | Trial Pit | STATION TRIAL HOLES |
| A69580 |  | Station Asbestos Complete | milestone | 0d | 2020-09-07 | 2020-09-07 | A62470 |  |  |  | 200d | A03 5 Day Workweek (BH & Xmas as Work) | Reporting Milestones | Asbestos | STATION ASBESTOS |

| ID | WBS | Activity | Type | Duration | Start | Finish | Predecessors | Complete | Planned start | Planned finish | Total float | Free float | Calendar | GI Reference Number | Week Number | Discipline | Mileage | Access Point | 03.1 Progress Note |
| --- | --- | --- | --- | --- | --- | --- | --- | --- | --- | --- | --- | --- | --- | --- | --- | --- | --- | --- | --- |
|  | 4 | **Drainage** |  |  | 2020-10-05 | 2020-10-05 |  |  |  |  |  |  |  |  |  |  |  |  |  |
| A68630 |  | Drainage Complete | milestone | 0d | 2020-10-05 | 2020-10-05 | A65890, A65900, A66060, A65910, A65920, A66070, A66080, A66230, A66240, A66090, A75670, A75680, A81350 |  |  |  | 10d | 0d | A03 5 Day Workweek (BH & Xmas as Work) | DRAINAGE | Reporting Milestones | Drainage |  |  |  |
|  | 5 | **Topographical Survey** |  |  | 2020-08-03 | 2020-08-03 |  |  |  |  |  |  |  |  |  |  |  |  |  |
| A68640 |  | Topographical Surveys Complete | milestone | 0d | 2020-08-03 | 2020-08-03 | A70260 SF, A70320 SF, A65780 SF |  |  |  | 225d |  | A03 5 Day Workweek (BH & Xmas as Work) | TOPOGRAPHY | Reporting Milestones | Topographical |  |  |  |
|  | 2 | **Site Works Complete - SECTION B - 34m 54ch to 38m 10ch** |  |  | 2020-01-22 | 2020-10-20 |  |  |  |  |  |  |  |  |  |  |  |  |  |
|  | 4 | **Geotech** |  |  | 2020-05-11 | 2020-10-20 |  |  |  |  |  |  |  |  |  |  |  |  |  |
| A68390 |  | Trial Pits Complete - DESCOPED | milestone | 0d | 2020-05-11 A | 2020-05-11 A | A68020, A68030, A68040, A68050, A68060, A68070, A68080, A68090 | 100% | 2020-06-18 | 2020-06-18 |  |  | A03 5 Day Workweek (BH & Xmas as Work) | TRIAL PITS - DESCOPED | Reporting Milestones | Trial Pit | DESCOPED | DESCOPED |  |
| A68380 |  | Boreholes Complete | milestone | 0d | 2020-08-07 | 2020-08-07 | A60390, A60400 |  |  |  | 220d |  | A03 5 Day Workweek (BH & Xmas as Work) | BOREHOLES | Reporting Milestones | Borehole |  |  |  |
| A68370 |  | ABS Complete | milestone | 0d | 2020-09-07 | 2020-09-07 | A67830, A67840, A67850, A67860, A67870, A67880, A67890, A67900, A67910, A67920, A67930, A67940, A67950, A59100, A59120, A59130, A59090, A59080, A58900, A58840, A58800, A58780, A59070, A59060, A59030, A59020, A59010, A59000, A59420, A59410, A59400, A59390, A59380, A59370, A59360, A59340, A59330, A59320, A59310, A59300, A59290, A59280, A59260, A59170, A59150, A59140 |  |  |  | 200d |  | A03 5 Day Workweek (BH & Xmas as Work) | ABS | Reporting Milestones | ABS |  |  | 200530 CV - Survey Critical |
| A68400 |  | Window Samples Complete | milestone | 0d | 2020-10-20 | 2020-10-20 | A60410, A67590, A67600, A68010, A58370 |  |  |  | 168d |  | A03 5 Day Workweek (BH & Xmas as Work) | WINDOW SAMPLES | Reporting Milestones | Window Sample |  |  |  |
|  | 3 | **Structures** |  |  | 2020-01-22 | 2020-09-11 |  |  |  |  |  |  |  |  |  |  |  |  |  |
| A68510 |  | Structural Slit Trenches Complete | milestone | 0d | 2020-01-22 A | 2020-01-22 A | A67700, A67690, A61280 | 100% | 2020-05-11 | 2020-05-11 |  |  | A03 5 Day Workweek (BH & Xmas as Work) | STRUCTURAL SLIT TRENCHES | Reporting Milestones | Slit Trench |  |  |  |
| A68520 |  | Structural Trial Holes Complete | milestone | 0d | 2020-07-06 | 2020-07-06 | A67610, A67620, A67630, A67640, A67650, A67660 |  |  |  | 245d |  | A03 5 Day Workweek (BH & Xmas as Work) | STRUCTURAL TRIAL HOLES | Reporting Milestones | Trial Pit |  |  |  |
| A69620 |  | Structural Drainage Complete | milestone | 0d | 2020-08-03 | 2020-08-03 | A61670, A81310 |  |  |  | 224d |  | A03 5 Day Workweek (BH & Xmas as Work) | STRUCTURAL DRAINAGE | Reporting Milestones | Drainage |  |  |  |
| A68500 |  | Structural Paint Samples Complete | milestone | 0d | 2020-09-07 | 2020-09-07 | A67750 |  |  |  | 200d |  | A03 5 Day Workweek (BH & Xmas as Work) | STRUCTURAL PAINT SAMPLES | Reporting Milestones | Paint Sample |  |  |  |
| A68490 |  | Structural Coring Complete | milestone | 0d | 2020-09-11 | 2020-09-11 | A67050, A67060, A67070, A67080, A67090, A67100, A67110, A67120, A67130, A67140, A67150, A67160, A67170, A67180, A67190, A67200, A67210, A67220, A67230, A67240, A67250, A67260, A67270, A67280, A61450, A61440, A61400, A61390, A61380, A61370, A70630, A70640 |  |  |  | 195d |  | A03 5 Day Workweek (BH & Xmas as Work) | STRUCTURAL CORING | Reporting Milestones | Coring |  |  |  |
|  | 2 | **Stations** |  |  | 2020-07-06 | 2020-09-07 |  |  |  |  |  |  |  |  |  |  |  |  |  |
|  | 1 | **Batley Station** |  |  | 2020-07-06 | 2020-09-07 |  |  |  |  |  |  |  |  |  |  |  |  |  |
| A69560 |  | Station Existing Services/GPR Complete | milestone | 0d | 2020-07-06 | 2020-07-06 | A66820 |  |  |  | 245d |  | A03 5 Day Workweek (BH & Xmas as Work) | STATION EXISTING SERVICES | Reporting Milestones | GPR |  |  |  |
| A69570 |  | Station Drainage Complete | milestone | 0d | 2020-07-06 | 2020-07-06 | A62480 |  |  |  | 245d |  | A03 5 Day Workweek (BH & Xmas as Work) | STATION DRAINAGE | Reporting Milestones | Drainage |  |  |  |
| A68600 |  | Station Coring Complete | milestone | 0d | 2020-07-22 | 2020-07-22 | A61890, A61870, A61880, A61840, A61850, A61860, A61820, A61830, A61790, A61800, A61810, A61780, A61770, A61760, A61750, A61740, A61730, A61720, A61710, A61700, A61910, A61900 |  |  |  | 232d |  | A03 5 Day Workweek (BH & Xmas as Work) | STATION CORING | Reporting Milestones | Coring |  |  |  |
| A69550 |  | Station Asbestos Complete | milestone | 0d | 2020-08-10 | 2020-08-10 | A62550 |  |  |  | 220d |  | A03 5 Day Workweek (BH & Xmas as Work) | STATION ASBESTOS | Reporting Milestones | Asbestos |  |  |  |
| A68610 |  | Station Paint Samples Complete | milestone | 0d | 2020-09-07 | 2020-09-07 | A67750 |  |  |  | 200d |  | A03 5 Day Workweek (BH & Xmas as Work) | STATION PAINT SAMPLES | Reporting Milestones | Paint Sample |  |  |  |
|  | 1 | **Tunnels** |  |  | 2020-07-13 | 2020-10-19 |  |  |  |  |  |  |  |  |  |  |  |  |  |
|  | 1 | **Morley Tunnel** |  |  | 2020-07-13 | 2020-10-19 |  |  |  |  |  |  |  |  |  |  |  |  |  |
| A68680 |  | Tunnel Trial Holes Complete | milestone | 0d | 2020-07-13 | 2020-07-13 | A62310, A62330, A62340, A62350, A62360, A62370, A62380, A62240, A62220, A62210, A62190, A62250, A62290, A62300, A62200, A62230, A62260, A62280, A62270, A62320 |  |  |  | 240d |  | A03 5 Day Workweek (BH & Xmas as Work) | TUNNEL TRIAL HOLES | Reporting Milestones | Trial Pit |  |  |  |
| A69540 |  | Tunnel Geophysics Complete | milestone | 0d | 2020-08-24 | 2020-08-24 | A62570, A62580 |  |  |  | 210d |  | A03 5 Day Workweek (BH & Xmas as Work) | TUNNEL GEOPHYSICS | Reporting Milestones | Geophysics |  |  |  |
| A68670 |  | Tunnel Coring Complete | milestone | 0d | 2020-10-19 | 2020-10-19 | A62160, A62110, A62120, A62090, A62100, A62180, A62150, A62140, A62130, A62170 |  |  |  | 170d |  | A03 5 Day Workweek (BH & Xmas as Work) | TUNNEL CORING | Reporting Milestones | Coring |  |  |  |

| ID | WBS | Activity | Type | Duration | Start | Finish | Predecessors | Complete | Planned start | Planned finish | Total float | Free float | Constraint | Expected finish | Calendar | GI Reference Number | Week Number | Discipline | Company Responsible |
| --- | --- | --- | --- | --- | --- | --- | --- | --- | --- | --- | --- | --- | --- | --- | --- | --- | --- | --- | --- |
|  | 6 | **Drainage** |  |  | 2020-10-05 | 2020-10-05 |  |  |  |  |  |  |  |  |  |  |  |  |  |
| A68650 |  | Drainage Complete | milestone | 0d | 2020-10-05 | 2020-10-05 | A65930, A65940, A66100, A65970, A66250, A66110, A65950, A65960, A66120, A66270, A66280, A66130, A66290, A66300, A66140, A66310, A66150, A66160, A66170, A66180, A66260, A65990, A65980, A66010, A66000, A75690, A75700, A75710, A75720, A75730, A75740, A81340 |  |  |  | 10d | 0d |  |  | A03 5 Day Workweek (BH & Xmas as Work) | DRAINAGE | Reporting Milestones | Drainage |  |
|  | 5 | **Topographical Survey** |  |  | 2020-09-07 | 2020-09-07 |  |  |  |  |  |  |  |  |  |  |  |  |  |
| A68660 |  | Topographical Surveys Complete | milestone | 0d | 2020-09-07 | 2020-09-07 | A65830 SF, A69660 SF, A69710 SF, A69770 SF, A69830 SF |  |  |  | 200d |  |  |  | A03 5 Day Workweek (BH & Xmas as Work) | TOPOGRAPHY | Reporting Milestones | Topographical |  |
|  | 3 | **Site Works Complete - SECTION C - 39m 62ch to 41m 78ch** |  |  | 2020-05-06 | 2020-10-20 |  |  |  |  |  |  |  |  |  |  |  |  |  |
|  | 5 | **Geotech** |  |  | 2020-05-06 | 2020-10-20 |  |  |  |  |  |  |  |  |  |  |  |  |  |
| A68430 |  | Trial Pits Complete | milestone | 0d | 2020-05-06 A | 2020-05-06 A | A60180, A60190 | 100% | 2020-05-11 | 2020-05-11 |  |  |  |  | A03 5 Day Workweek (BH & Xmas as Work) | TRIAL PITS | Reporting Milestones | Trial Pit |  |
| A68410 |  | ABS Complete | milestone | 0d | 2020-09-07 | 2020-09-07 | A59870, A59890, A59910, A60000, A60030, A60050, A59930, A59940, A59950, A59960, A59970, A59980, A59880, A59900, A59920, A59990, A60020, A60040, A60060, A60070, A60080, A60090, A60110, A60120, A59440, A59450, A59470, A59620, A59630, A59640, A59770, A59830, A59840, A59490, A59730, A59740, A60130, A60140, A60150, A60160, A59480, A59530, A59540, A59550, A59560, A59570, A59710, A59720, A59850, A59860, A59500, A59510, A59520, A59580, A59590, A59600, A59610, A59650, A59660, A59670, A59680, A59700, A67960, A67970, A67980, A67990, A68000, A75940, A75990, A76000, A76010, A76020 |  |  |  | 200d |  |  |  | A03 5 Day Workweek (BH & Xmas as Work) | ABS | Reporting Milestones | ABS |  |
| A68440 |  | Window Samples Complete | milestone | 0d | 2020-10-20 | 2020-10-20 | A59430, A59460, A59790, A59810, A60170, A59760, A59780, A60100, A59690, A59750, A60010, A59820, A60540, A60560, A60510, A60200, A60520, A60210, A60530 |  |  |  | 168d |  |  |  | A03 5 Day Workweek (BH & Xmas as Work) | WINDOW SAMPLES | Reporting Milestones | Window Sample |  |
|  | 4 | **Structures** |  |  | 2020-05-08 | 2020-08-24 |  |  |  |  |  |  |  |  |  |  |  |  |  |
| A68550 |  | Structural Trial Holes Complete | milestone | 0d | 2020-05-08 A | 2020-05-08 A | A61240, A61250, A61260, A61270, A67710, A67720, A67730, A67740 | 100% | 2020-05-11 | 2020-05-11 |  |  |  |  | A03 5 Day Workweek (BH & Xmas as Work) | STRUCTURAL TRIAL HOLES | Reporting Milestones | Trial Pit |  |
| A69630 |  | Structural Drainage Complete | milestone | 0d | 2020-08-07 | 2020-08-07 | A61690, A81330 |  |  |  | 220d |  |  |  | A03 5 Day Workweek (BH & Xmas as Work) | STRUCTURAL DRAINAGE | Reporting Milestones | Drainage |  |
| A68540 |  | Structural Paint Samples Complete | milestone | 0d | 2020-08-10 | 2020-08-10 | A61350, A61360 |  |  |  | 220d |  |  |  | A03 5 Day Workweek (BH & Xmas as Work) | STRUCTURAL PAINT SAMPLES | Reporting Milestones | Paint Sample |  |
| A68530 |  | Structural Coring Complete | milestone | 0d | 2020-08-24 | 2020-08-24 | A67390, A67400, A67410, A67420, A67430, A67440, A67450, A67460, A67470, A67480, A67490, A67500, A67510, A67520, A67530, A67540, A67550, A67560, A67570, A67580, A61000, A60990, A60980, A60960, A60970, A61020, A61030, A60950, A61010, A61460, A61470, A61480, A61490, A61500, A61510, A61520, A61530, A61040, A61050, A61060 |  |  |  | 210d |  |  |  | A03 5 Day Workweek (BH & Xmas as Work) | STRUCTURAL CORING | Reporting Milestones | Coring |  |
|  | 3 | **Drainage** |  |  | 2020-09-11 | 2020-09-11 |  |  |  |  |  |  |  |  |  |  |  |  |  |
| A68700 |  | Drainage Complete | milestone | 0d | 2020-09-11 | 2020-09-11 | A66190, A66040, A66050, A66020, A66030, A66220, A66210, A66200 |  |  |  | 65d | 0d |  |  | A03 5 Day Workweek (BH & Xmas as Work) | DRAINAGE | Reporting Milestones | Drainage |  |
|  | 2 | **Topographical Survey** |  |  | 2020-10-12 | 2020-10-12 |  |  |  |  |  |  |  |  |  |  |  |  |  |
| A68710 |  | Topographical Surveys Complete | milestone | 0d | 2020-10-12 | 2020-10-12 | A70210 SF, A66670 SF, A66790 SF, A69900 SF, A70140 SF, A70090 SF, A70030 SF, A69960 SF |  |  |  | 175d |  |  |  | A03 5 Day Workweek (BH & Xmas as Work) | TOPOGRAPHY | Reporting Milestones | Topographical |  |
|  | 4 | **Site Works Complete - FULL W4 MILEAGE - 33m 42ch to 41m 78ch** |  |  | 2020-05-25 | 2021-04-30 |  |  |  |  |  |  |  |  |  |  |  |  |  |
| A69640 |  | Telecoms Cable Route Surveys Complete | milestone | 0d | 2020-05-25 A | 2020-05-25 A | A66830, A76080 | 100% |  |  |  |  |  |  | A03 5 Day Workweek (BH & Xmas as Work) | TELECOMS | Reporting Milestones | Telecoms | Amey |
| A68970 |  | OLE Trial Holes Surveys Complete |  | 300d | 2020-07-05 | 2021-04-30 |  |  |  |  | 2d | 0d |  | 2021-04-30 |  | OLE | Reporting Milestones | OLE Trial Holes | Keltbray / Lundys |
| A70380 |  | Off Track Cluvert Surveys Complete |  | 13d | 2020-07-05 | 2020-07-17 |  |  |  |  | 289d | 0d | start on or after 2020-06-08 | 2020-07-17 |  | CULVERT | Reporting Milestones | Drainage | Bam Nuttall |
| A70390 |  | Telecoms SISS, Cable Verification/ Fringe SB Surveys Complete |  | 27d | 2020-07-05 | 2020-07-31 | A69640 |  |  |  | 96d | 0d |  | 2020-07-31 |  | TELECOMS | Reporting Milestones | Telecoms | Amey |
| A70400 |  | Ped Flow Surveys Complete |  | 0d | 2020-07-05 | 2020-07-05 |  |  |  |  | 268d | 0d | start on or after 2020-06-15 | 2020-07-03 |  | PED FLOW | Reporting Milestones | Ped Flow | TBC |
| A70410 |  | E&P Surveys Complete |  | 25d | 2020-07-05 | 2020-07-29 |  |  |  |  | 270d | 0d |  | 2020-07-29 |  | E&P | Reporting Milestones | E&P | Design |
| A70420 |  | Gauging Surveys Complete |  | 0d | 2020-07-05 | 2020-07-05 |  |  |  |  | 102d | 0d | start on or after 2020-05-30 | 2020-07-03 |  | GAUGING | Reporting Milestones | Gauging | TBC |
| A68960 |  | Powerline, Heights & Stagger And Bonding Surveys Complete | milestone | 0d | 2020-08-10 | 2020-08-10 | A62590, A62610, A62600, A62620, A62630, A62640, A62650 |  |  |  | 220d |  |  |  | A03 5 Day Workweek (BH & Xmas as Work) | OLE | Reporting Milestones | OLE Initiatives | Keltbray / Lundys |

Notes:
- A70380: General Comments: 11/03 - Assuming 2x culverts per week starting week 10
- A70390: General Comments: 11/03 - Starting after cable route surveys complete. 17 shifts allocated, / assuming all available access used
- A70400: General Comments: 11/03 - Assuming 1 Ped Flow survey per week, 3x to complete
- A70410: General Comments: 11/03 - Assumed start week 3. 18 shifts allocated, assuming all available / access used
- A70420: General Comments: 11/03 - Assumed start week 9. 9 shifts allocated, assuming all / available access used

| ID | WBS | Activity | Duration | Start | Finish | Predecessors | Complete | Constraint | Calendar | Company Responsible | Location / ELR | GI Reference Number | On-Track Off-Track | Week Number | Weekend/Midweek | Mileage | Access Point |
| --- | --- | --- | --- | --- | --- | --- | --- | --- | --- | --- | --- | --- | --- | --- | --- | --- | --- |
|  | 4 | **Pecent Complete** |  |  |  |  |  |  |  |  |  |  |  |  |  |  |  |
|  | 20 | **Non-Possession Dependant Surveys** |  | 2019-08-06 | 2020-10-30 |  |  |  |  |  |  |  |  |  |  |  |  |
|  | 30 | **Week 19** |  | 2019-08-06 | 2019-08-06 |  |  |  |  |  |  |  |  |  |  |  |  |
| A48410 |  | Signalling Survey | 1d | 2019-08-06 A | 2019-08-06 A | A72630 | 100% | start on or after 2019-08-06 |  | Amey | MVN2 | 38/8 | Off Track | Week 19 | Midweek | 38m 1287yds - SEPARATED | TBC |
| A48420 |  | Signalling Survey | 1d | 2019-08-06 A | 2019-08-06 A | A72630 | 100% | start on or after 2019-08-06 |  | Amey | MVN2 | 38/9 | Off Track | Week 19 | Midweek | 38m 1490yds - SEPARATED | TBC |
| A55420 |  | Signalling Survey | 1d | 2019-08-06 A | 2019-08-06 A | A72630 | 100% | start on or after 2019-08-06 |  | Amey | MVN2 | 38/5 | Off Track | Week 19 | Midweek | 38m 683yds - SEPARATED | TBC |
| A55430 |  | Signalling Survey | 1d | 2019-08-06 A | 2019-08-06 A | A72630 | 100% | start on or after 2019-08-06 |  | Amey | MVN2 | 38/6 | Off Track | Week 19 | Midweek | 38m 822yds - SEPARATED | TBC |
| A55440 |  | Signalling Survey | 1d | 2019-08-06 A | 2019-08-06 A | A72630 | 100% | start on or after 2019-08-06 |  | Amey | MVN2 | 38/7 | Off Track | Week 19 | Midweek | 38m 1067yds - SEPARATED | TBC |
|  | 34 | **Week 23** |  | 2019-09-04 | 2019-09-04 |  |  |  |  |  |  |  |  |  |  |  |  |
| A48890 |  | PC Walkout | 1d | 2019-09-04 A | 2019-09-04 A | A72630 | 100% | start on or after 2019-09-04 | A03 5 Day Workweek (BH & Xmas as Work) | Amey | Craven Rd, Dewsbury |  | Off Track | Week 23 | Midweek | 33m 0ch | Down |
|  | 29 | **Week 25** |  | 2019-09-23 | 2019-09-23 |  |  |  |  |  |  |  |  |  |  |  |  |
| A48900 |  | PC Walkout | 1d | 2019-09-23 A | 2019-09-23 A | A72630 | 100% | start on or after 2019-09-18 | A03 5 Day Workweek (BH & Xmas as Work) | Amey | Watergate Rd, Dewsbury |  | Off Track | Week 25 | Midweek | 33m 33ch | Down |
|  | 38 | **Week 27** |  | 2019-10-21 | 2019-10-21 |  |  |  |  |  |  |  |  |  |  |  |  |
| A48910 |  | PC Walkout | 1d | 2019-10-21 A | 2019-10-21 A | A72630 | 100% | start on or after 2019-10-02 | A03 5 Day Workweek (BH & Xmas as Work) | Amey | Dewsbury |  | Off Track | Week 27 | Midweek | 33m 63ch - 33m 70ch | Up |
|  | 26 | **Week 29** |  | 2019-10-21 | 2019-10-21 |  |  |  |  |  |  |  |  |  |  |  |  |
| A48920 |  | PC Walkout | 1d | 2019-10-21 A | 2019-10-21 A | A72630 | 100% | start on or after 2019-10-16 | A03 5 Day Workweek (BH & Xmas as Work) | Amey | Batley |  | Off Track | Week 29 | Midweek | 35m 09ch | Up |
|  | 41 | **Week 31** |  | 2019-10-30 | 2019-10-30 |  |  |  |  |  |  |  |  |  |  |  |  |
| A48930 |  | PC Walkout | 1d | 2019-10-30 A | 2019-10-30 A | A72630 | 100% | start on or after 2019-10-30 | A03 5 Day Workweek (BH & Xmas as Work) | Amey | Batley SB |  | Off Track | Week 31 | Midweek | 35m 60ch | Down |
|  | 43 | **Week 33** |  | 2019-11-18 | 2019-11-18 |  |  |  |  |  |  |  |  |  |  |  |  |
| A48940 |  | PC Walkout | 1d | 2019-11-18 A | 2019-11-18 A | A72630 | 100% | start on or after 2019-11-13 | A03 5 Day Workweek (BH & Xmas as Work) | Amey | Howley Mill Ln |  | Off Track | Week 33 | Midweek | 36m 00ch - 36m 20ch |  |
|  | 45 | **Week 35** |  | 2019-11-27 | 2019-11-27 |  |  |  |  |  |  |  |  |  |  |  |  |
| A48950 |  | PC Walkout | 1d | 2019-11-27 A | 2019-11-27 A | A72630 | 100% | start on or after 2019-11-27 | A03 5 Day Workweek (BH & Xmas as Work) | Amey | Morley |  | Off Track | Week 35 | Midweek | 38m 24ch - 38m 48ch | Down |
|  | 46 | **Week 37** |  | 2019-12-11 | 2019-12-11 |  |  |  |  |  |  |  |  |  |  |  |  |
| A48970 |  | PC Walkout | 1d | 2019-12-11 A | 2019-12-11 A | A72630 | 100% | start on or after 2019-12-11 | A03 5 Day Workweek (BH & Xmas as Work) | Amey | Dragon Bridge |  | Off Track | Week 37 | Midweek | 41m 14ch | Down |
| A49010 |  | PC Walkout | 1d | 2019-12-11 A | 2019-12-11 A | A72630 | 100% | start on or after 2019-12-11 | A03 5 Day Workweek (BH & Xmas as Work) | Amey | Cottingley |  | Off Track | Week 37 | Midweek | 40m 02ch | Up |

| ID | WBS | Activity | Duration | Start | Finish | Predecessors | Complete | Constraint | Calendar | Company Responsible | Location / ELR | On-Track Off-Track | Week Number | Weekend/Midweek | Mileage | Access Point | GI Reference Number | Location | Discipline | Text 3 | Text 4 | Text 1 | On/Off Track | Acty ID Record | Project |
| --- | --- | --- | --- | --- | --- | --- | --- | --- | --- | --- | --- | --- | --- | --- | --- | --- | --- | --- | --- | --- | --- | --- | --- | --- | --- |
|  | 48 | **Week 41** |  | 2020-01-08 | 2020-01-08 |  |  |  |  |  |  |  |  |  |  |  |  |  |  |  |  |  |  |  |  |
| A48960 |  | PC Walkout | 1d | 2020-01-08 A | 2020-01-08 A | A72630 | 100% | start on or after 2020-01-08 | A03 5 Day Workweek (BH & Xmas as Work) | Amey | White rose | Off Track | Week 41 | Midweek | 38m 16ch | Up |  |  |  |  |  |  |  |  |  |
|  | 47 | **Week 42** |  | 2020-01-20 | 2020-01-28 |  |  |  |  |  |  |  |  |  |  |  |  |  |  |  |  |  |  |  |  |
| A64800 |  | Prep For Safety - Hand rail Installation | 7d | 2020-01-20 A | 2020-01-28 A | A72630 | 100% | start on or after 2020-01-13 | A03 5 Day Workweek (BH & Xmas as Work) | Bam Nuttall | Bridge 10 Thornhill Road | Off Track | Week 42 | Midweek | 33m 20ch | 33m 20ch (3RD Party) |  |  |  |  |  |  |  |  |  |
| A64760 |  | Bridge Inspections | 1d | 2020-01-27 A | 2020-01-27 A | A72630 | 100% | start on or after 2020-01-13 | A03 5 Day Workweek (BH & Xmas as Work) | Amey | MDL1 | Off Track | Week 42 | Midweek |  |  | MDL1/37AA, MDL1/38, MDL1/36P2 |  |  |  |  |  |  |  |  |
|  | 49 | **Week 43** |  | 2020-01-20 | 2020-01-30 |  |  |  |  |  |  |  |  |  |  |  |  |  |  |  |  |  |  |  |  |
| A61220 |  | Trial Hole | 1d | 2020-01-20 A | 2020-01-20 A | A72630 | 100% | start on or after 2020-01-20 |  | Bam Ritchies |  | Off Track | Week 43 | Midweek | 38m18 |  | MDL1/36/TH/01 | OB MDL1/36P2 - Valley Road OB (Tunnel portal) | Trial Pits |  |  |  |  |  |  |
| A61230 |  | Trial Hole | 1d | 2020-01-20 A | 2020-01-20 A | A72630 | 100% | start on or after 2020-01-20 |  | Bam Ritchies |  | Off Track | Week 43 | Midweek | 38m18 |  | MDL1/36/TH/02 | OB MDL1/36P2 - Valley Road OB (Tunnel portal) | Trial Pits |  |  |  |  |  |  |
| A64440 |  | Design team Inspection | 3d | 2020-01-20 A | 2020-01-22 A | A72630 | 100% | start on or after 2020-01-20 |  | Amey |  | Off Track | Week 43 | Midweek | 38m18 |  |  | OB MDL1/36P2 - Valley Road OB (Tunnel portal) |  |  |  |  |  |  |  |
| A64820 |  | Prep For Safety - Scoping Works | 5d | 2020-01-20 A | 2020-01-24 A | A72630 | 100% | start on or after 2020-01-20 | A03 5 Day Workweek (BH & Xmas as Work) | Bam Nuttall | MDL1 | Off Track | Week 43 | Midweek | 35m20ch - 36m25ch | Various |  |  |  |  |  |  |  |  |  |
| TRA1_15432 |  | Design Team Inspection | 5d | 2020-01-20 A | 2020-01-24 A | A72630 | 100% | start on or after 2020-01-20 |  | Design | Morley | Off Track | Week 43 | Midweek | 38m19ch | 3rd Party | Valley Rd/Station Rd |  | Boreholes | 2 Morley | Topo | 1 Possession | On Track | TRA1_15432 |  |
| A61300 |  | Slit Trench | 1d | 2020-01-21 A | 2020-01-21 A | A72630 | 100% | start on or after 2020-01-21 |  | Bam Ritchies/Nuttall |  | Off Track | Week 43 | Midweek | 38m18 |  | MDL1/36/ST/01 | OB MDL1/36P2 - Valley Road OB (Tunnel portal) | Slit Trench |  |  |  |  |  |  |
| A64930 |  | Prep For Safety - Repaid Damaged Boundary Fence | 3d | 2020-01-21 A | 2020-01-23 A | A72630 | 100% | start on or after 2020-01-21 | A03 5 Day Workweek (BH & Xmas as Work) | Bam Nuttall |  | Off Track | Week 43 | Midweek |  | 35m 78ch (3RD Party) |  |  |  |  |  |  |  |  |  |
| A48980 |  | PC Walkout | 1d | 2020-01-22 A | 2020-01-22 A | A72630 | 100% | start on or after 2020-01-22 | A03 5 Day Workweek (BH & Xmas as Work) | Amey | Copley Hill Way | Off Track | Week 43 | Midweek | 41m 66ch - 42m 32ch | Up |  |  |  |  |  |  |  |  |  |
| A61310 |  | Slit Trench | 1d | 2020-01-22 A | 2020-01-22 A | A72630 | 100% | start on or after 2020-01-22 |  | Bam Ritchies/Nuttall |  | Off Track | Week 43 | Midweek | 38m18 |  | MDL1/36/ST/02 | OB MDL1/36P2 - Valley Road OB (Tunnel portal) | Slit Trench |  |  |  |  |  |  |
| A64940 |  | Trial Hole Walkout | 1d | 2020-01-22 A | 2020-01-22 A | A72630 | 100% | start on or after 2020-01-22 |  | Structural Soils | Dewsbury Station | Off Track | Week 43 | Midweek |  |  |  | OB MDL1/36P2 - Valley Road OB (Tunnel portal) | Trial Pit |  |  |  |  |  |  |
| TRA1_15422 |  | Window Samples Within Trenches | 5d | 2020-01-26 A | 2020-01-30 A | A72630 | 100% | start on or after 2020-01-20 |  | Bam Ritchies | Valley Rd/Station Rd | Off Track | Week 43 | Midweek | 38m19ch | 3rd Party | MDL1/36P2/WS/01 |  | Window Samples | 2 Morley | Topo | 1 Possession | On Track | TRA1_15422 |  |
| TRA1_15442 |  | Window Samples Within Trenches | 5d | 2020-01-26 A | 2020-01-30 A | A72630 | 100% | start on or after 2020-01-20 |  | Bam Ritchies | Valley Rd/Station Rd | Off Track | Week 43 | Midweek | 38m19ch | 3rd Party | MDL1/36P2/WS/02 - Awaiting Update |  | Window Samples | 2 Morley | Topo | 1 Possession | On Track | TRA1_15422 |  |
|  | 57 | **Week 44** |  | 2020-02-03 | 2020-02-05 |  |  |  |  |  |  |  |  |  |  |  |  |  |  |  |  |  |  |  |  |
| A64810 |  | Prep For Safety - Deveg & Ballast Board Install | 3d | 2020-02-03 A | 2020-02-05 A | A72630 | 100% | start on or after 2020-01-28 | A03 5 Day Workweek (BH & Xmas as Work) | Bam Nuttall | Bridge 10 Thornhill Road | Off Track | Week 44 | Midweek | 34m 73ch | 34m 73ch |  |  |  |  |  |  |  |  |  |
|  | 50 | **Week 45** |  | 2020-02-05 | 2020-02-05 |  |  |  |  |  |  |  |  |  |  |  |  |  |  |  |  |  |  |  |  |
| A48990 |  | PC Walkout | 1d | 2020-02-05 A | 2020-02-05 A | A72630 | 100% | start on or after 2020-02-05 | A03 5 Day Workweek (BH & Xmas as Work) | Amey | Copley Hill, Leeds LS12 1HY | Off Track | Week 45 | Midweek | 41m 70ch | Down |  |  | Walkout |  |  |  |  |  | W4 |
|  | 58 | **Week 46** |  | 2020-02-16 | 2020-02-22 |  |  |  |  |  |  |  |  |  |  |  |  |  |  |  |  |  |  |  |  |
| A65300 |  | Load Monitoring | 7d | 2020-02-16 A | 2020-02-22 A | A72630 | 100% | start on or after 2020-02-08 |  | Amey | Dewsbury Stn DNO | Off Track | Week 46 | Midweek | 33m62ch | Up |  |  | Load Monitoring |  |  |  |  |  | W4 |
| A65310 |  | Load Monitoring | 7d | 2020-02-16 A | 2020-02-22 A | A72630 | 100% | start on or after 2020-02-08 |  | Amey | Batley Stn DNO | Off Track | Week 46 | Midweek | 35m 09ch | Up |  |  | Load Monitoring |  |  |  |  |  | W4 |

| ID | WBS | Activity | Duration | Start | Finish | Predecessors | Complete | Planned start | Planned finish | Constraint | Calendar | Company Responsible | Location / ELR | On-Track Off-Track | Week Number | Weekend/Midweek | Project | Mileage | Access Point | Discipline | Responsibility |
| --- | --- | --- | --- | --- | --- | --- | --- | --- | --- | --- | --- | --- | --- | --- | --- | --- | --- | --- | --- | --- | --- |
|  | 51 | **Week 47** |  | 2020-02-16 | 2020-02-22 |  |  |  |  |  |  |  |  |  |  |  |  |  |  |  |  |
| A65290 |  | Load Monitoring | 7d | 2020-02-16 A | 2020-02-22 A | A72630 | 100% |  |  | start on or after 2020-02-15 |  | Amey | Mirfiled Station DNO | Off Track | Week 47 | Midweek | W4 | 38m 32ch | Up | Load Monitoring |  |
| A49000 |  | PC Walkout | 1d | 2020-02-19 A | 2020-02-19 A | A72630 | 100% |  |  | start on or after 2020-02-19 | A03 5 Day Workweek (BH & Xmas as Work) | Amey | Kidacre Terrace | Off Track | Week 47 | Midweek | W4 | 41m 75ch | Up | Walkout |  |
|  | 5 | **Week 52** |  |  |  |  |  |  |  |  |  |  |  |  |  |  |  |  |  |  |  |
|  | 52 | **Week 01** |  |  |  |  |  |  |  |  |  |  |  |  |  |  |  |  |  |  |  |
|  | 53 | **Week 02** |  | 2020-04-14 | 2020-04-17 |  |  |  |  |  |  |  |  |  |  |  |  |  |  |  |  |
| A72850 |  | Walkout/Install | 1d | 2020-04-14 A | 2020-04-14 A |  | 100% |  |  | start on or after 2020-04-14 | A03 5 Day Workweek (BH & Xmas as Work) | Bridgeway | Batley Off-Track | Off Track | Week 02 | Midweek |  |  |  | Walkout | Darren Walsh |
| A72860 |  | Traverse/topo | 1d | 2020-04-15 A | 2020-04-15 A |  | 100% |  |  | start on or after 2020-04-15 | A03 5 Day Workweek (BH & Xmas as Work) | Bridgeway | Batley Off-Track | Off Track | Week 02 | Midweek |  |  |  | Topographical | Darren Walsh |
| A72870 |  | Traverse/topo | 1d | 2020-04-16 A | 2020-04-16 A |  | 100% |  |  | start on or after 2020-04-16 | A03 5 Day Workweek (BH & Xmas as Work) | Bridgeway | Batley Off-Track | Off Track | Week 02 | Midweek |  |  |  | Topographical | Darren Walsh |
| A72840 |  | Traverse/topo | 1d | 2020-04-17 A | 2020-04-17 A |  | 100% |  |  | start on or after 2020-04-17 | A03 5 Day Workweek (BH & Xmas as Work) | Bridgeway | Batley Off-Track | Off Track | Week 02 | Midweek |  |  |  | Topographical | Darren Walsh |
|  | 54 | **Week 03** |  | 2020-04-21 | 2020-04-24 |  |  |  |  |  |  |  |  |  |  |  |  |  |  |  |  |
| A72950 |  | Level | 1d | 2020-04-21 A | 2020-04-21 A |  | 100% | 2020-04-27 | 2020-04-27 | start on or after 2020-04-21 | A03 5 Day Workweek (BH & Xmas as Work) | Bridgeway | Batley Off-Track | Off Track | Week 03 | Midweek |  |  |  | Topographical | Darren Walsh |
| A72890 |  | Static Scanning | 1d | 2020-04-22 A | 2020-04-22 A |  | 100% | 2020-04-27 | 2020-04-27 | start on or after 2020-04-22 | A03 5 Day Workweek (BH & Xmas as Work) | Bridgeway | Batley Off-Track | Off Track | Week 03 | Midweek |  |  |  | Topographical | Darren Walsh |
| A72900 |  | Static Scanning | 1d | 2020-04-23 A | 2020-04-23 A |  | 100% | 2020-04-27 | 2020-04-27 | start on or after 2020-04-23 | A03 5 Day Workweek (BH & Xmas as Work) | Bridgeway | Batley Off-Track | Off Track | Week 03 | Midweek |  |  |  | Topographical | Darren Walsh |
| A72880 |  | Static Scanning | 1d | 2020-04-24 A | 2020-04-24 A |  | 100% | 2020-04-27 | 2020-04-27 | start on or after 2020-04-24 | A03 5 Day Workweek (BH & Xmas as Work) | Bridgeway | Batley Off-Track | Off Track | Week 03 | Midweek |  |  |  | Topographical | Darren Walsh |
|  | 55 | **Week 04** |  |  |  |  |  |  |  |  |  |  |  |  |  |  |  |  |  |  |  |
|  | 56 | **Week 05** |  | 2020-05-05 | 2020-05-08 |  |  |  |  |  |  |  |  |  |  |  |  |  |  |  |  |
| A72920 |  | Traverse/topo | 1d | 2020-05-05 A | 2020-05-05 A |  | 100% |  |  | start on or after 2020-05-05 | A03 5 Day Workweek (BH & Xmas as Work) | Bridgeway | Batley Off-Track | Off Track | Week 05 | Midweek |  |  |  | Topographical | Darren Walsh |
| A75620 |  | Howley Mill Ln Walkout/install | 1d | 2020-05-05 A | 2020-05-05 A |  | 100% |  |  | start on or after 2020-05-05 | A03 5 Day Workweek (BH & Xmas as Work) | Bridgeway | Batley Off-Track | Off Track | Week 05 | Midweek |  |  |  | Walkout | Darren Walsh |
| A72910 |  | Traverse/level/topo | 1d | 2020-05-06 A | 2020-05-06 A |  | 100% |  |  | start on or after 2020-05-06 | A03 5 Day Workweek (BH & Xmas as Work) | Bridgeway | Batley Off-Track | Off Track | Week 05 | Midweek |  |  |  | Topographical | Darren Walsh |
| A72960 |  | Batley LX Walkout/install | 1d | 2020-05-06 A | 2020-05-06 A |  | 100% |  |  | start on or after 2020-05-06 | A03 5 Day Workweek (BH & Xmas as Work) | Bridgeway | Batley Off-Track | Off Track | Week 05 | Midweek |  |  |  | Walkout | Darren Walsh |
| A72930 |  | Static Scanning | 1d | 2020-05-07 A | 2020-05-07 A |  | 100% |  |  | start on or after 2020-05-07 | A03 5 Day Workweek (BH & Xmas as Work) | Bridgeway | Batley Off-Track | Off Track | Week 05 | Midweek |  |  |  | Topographical | Darren Walsh |
| A72980 |  | Traverse/level/topo | 1d | 2020-05-07 A | 2020-05-07 A |  | 100% |  |  | start on or after 2020-05-07 | A03 5 Day Workweek (BH & Xmas as Work) | Bridgeway | Batley Off-Track | Off Track | Week 05 | Midweek |  |  |  | Topographical | Darren Walsh |
| A72940 |  | Static Scanning | 1d | 2020-05-08 A | 2020-05-08 A |  | 100% |  |  | start on or after 2020-05-08 | A03 5 Day Workweek (BH & Xmas as Work) | Bridgeway | Batley Off-Track | Off Track | Week 05 | Midweek |  |  |  | Topographical | Darren Walsh |
| A72970 |  | Traverse/topo | 1d | 2020-05-08 A | 2020-05-08 A |  | 100% |  |  | start on or after 2020-05-08 | A03 5 Day Workweek (BH & Xmas as Work) | Bridgeway | Batley Off-Track | Off Track | Week 05 | Midweek |  |  |  | Topographical | Darren Walsh |

| ID | WBS | Activity | Duration | Start | Finish | Predecessors | Complete | Planned start | Planned finish | Total float | Free float | Constraint | Calendar | Company Responsible | On-Track Off-Track | Week Number | Weekend/Midweek | Project | Mileage | Responsibility | Location | Discipline | Text | Location / ELR | Machines Required | GI Reference Number | Access Point | Comments |
| --- | --- | --- | --- | --- | --- | --- | --- | --- | --- | --- | --- | --- | --- | --- | --- | --- | --- | --- | --- | --- | --- | --- | --- | --- | --- | --- | --- | --- |
|  | 3 | **Week 06** |  | 2020-05-11 | 2020-05-15 |  |  |  |  |  |  |  |  |  |  |  |  |  |  |  |  |  |  |  |  |  |  |  |
| A75560 |  | Drainage Walkout/Familiarisation | 5d | 2020-05-11 A | 2020-05-15 A |  | 100% | 2020-05-25 | 2020-05-29 |  |  | start on or after 2020-05-11 |  | Lanes4Drains | Off Track | Week 06 | Midweek | W4 | Full Mileage | Isaac Derry | OB MDL1/43 - A62 Gelderd Road | Walkout |  |  |  |  |  |  |
|  | 2 | **Week 07** |  |  |  |  |  |  |  |  |  |  |  |  |  |  |  |  |  |  |  |  |  |  |  |  |  |  |
|  | 1 | **Week 08** |  | 2020-06-22 | 2020-06-22 |  |  |  |  |  |  |  |  |  |  |  |  |  |  |  |  |  |  |  |  |  |  |  |
| A62390 |  | Drainage Inspection (non-track) | 1d | 2020-06-22 A | 2020-06-22 A | A72630 | 100% |  |  |  |  | start on or after 2020-05-25 |  | Lanes4Drains | Off Track | Week 08 | Midweek | W4 | 33m60 | Ben Cantrell | Dewsbury Station | Drainage | keep |  |  |  |  |  |
| A62480 |  | Drainage Inspection (non-track) | 1d | 2020-06-22 A | 2020-06-22 A | A72630 | 100% |  |  |  |  | start on or after 2020-05-25 |  | Lanes4Drains | Off Track | Week 08 | Midweek | W4 | 35m9 | Ben Cantrell | Batley Station | Drainage | keep |  |  |  |  |  |
|  | 4 | **Week 09** |  |  |  |  |  |  |  |  |  |  |  |  |  |  |  |  |  |  |  |  |  |  |  |  |  |  |
|  | 6 | **Week 10** |  |  |  |  |  |  |  |  |  |  |  |  |  |  |  |  |  |  |  |  |  |  |  |  |  |  |
|  | 7 | **Week 11** |  |  |  |  |  |  |  |  |  |  |  |  |  |  |  |  |  |  |  |  |  |  |  |  |  |  |
|  | 8 | **Week 12** |  | 2020-06-22 | 2020-06-26 |  |  |  |  |  |  |  |  |  |  |  |  |  |  |  |  |  |  |  |  |  |  |  |
| A79010 |  | Off Track Topo Survey & Scanning | 5d | 2020-06-22 A | 2020-06-26 A |  | 100% |  |  |  |  | start on or after 2020-06-22 |  | SEP | Off Track | Week 12 | Midweek | W4 |  | Dom Keegans | Morley Tunnel (MDL1/36) | Topographical |  | Copley Yard to Geldred Rd |  |  |  |  |
| A79020 |  | Off Track Topo Survey & Scanning | 5d | 2020-06-22 A | 2020-06-26 A |  | 100% |  |  |  |  | start on or after 2020-06-22 |  | SEP | Off Track | Week 12 | Midweek | W4 |  | Dom Keegans | Morley Tunnel (MDL1/36) | Topographical |  | Copley Yard to Geldred Rd |  |  |  |  |
|  | 9 | **Week 13** |  | 2020-06-29 | 2020-07-03 |  |  |  |  |  |  |  |  |  |  |  |  |  |  |  |  |  |  |  |  |  |  |  |
| A78990 |  | Off Track Topo Survey & Scanning | 5d | 2020-06-29 A | 2020-07-03 A |  | 100% |  |  |  |  | start on or after 2020-06-29 |  | SEP | Off Track | Week 13 | Midweek | W4 |  | Dom Keegans | Morley Tunnel (MDL1/36) | Topographical |  | Geldred Rd to Churwell Viaduct | 3rd | DONE |  |  |
| A79000 |  | Off Track Topo Survey & Scanning | 5d | 2020-06-29 A | 2020-07-03 A |  | 100% |  |  |  |  | start on or after 2020-06-29 |  | SEP | Off Track | Week 13 | Midweek | W4 |  | Dom Keegans | Morley Tunnel (MDL1/36) | Topographical |  | Geldred Rd to Churwell Viaduct | 3rd | DONE |  |  |
| A79040 |  | Drainage Survey - Asset Location, Asset Data & Dye Trace | 1d | 2020-06-29 A | 2020-06-29 A |  | 100% |  |  |  |  | start on or after 2020-06-29 |  | Lanes4Drains | Off Track | Week 13 | Midweek | W4 | 33m50ch - 34m00ch | Isaac Derry | Morley Tunnel (MDL1/36) | Drainage | keep | Dewsbury | 3rd | W4-DR-001 | DONE |  |
| A66060 |  | Drainage Survey - CCTV/Jetting | 1d | 2020-06-30 A | 2020-06-30 A | A72630 | 100% |  |  |  |  | start on or after 2020-06-30 |  | Lanes4Drains | Off Track | Week 13 | Midweek | W4 | 33m50ch - 34m00ch | Isaac Derry | Morley Tunnel (MDL1/36) | Drainage |  | Dewsbury | 3rd | W4-DR-001 | DONE |  |
| A78730 |  | Viaduct Site Visit | 1d | 2020-06-30 A | 2020-06-30 A |  | 100% |  |  |  |  | start on or after 2020-06-30 | A03 5 Day Workweek (BH & Xmas as Work) | Amey | Off Track | Week 13 | Midweek |  | MDL1 33m 73 ch – 34m 02 ch | Gary Rhodes |  | Walkout |  | Dewsbury Viaduct | 3rd |  |  |  |
| A78740 |  | Viaduct Site Visit | 1d | 2020-06-30 A | 2020-06-30 A |  | 100% |  |  |  |  | start on or after 2020-06-30 | A03 5 Day Workweek (BH & Xmas as Work) | Amey | Off Track | Week 13 | Midweek |  | MDL1 34m 73ch – 35m 02 ch | Gary Rhodes |  | Walkout |  | Batley Viaduct | 3rd |  |  |  |
| A78750 |  | Viaduct Site Visit | 1d | 2020-06-30 A | 2020-06-30 A |  | 100% |  |  |  |  | start on or after 2020-06-30 | A03 5 Day Workweek (BH & Xmas as Work) | Amey | Off Track | Week 13 | Midweek |  | MDL1 39m 56 ch -39m 58 ch | Gary Rhodes |  | Walkout |  | Churwell Viaduct | 3rd |  |  |  |
|  | 10 | **Week 14** |  | 2020-07-06 | 2020-07-10 |  |  |  |  |  |  |  |  |  |  |  |  |  |  |  |  |  |  |  |  |  |  |  |
| A61660 |  | Off Track drainage inspection | 5d | 2020-07-06 | 2020-07-10 | A72630 |  |  |  | 296d | 33d | start on or after 2020-07-06 |  | Lanes4Drains | Off Track | Week 14 | Midweek | W4 | 33m57 | Ben Cantrell | OB MDL1/17 - Ashworth Road | Drainage |  |  | 3rd | MDL1/17/DR/01 |  |  |
| A61670 |  | Off Track drainage inspection - RECREATE LINKS | 1d | 2020-07-06 | 2020-07-06 | A72630 |  |  |  | 300d | 28d | start on or after 2020-07-06 |  | Lanes4Drains | Off Track | Week 14 | Midweek | W4 | 35m19 | Ben Cantrell | OB MDL1/29 - Soothill Lane | Drainage |  | RESCOPED | 3rd | MDL1/29/DR/01 | RECREATE LINKS |  |
| A61680 |  | Off Track drainage inspection - RECREATE LINKS | 2d | 2020-07-06 | 2020-07-07 | A72630 |  |  |  | 299d | 28d | start on or after 2020-07-06 |  | Lanes4Drains | Off Track | Week 14 | Midweek | W4 | 40m31 | Ben Cantrell | OB MDL1/43 - A62 Gelderd Road | Drainage | keep | RESCOPED | 3rd | MDL1/43/DR/01 | RECREATE LINKS |  |
| A61690 |  | Off Track drainage inspection | 5d | 2020-07-06 | 2020-07-10 | A72630 |  |  |  | 296d | 28d | start on or after 2020-07-06 |  | Lanes4Drains | Off Track | Week 14 | Midweek | W4 | 41m14 | Ben Cantrell | OB MDL1/47 - Whitehall Road Dragon Bridge | Drainage | keep |  | 3rd | MDL1/47/DR/01 |  |  |
| A61930 |  | Horizontal Core | 1d | 2020-07-06 | 2020-07-06 | A72630 |  |  |  | 149d | 46d | start on or after 2020-07-06 |  | Structural Soils | Off Track |  | Midweek | W4 | HERITAGE APPROVAL RECIEVED | Olly Phillips | Dewsbury Station | Coring |  | Dewsbury Station | EH | HC2 - MOVE POST 14 |  | Olly |
| A61950 |  | Horizontal Core | 1d | 2020-07-06 | 2020-07-06 | A72630 |  |  |  | 149d | 46d | start on or after 2020-07-06 |  | Structural Soils | Off Track |  | Midweek | W4 | HERITAGE APPROVAL RECIEVED | Olly Phillips | Dewsbury Station | Coring |  | Dewsbury Station | EH | HC4 - MOVE POST 14 |  | Olly |
| A61960 |  | Inclined Core | 1d | 2020-07-06 | 2020-07-06 | A72630 |  |  |  | 149d | 46d | start on or after 2020-07-06 |  | Structural Soils | Off Track |  | Midweek | W4 | HERITAGE APPROVAL RECIEVED | Olly Phillips | Dewsbury Station | Coring |  | Dewsbury Station | EH | IC1 - MOVE POST 14 |  | Olly |
| A61970 |  | Inclined Core | 1d | 2020-07-06 | 2020-07-06 | A72630 |  |  |  | 149d | 46d | start on or after 2020-07-06 |  | Structural Soils | Off Track |  | Midweek | W4 | HERITAGE APPROVAL RECIEVED | Olly Phillips | Dewsbury Station | Coring |  | Dewsbury Station | EH | IC2 - MOVE POST 14 |  | Olly |
| A61980 |  | Inclined Core | 1d | 2020-07-06 | 2020-07-06 | A72630 |  |  |  | 149d | 46d | start on or after 2020-07-06 |  | Structural Soils | Off Track |  | Midweek | W4 | HERITAGE APPROVAL RECIEVED | Olly Phillips | Dewsbury Station | Coring |  | Dewsbury Station | EH | IC3 - MOVE POST 14 |  | Olly |
| A61990 |  | Inclined Core | 1d | 2020-07-06 | 2020-07-06 | A72630 |  |  |  | 149d | 46d | start on or after 2020-07-06 |  | Structural Soils | Off Track |  | Midweek | W4 | HERITAGE APPROVAL RECIEVED | Olly Phillips | Dewsbury Station | Coring |  | Dewsbury Station | EH | IC4 - MOVE POST 14 |  | Olly |
| A62000 |  | Inclined Core | 1d | 2020-07-06 | 2020-07-06 | A72630 |  |  |  | 149d | 46d | start on or after 2020-07-06 |  | Structural Soils | Off Track |  | Midweek | W4 | HERITAGE APPROVAL RECIEVED | Olly Phillips | Dewsbury Station | Coring |  | Dewsbury Station | EH | IC5 - MOVE POST 14 |  | Olly |
| A79230 |  | Off Track Topo Survey & Scanning | 5d | 2020-07-06 | 2020-07-10 |  |  |  |  | 336d |  | start on or after 2020-07-06 |  | SEP | Off Track | Week 14 | Midweek | W4 |  | Dom Keegans | Morley Tunnel (MDL1/36) | Topographical |  | Churwell Viaduct to Morley | 3rd |  |  |  |
| A79240 |  | Off Track Topo Survey & Scanning | 5d | 2020-07-06 | 2020-07-10 |  |  |  |  | 336d |  | start on or after 2020-07-06 |  | SEP | Off Track | Week 14 | Midweek | W4 |  | Dom Keegans | Morley Tunnel (MDL1/36) | Topographical |  | Churwell Viaduct to Morley | 3rd |  |  |  |
| A81170 |  | Laser Scanning | 1d | 2020-07-06 | 2020-07-06 |  |  |  |  | 244d |  | start on or after 2020-07-06 | A03 5 Day Workweek (BH & Xmas as Work) | Severn Partnership | Off Track | Week 14 | Midweek |  |  | John Woods |  | Topographical |  | Dewsbury | 3rd |  |  |  |
| A79520 |  | Laser Scanning | 1d | 2020-07-07 | 2020-07-07 |  |  |  |  | 243d |  | start on or after 2020-07-07 | A03 5 Day Workweek (BH & Xmas as Work) | Severn Partnership | Off Track | Week 14 | Midweek |  |  | John Woods |  | Topographical |  | Dewsbury | 3rd |  |  |  |
| A79530 |  | Laser Scanning | 1d | 2020-07-08 | 2020-07-08 |  |  |  |  | 242d |  | start on or after 2020-07-08 | A03 5 Day Workweek (BH & Xmas as Work) | Severn Partnership | Off Track | Week 14 | Midweek |  |  | John Woods |  | Topographical |  | Dewsbury | 3rd |  |  |  |
| A79540 |  | Laser Scanning | 1d | 2020-07-09 | 2020-07-09 |  |  |  |  | 241d |  | start on or after 2020-07-09 | A03 5 Day Workweek (BH & Xmas as Work) | Severn Partnership | Off Track | Week 14 | Midweek |  |  | John Woods |  | Topographical |  | Dewsbury | 3rd |  |  |  |
| A79560 |  | Control coordination | 1d | 2020-07-09 | 2020-07-09 |  |  |  |  | 241d |  | start on or after 2020-07-09 | A03 5 Day Workweek (BH & Xmas as Work) | Severn Partnership | Off Track | Week 14 | Midweek |  |  | John Woods |  | Topographical |  | Standedge tunnel |  |  |  |  |
| A81690 |  | Laser Scanning | 1d | 2020-07-09 | 2020-07-09 |  |  |  |  | 241d |  | start on or after 2020-07-09 | A03 5 Day Workweek (BH & Xmas as Work) | Severn Partnership | Off Track | Week 14 | Midweek |  |  | John Woods |  | Topographical |  | Dewsbury | 3rd |  |  |  |
| A79550 |  | Laser Scanning | 1d | 2020-07-10 | 2020-07-10 |  |  |  |  | 240d |  | start on or after 2020-07-10 | A03 5 Day Workweek (BH & Xmas as Work) | Severn Partnership | Off Track | Week 14 | Midweek |  |  | John Woods |  | Topographical |  | Dewsbury | 3rd |  |  |  |
| A81700 |  | Control coordination | 1d | 2020-07-10 | 2020-07-10 |  |  |  |  | 240d |  | start on or after 2020-07-10 | A03 5 Day Workweek (BH & Xmas as Work) | Severn Partnership | Off Track | Week 14 | Midweek |  |  | John Woods |  | Topographical |  | Standedge tunnel |  |  |  |  |

Notes:
- A61930: General Comments: 01/04 - Permission to work at Dewsbury Station not granted for week 2. Works / moved back to week 6 to allow for the application to be accepted. / 18/05 - No permission recievied for week 7. Works moved back to week 6 to / allow for the application to be accepted.
- A61950: General Comments: 01/04 - Permission to work at Dewsbury Station not granted for week 2. Works / moved back to week 6 to allow for the application to be accepted. / 18/05 - No permission recievied for week 7. Works moved back to week 6 to / allow for the application to be accepted.
- A61960: General Comments: 01/04 - Permission to work at Dewsbury Station not granted for week 2. Works / moved back to week 6 to allow for the application to be accepted. / 18/05 - No permission recievied for week 7. Works moved back to week 6 to / allow for the application to be accepted.
- A61970: General Comments: 01/04 - Permission to work at Dewsbury Station not granted for week 2. Works / moved back to week 6 to allow for the application to be accepted. / 18/05 - No permission recievied for week 7. Works moved back to week 6 to / allow for the application to be accepted.
- A61980: General Comments: 01/04 - Permission to work at Dewsbury Station not granted for week 2. Works / moved back to week 6 to allow for the application to be accepted. / 18/05 - No permission recievied for week 7. Works moved back to week 6 to / allow for the application to be accepted.
- A61990: General Comments: 01/04 - Permission to work at Dewsbury Station not granted for week 2. Works / moved back to week 6 to allow for the application to be accepted. / 18/05 - No permission recievied for week 7. Works moved back to week 6 to / allow for the application to be accepted.
- A62000: General Comments: 01/04 - Permission to work at Dewsbury Station not granted for week 2. Works / moved back to week 6 to allow for the application to be accepted. / 18/05 - No permission recievied for week 7. Works moved back to week 6 to / allow for the application to be accepted.

| ID | WBS | Activity | Duration | Start | Finish | Predecessors | Total float | Free float | Constraint | Calendar | Text | Comments | Machines Required | Company Responsible | GI Reference Number | On-Track Off-Track | Weekend/Midweek | Project | Mileage | Responsibility | Location | Discipline | Location / ELR | Week Number | Access Point |
| --- | --- | --- | --- | --- | --- | --- | --- | --- | --- | --- | --- | --- | --- | --- | --- | --- | --- | --- | --- | --- | --- | --- | --- | --- | --- |
|  | 11 | **Week 15** |  | 2020-07-13 | 2020-07-17 |  |  |  |  |  |  |  |  |  |  |  |  |  |  |  |  |  |  |  |  |
| A60270 |  | Bore Hole | 5d | 2020-07-13 | 2020-07-17 | A72630 | 100d | 105d | start on or after 2020-07-13 |  | Y | Michael | EH | Bam Ritchies | BH5401 - MOVE POST 15 | Off Track | Midweek | W4 | 33m59 | Jamie Hogg | Dewsbury Station | Borehole |  |  |  |
| A79050 |  | Drainage Survey - Asset Location, Asset Data & Dye Trace | 1d | 2020-07-14 | 2020-07-14 |  | 332d |  | start on or after 2020-07-14 |  |  |  | 3rd | Lanes4Drains | W4-DR-039 - 041 | Off Track | Midweek | W4 | 35m40ch - 35m60ch | Isaac Derry | Morley Tunnel (MDL1/36) | Drainage | Batley | Week 15 |  |
| A61700 |  | Horizontal Core - SCOPE INFO REQUIRED | 1d | 2020-07-15 | 2020-07-15 | A72630 | 196d | 7d | start on or after 2020-07-15 |  |  |  | EH | Bam Ritchies | HC1 - MOVE POST 15 | Off Track | Midweek | W4 | 35m9 | Jamie Hogg | Batley Station Subway | Coring | Batley Station |  |  |
| A61710 |  | Horizontal Core - SCOPE INFO REQUIRED | 1d | 2020-07-15 | 2020-07-15 | A72630 | 196d | 7d | start on or after 2020-07-15 |  |  |  | EH | Bam Ritchies | HC2 - MOVE POST 15 | Off Track | Midweek | W4 | 35m9 | Jamie Hogg | Batley Station Subway | Coring | Batley Station |  |  |
| A61720 |  | Horizontal Core - SCOPE INFO REQUIRED | 1d | 2020-07-15 | 2020-07-15 | A72630 | 196d | 7d | start on or after 2020-07-15 |  |  |  | EH | Bam Ritchies | HC3 - MOVE POST 15 | Off Track | Midweek | W4 | 35m9 | Jamie Hogg | Batley Station Subway | Coring | Batley Station |  |  |
| A61730 |  | Horizontal Core - SCOPE INFO REQUIRED | 1d | 2020-07-15 | 2020-07-15 | A72630 | 196d | 7d | start on or after 2020-07-15 |  |  |  | EH | Bam Ritchies | HC4 - MOVE POST 15 | Off Track | Midweek | W4 | 35m9 | Jamie Hogg | Batley Station Subway | Coring | Batley Station |  |  |
| A61740 |  | Horizontal Core - SCOPE INFO REQUIRED | 1d | 2020-07-15 | 2020-07-15 | A72630 | 196d | 7d | start on or after 2020-07-15 |  |  |  | EH | Bam Ritchies | HC5 - MOVE POST 15 | Off Track | Midweek | W4 | 35m9 | Jamie Hogg | Batley Station Subway | Coring | Batley Station |  |  |
| A61750 |  | Horizontal Core - SCOPE INFO REQUIRED | 1d | 2020-07-15 | 2020-07-15 | A72630 | 196d | 7d | start on or after 2020-07-15 |  |  |  | EH | Bam Ritchies | HC6 - MOVE POST 15 | Off Track | Midweek | W4 | 35m9 | Jamie Hogg | Batley Station Subway | Coring | Batley Station |  |  |
| A61760 |  | Horizontal Core - SCOPE INFO REQUIRED | 1d | 2020-07-15 | 2020-07-15 | A72630 | 196d | 7d | start on or after 2020-07-15 |  |  |  | EH | Bam Ritchies | HC7 - MOVE POST 15 | Off Track | Midweek | W4 | 35m9 | Jamie Hogg | Batley Station Subway | Coring | Batley Station |  |  |
| A61770 |  | Horizontal Core - SCOPE INFO REQUIRED | 1d | 2020-07-15 | 2020-07-15 | A72630 | 196d | 7d | start on or after 2020-07-15 |  |  |  | EH | Bam Ritchies | HC8 - MOVE POST 15 | Off Track | Midweek | W4 | 35m9 | Jamie Hogg | Batley Station Subway | Coring | Batley Station |  |  |
| A61820 |  | Horizontal Core - SCOPE INFO REQUIRED | 1d | 2020-07-15 | 2020-07-15 | A72630 | 196d | 7d | start on or after 2020-07-15 |  |  |  | EH | Bam Ritchies | HC13 - MOVE POST 15 | Off Track | Midweek | W4 | 35m9 | Jamie Hogg | Batley Station Subway | Coring | Batley Station |  |  |
| A79080 |  | Drainage Survey - Asset Location, Asset Data & Dye Trace | 1d | 2020-07-15 | 2020-07-15 |  | 331d |  | start on or after 2020-07-15 |  |  |  | 3rd | Lanes4Drains | W4-DR-043 | Off Track | Midweek | W4 | 36m00ch - 36m20ch | Isaac Derry | Morley Tunnel (MDL1/36) | Drainage | Morley West Portal | Week 15 |  |
| A79070 |  | Drainage Survey - Asset Location, Asset Data & Dye Trace | 1d | 2020-07-16 | 2020-07-16 |  | 330d |  | start on or after 2020-07-16 |  |  |  | 3rd | Lanes4Drains | W4-DR-042 | Off Track | Midweek | W4 | 35m60ch - 36m00ch | Isaac Derry | Morley Tunnel (MDL1/36) | Drainage | Morley West Portal | Week 15 |  |
|  | 12 | **Week 16** |  | 2020-07-20 | 2020-07-24 |  |  |  |  |  |  |  |  |  |  |  |  |  |  |  |  |  |  |  |  |
| A65940 |  | Drainage Survey - Asset Location, Asset Data & Dye Trace | 5d | 2020-07-20 | 2020-07-24 | A72630 | 84d | 72d | start on or after 2020-07-20 |  |  |  | 3rd | Lanes4Drains | W4-DR-039 - 041 | Off Track | Midweek | W4 | 35m40ch - 35m60ch | Isaac Derry | Morley Tunnel (MDL1/36) | Drainage | Batley | Week 16 |  |
| A66110 |  | Drainage Survey - CCTV/Jetting | 5d | 2020-07-20 | 2020-07-24 | A72630 | 84d | 72d | start on or after 2020-07-20 |  |  |  | 3rd | Lanes4Drains | W4-DR-039 - 041 | Off Track | Midweek | W4 | 35m40ch - 35m60ch | Isaac Derry | Morley Tunnel (MDL1/36) | Drainage | Batley | Week 16 |  |
| A79090 |  | Drainage Survey - Asset Location, Asset Data & Dye Trace | 5d | 2020-07-20 | 2020-07-24 |  | 322d |  | start on or after 2020-07-20 |  |  |  | 3rd | Lanes4Drains | W4-DR-039 - 041 | Off Track | Midweek | W4 | 35m40ch - 35m60ch | Isaac Derry | Morley Tunnel (MDL1/36) | Drainage | Batley | Week 16 |  |
| A81280 |  | Drainage Survey - Asset Location, Asset Data & Dye Trace | 5d | 2020-07-20 | 2020-07-24 |  | 322d |  | start on or after 2020-07-20 |  |  |  | 3rd | Lanes4Drains | BS-Drainage | Off Track | Midweek | W4 | 35m40ch - 35m60ch | Isaac Derry | Morley Tunnel (MDL1/36) | Drainage | Batley | Week 16 |  |
| A81290 |  | Drainage Survey - Asset Location, Asset Data & Dye Trace | 5d | 2020-07-20 | 2020-07-24 |  | 322d |  | start on or after 2020-07-20 |  |  |  | 3rd | Lanes4Drains | DS-Drainage | Off Track | Midweek | W4 | 35m40ch - 35m60ch | Isaac Derry | Morley Tunnel (MDL1/36) | Drainage | Batley | Week 16 |  |
| A73740 |  | Fencing repairs to Marsden Station Compound | 4d | 2020-07-21 | 2020-07-24 |  | 230d |  | start on or after 2020-07-21 | A03 5 Day Workweek (BH & Xmas as Work) |  |  |  | Bam Nuttall |  | Off Track | Midweek |  | MVL3 18m 1218y | Mark Cooper |  | Prep For Safety |  | Week 16 | Marsden Station |
| A61840 |  | Inclined Core - SCOPE INFO REQUIRED | 1d | 2020-07-22 | 2020-07-22 | A72630 | 189d | 0d | start on or after 2020-07-22 |  |  |  | EH | Bam Ritchies | IC1 - MOVE POST 16 | Off Track | Midweek | W4 | 35m9 | Jamie Hogg | Batley Station Subway | Coring | Batley Station |  |  |
| A61850 |  | Inclined Core - SCOPE INFO REQUIRED | 1d | 2020-07-22 | 2020-07-22 | A72630 | 189d | 0d | start on or after 2020-07-22 |  |  |  | EH | Bam Ritchies | IC2 - MOVE POST 16 | Off Track | Midweek | W4 | 35m9 | Jamie Hogg | Batley Station Subway | Coring | Batley Station |  |  |
| A61860 |  | Inclined Core - SCOPE INFO REQUIRED | 1d | 2020-07-22 | 2020-07-22 | A72630 | 189d | 0d | start on or after 2020-07-22 |  |  |  | EH | Bam Ritchies | IC3 - MOVE POST 16 | Off Track | Midweek | W4 | 35m9 | Jamie Hogg | Batley Station Subway | Coring | Batley Station |  |  |
| A61870 |  | Inclined Core - SCOPE INFO REQUIRED | 1d | 2020-07-22 | 2020-07-22 | A72630 | 189d | 0d | start on or after 2020-07-22 |  |  |  | EH | Bam Ritchies | IC4 - MOVE POST 16 | Off Track | Midweek | W4 | 35m9 | Jamie Hogg | Batley Station Subway | Coring | Batley Station |  |  |
| A73660 |  | Prep For Safety - De-veg Kildare Terrace access steps | 1d | 2020-07-24 | 2020-07-24 |  | 322d |  | start on or after 2020-07-24 |  |  |  | LS | Bam Nuttall |  | Off Track | Midweek | W4 | 41m75ch | Mark Cooper | Cottingley to Copley Hill | Prep For Safety |  | Week 16 | MDL1 41m 75ch |

Notes:
- A60270: General Comments: 28/05 - Did not happen due to Covid restrictions. Resource limitations / mean we cannot plan works any sooner than week 15, likely to slip further as / other boreholes across the route will take priority at this current / time.
- A61700: General Comments: 28/05 - Heavily congested worksite midweek 11 meant works could not be / completed. Supplier also believes these works do not require a possession to / complete. Have been provisionally moved ti week 15 & 16, with the aim / to improve upon these dates
- A61710: General Comments: 28/05 - Heavily congested worksite midweek 11 meant works could not be / completed. Supplier also believes these works do not require a possession to / complete. Have been provisionally moved ti week 15 & 16, with the aim / to improve upon these dates
- A61720: General Comments: 28/05 - Heavily congested worksite midweek 11 meant works could not be / completed. Supplier also believes these works do not require a possession to / complete. Have been provisionally moved ti week 15 & 16, with the aim / to improve upon these dates
- A61730: General Comments: 28/05 - Heavily congested worksite midweek 11 meant works could not be / completed. Supplier also believes these works do not require a possession to / complete. Have been provisionally moved ti week 15 & 16, with the aim / to improve upon these dates
- A61740: General Comments: 28/05 - Heavily congested worksite midweek 11 meant works could not be / completed. Supplier also believes these works do not require a possession to / complete. Have been provisionally moved ti week 15 & 16, with the aim / to improve upon these dates
- A61750: General Comments: 28/05 - Heavily congested worksite midweek 11 meant works could not be / completed. Supplier also believes these works do not require a possession to / complete. Have been provisionally moved ti week 15 & 16, with the aim / to improve upon these dates
- A61760: General Comments: 28/05 - Heavily congested worksite midweek 11 meant works could not be / completed. Supplier also believes these works do not require a possession to / complete. Have been provisionally moved ti week 15 & 16, with the aim / to improve upon these dates
- A61770: General Comments: 28/05 - Heavily congested worksite midweek 11 meant works could not be / completed. Supplier also believes these works do not require a possession to / complete. Have been provisionally moved ti week 15 & 16, with the aim / to improve upon these dates
- A61820: General Comments: 28/05 - Heavily congested worksite midweek 11 meant works could not be / completed. Supplier also believes these works do not require a possession to / complete. Have been provisionally moved ti week 15 & 16, with the aim / to improve upon these dates
- A61840: General Comments: 28/05 - Heavily congested worksite midweek 11 meant works could not be / completed. Supplier also believes these works do not require a possession to / complete. Have been provisionally moved ti week 15 & 16, with the aim / to improve upon these dates
- A61850: General Comments: 28/05 - Heavily congested worksite midweek 11 meant works could not be / completed. Supplier also believes these works do not require a possession to / complete. Have been provisionally moved ti week 15 & 16, with the aim / to improve upon these dates
- A61860: General Comments: 28/05 - Heavily congested worksite midweek 11 meant works could not be / completed. Supplier also believes these works do not require a possession to / complete. Have been provisionally moved ti week 15 & 16, with the aim / to improve upon these dates
- A61870: General Comments: 28/05 - Heavily congested worksite midweek 11 meant works could not be / completed. Supplier also believes these works do not require a possession to / complete. Have been provisionally moved ti week 15 & 16, with the aim / to improve upon these dates

| ID | WBS | Activity | Duration | Start | Finish | Predecessors | Total float | Free float | Constraint | Text | Machines Required | Company Responsible | GI Reference Number | On-Track Off-Track | Week Number | Weekend/Midweek | Project | Mileage | Responsibility | Location | Discipline | Location / ELR | Access Point | Comments | Teams |
| --- | --- | --- | --- | --- | --- | --- | --- | --- | --- | --- | --- | --- | --- | --- | --- | --- | --- | --- | --- | --- | --- | --- | --- | --- | --- |
|  | 13 | **Week 17** |  | 2020-07-27 | 2020-07-31 |  |  |  |  |  |  |  |  |  |  |  |  |  |  |  |  |  |  |  |  |
| A60390 |  | Bore Hole | 5d | 2020-07-27 | 2020-07-31 | A72630 | 37d | 7d | start on or after 2020-07-27 | Y | EH | Bam Ritchies | BH5403 | Off Track | Week 17 | Midweek | W4 | 35m8 | Jamie Hogg | Batley Station | Borehole |  |  |  |  |
|  | 14 | **Week 18** |  | 2020-08-03 | 2020-08-07 |  |  |  |  |  |  |  |  |  |  |  |  |  |  |  |  |  |  |  |  |
| A60400 |  | Bore Hole | 5d | 2020-08-03 | 2020-08-07 | A72630 | 30d | 0d | start on or after 2020-08-03 | Y | EH | Bam Ritchies | BH5404 - MOVE POST 18 | Off Track |  | Midweek | W4 | 35m8 | Jamie Hogg | Batley Station | Borehole |  |  |  |  |
| A66260 |  | Drainage Survey - Asset Location, Asset Data & Dye Trace | 5d | 2020-08-03 | 2020-08-07 | A72630 | 70d | 58d | start on or after 2020-08-03 |  | LS | Lanes4Drains | W4-DR-042 | Off Track | Week 18 | Midweek | W4 | 35m60ch - 36m00ch | Isaac Derry | Morley Tunnel (MDL1/36) | Drainage | Morley West Portal | Morley |  |  |
| A66270 |  | Drainage Survey - Asset Location, Asset Data & Dye Trace | 5d | 2020-08-03 | 2020-08-07 | A72630 | 70d | 58d | start on or after 2020-08-03 |  | LS | Lanes4Drains | W4-DR-048 - 050 | Off Track | Week 18 | Midweek | W4 | 36m00ch - 36m20ch | Isaac Derry | Morley Tunnel (MDL1/36) | Drainage | Morley West Portal | Morley |  |  |
| A81310 |  | Off Track drainage inspection - RECREATE LINKS | 1d | 2020-08-03 | 2020-08-03 | A72630 | 272d | 0d | start on or after 2020-08-03 |  | 3rd | Lanes4Drains | MDL1/29/DR/01 - RESCOPED | Off Track | Week 18 | Midweek | W4 | 35m19 | Ben Cantrell | OB MDL1/29 - Soothill Lane | Drainage | RESCOPED | RECREATE LINKS |  |  |
| A81320 |  | Off Track drainage inspection - RECREATE LINKS | 2d | 2020-08-03 | 2020-08-04 | A72630 | 271d | 0d | start on or after 2020-08-03 | keep | 3rd | Lanes4Drains | MDL1/43/DR/01 - RESCOPED | Off Track | Week 18 | Midweek | W4 | 40m31 | Ben Cantrell | OB MDL1/43 - A62 Gelderd Road | Drainage | RESCOPED | RECREATE LINKS |  |  |
| A81330 |  | Off Track drainage inspection | 5d | 2020-08-03 | 2020-08-07 | A72630 | 268d | 0d | start on or after 2020-08-03 | keep | 3rd | Lanes4Drains | MDL1/47/DR/01 | Off Track | Week 18 | Midweek | W4 | 41m14 | Ben Cantrell | OB MDL1/47 - Whitehall Road Dragon Bridge | Drainage |  |  |  |  |
|  | 15 | **Week 19-1** |  | 2020-08-11 | 2020-08-14 |  |  |  |  |  |  |  |  |  |  |  |  |  |  |  |  |  |  |  |  |
| A81350 |  | Drainage Survey - CCTV/Jetting | 2d | 2020-08-11 | 2020-08-12 | A72630 | 65d | 53d | start on or after 2020-08-11 |  | 29.06 | Lanes4Drains | W4-DR-009 | Off Track | Week 19 | Midweek | W4 | 33m50ch - 34m75ch | Isaac Derry | Morley Tunnel (MDL1/36) | Drainage | Dewsbury | Batley |  |  |
| A81300 |  | Off Track drainage inspection | 1d | 2020-08-12 | 2020-08-12 | A72630 | 263d | 0d | start on or after 2020-08-12 |  | 3rd | Lanes4Drains | MDL1/17/DR/01 | Off Track | Week 19 | Midweek | W4 | 33m57 | Ben Cantrell | OB MDL1/17 - Ashworth Road | Drainage |  |  |  |  |
| A81340 |  | Drainage Survey - Asset Location, Asset Data & Dye Trace | 1d | 2020-08-13 | 2020-08-13 | A72630 | 64d | 52d | start on or after 2020-08-13 |  |  | Lanes4Drains | W4-DR-024 | Off Track | Week 19 | Midweek | W4 | 34m75ch to 35m57ch | Isaac Derry | Morley Tunnel (MDL1/36) | Drainage | Batley | Batley |  |  |
| A82350 |  | Drainage Survey - Asset Location, Asset Data & Dye Trace | 1d | 2020-08-14 | 2020-08-14 |  | 301d |  | start on or after 2020-08-14 |  | LS | Lanes4Drains | W4-DR-042 | Off Track | Week 19 | Midweek | W4 | 35m60ch - 36m00ch | Isaac Derry | Morley Tunnel (MDL1/36) | Drainage | Morley West Portal | Morley |  |  |
| A82360 |  | Drainage Survey - Asset Location, Asset Data & Dye Trace | 1d | 2020-08-14 | 2020-08-14 |  | 301d |  | start on or after 2020-08-14 |  | LS | Lanes4Drains | W4-DR-048 - 050 | Off Track | Week 19 | Midweek | W4 | 36m00ch - 36m20ch | Isaac Derry | Morley Tunnel (MDL1/36) | Drainage | Morley West Portal | Morley |  |  |
|  | 16 | **Week 20** |  | 2020-08-17 | 2020-08-17 |  |  |  |  |  |  |  |  |  |  |  |  |  |  |  |  |  |  |  |  |
| A60260 |  | TP + HHWS | 1d | 2020-08-17 | 2020-08-17 | A72630 | 20d | 0d | start on or after 2020-08-17 |  | EH | Structural Soils | TP5463 - MOVE POST 14 | Off Track |  | Midweek | W4 | 33m58 | Olly Phillips | Dewsbury Station | Trial Pit |  |  | Olly | A |
| A60290 |  | TP + HHWS | 1d | 2020-08-17 | 2020-08-17 | A72630 | 20d | 0d | start on or after 2020-08-17 |  | EH | Structural Soils | TP5464 - MOVE POST 14 | Off Track |  | Midweek | W4 | 33m59 | Olly Phillips | Dewsbury Station | Trial Pit |  |  | Olly | A |
| A60330 |  | Trial Pit | 1d | 2020-08-17 | 2020-08-17 | A72630 | 20d | 0d | start on or after 2020-08-17 |  | EH | Structural Soils | TP5468 - MOVE POST 14 | Off Track |  | Midweek | W4 | 33m63 | Olly Phillips | Dewsbury Station | Trial Pit |  |  | Olly | A |
| A60340 |  | Trial Pit | 1d | 2020-08-17 | 2020-08-17 | A72630 | 20d | 0d | start on or after 2020-08-17 |  | EH | Structural Soils | TP5469 - MOVE POST 14 | Off Track |  | Midweek | W4 | 33m63 | Olly Phillips | Dewsbury Station | Trial Pit |  |  | Olly | A |
| A60350 |  | Trial Pit | 1d | 2020-08-17 | 2020-08-17 | A72630 | 20d | 0d | start on or after 2020-08-17 |  | EH | Structural Soils | TP5470 - MOVE POST 14 | Off Track |  | Midweek | W4 | 33m63 | Olly Phillips | Dewsbury Station | Trial Pit |  |  | Olly | A |
| A61280 |  | GPR To Inform Slit Trench - RESCOPED - CREATE REPORT & LINKS | 1d | 2020-08-17 | 2020-08-17 | A72630 | -209d | 298d | start on or after 2020-08-17 |  | EH | RSK | MDL1/29/ST/01 | Off Track | Week 20 | Midweek | W4 | 35m19 | Olly Phillips | OB MDL1/29 - Soothill Lane | Slit Trench |  | REPLAN C-19 | Olly |  |
| A61290 |  | GPR To Inform Slit Trench - RESCOPED - CREATE REPORT & LINKS | 1d | 2020-08-17 | 2020-08-17 | A72630 | 298d |  | start on or after 2020-08-17 |  | EH | RSK | MDL1/29/ST/02 | Off Track | Week 20 | Midweek | W4 | 35m19 | Olly Phillips | OB MDL1/29 - Soothill Lane | Slit Trench |  | REPLAN C-19 | Olly |  |
|  | 17 | **Week 27-1** |  |  |  |  |  |  |  |  |  |  |  |  |  |  |  |  |  |  |  |  |  |  |  |
|  | 18 | **Week 28** |  |  |  |  |  |  |  |  |  |  |  |  |  |  |  |  |  |  |  |  |  |  |  |
|  | 19 | **Week 29-1** |  | 2020-10-19 | 2020-10-30 |  |  |  |  |  |  |  |  |  |  |  |  |  |  |  |  |  |  |  |  |
| A60280 |  | Bore Hole | 12d | 2020-10-19 | 2020-10-30 | A72630 | -5d | 0d | start on or after 2020-10-19 | Y | EH | SSL | BH5402 | Off Track | Week 29 | Midweek | W4 | 33m59 | Olly Phillips | Dewsbury Station | Borehole |  |  |  |  |

Notes:
- A60390: General Comments: 28/05 - Did not happen due to Covid restrictions. Resource limitations / mean we cannot plan works any sooner than week 15, likely to slip further as / other boreholes across the route will take priority at this current / time.
- A60400: General Comments: 28/05 - Did not happen due to Covid restrictions. Resource limitations / mean we cannot plan works any sooner than week 15, likely to slip further as / other boreholes across the route will take priority at this current / time.
- A61280: General Comments: 14/03 - Slit Trench changed to GPR, completion of GPR will inform / requirement of Slit Trench. ***SLIT TRENCH NON-POSSESSION IF / REQUIRED***
- A61290: General Comments: 14/03 - Slit Trench changed to GPR, completion of GPR will inform / requirement of Slit Trench. ***SLIT TRENCH NON-POSSESSION IF / REQUIRED***
- A60280: General Comments: 28/05 - Did not happen due to Covid restrictions. Resource limitations / mean we cannot plan works any sooner than week 15, likely to slip further as / other boreholes across the route will take priority at this current / time.

| ID | WBS | Activity | Duration | Start | Finish | Predecessors | Complete | Constraint | Text 3 | Text 4 | Text 1 | Company Responsible | Location / ELR | GI Reference Number | On/Off Track | On-Track Off-Track | Week Number | Weekend/Midweek | Machines Required | Discipline |
| --- | --- | --- | --- | --- | --- | --- | --- | --- | --- | --- | --- | --- | --- | --- | --- | --- | --- | --- | --- | --- |
|  | 19 | **Possession Dependant Surveys** |  | 2019-04-20 | 2020-10-31 |  |  |  |  |  |  |  |  |  |  |  |  |  |  |  |
|  | 8 | **Week 8** |  | 2019-05-18 | 2019-05-19 |  |  |  |  |  |  |  |  |  |  |  |  |  |  |  |
|  | 8 | **Weekend Works** |  | 2019-05-18 | 2019-05-19 |  |  |  |  |  |  |  |  |  |  |  |  |  |  |  |
|  | 4 | **Mirfield East to Copley Hill East Junction (0040 Sat - 0510 Sat) 38m20ch to 41m60ch** |  | 2019-05-18 | 2019-05-18 |  |  |  |  |  |  |  |  |  |  |  |  |  |  |  |
| TRA1_14042 |  | Trial Pits - W4? | 1d | 2019-05-18 A | 2019-05-18 A | A72630 | 100% | start on or after 2019-05-18 | 2 Morley | Topo | 1 Possession | Structural Soils | Access: Morley Stn | TP5445 | On Track | On Track | Week 08 | Weekend |  |  |
| TRA1_14112 |  | Trial Pits - W4? | 1d | 2019-05-18 A | 2019-05-18 A | A72630 | 100% | start on or after 2019-05-18 | 2 Morley | Topo | 1 Possession | Structural Soils | Access: Morley Stn | TP5446 | On Track | On Track | Week 08 | Weekend |  |  |
| TRA1_14122 |  | Trial Pits - W4? | 1d | 2019-05-18 A | 2019-05-18 A | A72630 | 100% | start on or after 2019-05-18 | 2 Morley | Topo | 1 Possession | Structural Soils | Access: Morley Stn | TP5447 | On Track | On Track | Week 08 | Weekend |  |  |
| TRA1_14132 |  | Trial Pits - W4? | 1d | 2019-05-18 A | 2019-05-18 A | A72630 | 100% | start on or after 2019-05-18 | 2 Morley | Topo | 1 Possession | Structural Soils | Access: Morley Stn | TP5448 | On Track | On Track | Week 08 | Weekend |  |  |
| TRA1_14142 |  | Trial Pits - W4? | 1d | 2019-05-18 A | 2019-05-18 A | A72630 | 100% | start on or after 2019-05-18 | 2 Morley | Topo | 1 Possession | Structural Soils | Access: Morley Stn | TP5449 | On Track | On Track | Week 08 | Weekend |  |  |
|  | 6 | **Mirfield East to Copley Hill East Junction (2350 Sat - 0820 Sun) 32m0ch - 41m40ch** |  | 2019-05-19 | 2019-05-19 |  |  |  |  |  |  |  |  |  |  |  |  |  |  |  |
| TRA1_14202 |  | Walkout | 1d | 2019-05-19 A | 2019-05-19 A | A72630 | 100% | start on or after 2019-05-19 | 2 Morley | Topo | 1 Possession | Structural Soils | Access: Morley Stn |  | On Track | On Track | Week 08 | Weekend |  |  |
|  | 10 | **Week 10** |  | 2019-06-04 | 2019-06-09 |  |  |  |  |  |  |  |  |  |  |  |  |  |  |  |
|  | 7 | **Midweek Works** |  | 2019-06-04 | 2019-06-09 |  |  |  |  |  |  |  |  |  |  |  |  |  |  |  |
|  | 7 | **Mon - Thorn Hill (LNW Junction) to Copley Hill East Junction (2350-0545) 33m40ch - 35m62ch** |  | 2019-06-04 | 2019-06-04 |  |  |  |  |  |  |  |  |  |  |  |  |  |  |  |
| A32540 |  | Trial Pits W4 | 1d | 2019-06-04 A | 2019-06-04 A | A72630 | 100% | start on or after 2019-06-04 |  |  |  | Structural Soils | Access: TBC | TP5410 | On Track | On Track | Week 10 | Midweek |  |  |
| A32550 |  | Trial Pits W4 | 1d | 2019-06-04 A | 2019-06-04 A | A72630 | 100% | start on or after 2019-06-04 |  |  |  | Structural Soils | Access: TBC | TP5411 | On Track | On Track | Week 10 | Midweek |  |  |
| A32560 |  | Trial Pits W4 | 1d | 2019-06-04 A | 2019-06-04 A | A72630 | 100% | start on or after 2019-06-04 |  |  |  | Structural Soils | Access: TBC | TP5412 | On Track | On Track | Week 10 | Midweek |  |  |
| A32570 |  | Trial Pits W4 | 1d | 2019-06-04 A | 2019-06-04 A | A72630 | 100% | start on or after 2019-06-04 |  |  |  | Structural Soils | Access: TBC | TP5413 | On Track | On Track | Week 10 | Midweek |  |  |
| A32580 |  | Trial Pits W4 | 1d | 2019-06-04 A | 2019-06-04 A | A72630 | 100% | start on or after 2019-06-04 |  |  |  | Structural Soils | Access: TBC | TP5414 | On Track | On Track | Week 10 | Midweek |  |  |
| A32590 |  | Trial Pits W4 | 1d | 2019-06-04 A | 2019-06-04 A | A72630 | 100% | start on or after 2019-06-04 |  |  |  | Structural Soils | Access: TBC | TP5415 | On Track | On Track | Week 10 | Midweek |  |  |
| A32600 |  | Trial Pits W4 | 1d | 2019-06-04 A | 2019-06-04 A | A72630 | 100% | start on or after 2019-06-04 |  |  |  | Structural Soils | Access: TBC | TP5416 | On Track | On Track | Week 10 | Midweek |  |  |
| A46440 |  | Topographical Survey | 1d | 2019-06-04 A | 2019-06-04 A | A72630 | 100% | start on or after 2019-06-04 |  |  |  | Datum | Access: Batley SB | 35m07ch - 35m59ch UP | On Track | On Track | Week 10 | Midweek | Vorsys | Topographical |
|  | 1 | **Tues - Thorn Hill (LNW Junction) to Copley Hill East Junction (2350-0545) 33m40ch - 35m62ch** |  | 2019-06-05 | 2019-06-05 |  |  |  |  |  |  |  |  |  |  |  |  |  |  |  |
| A31750 |  | Topographical Survey | 1d | 2019-06-05 A | 2019-06-05 A | A72630 | 100% | start on or after 2019-06-05 |  |  |  | Datum | Access: Batley SB | 35m0ch - 35m60ch UP | On Track | On Track | Week 10 | Midweek | Vorsys | Topographical |
| A41880 |  | Trial Pits W4 | 1d | 2019-06-05 A | 2019-06-05 A | A72630 | 100% | start on or after 2019-06-05 |  |  |  | Structural Soils | Access: Dewsbury Stn | TP5417 | On Track | On Track | Week 10 | Midweek | Hand Tools & Trolley |  |
| A41890 |  | Trial Pits W4 | 1d | 2019-06-05 A | 2019-06-05 A | A72630 | 100% | start on or after 2019-06-05 |  |  |  | Structural Soils | Access: Dewsbury Stn | TP5418 | On Track | On Track | Week 10 | Midweek | Hand Tools & Trolley |  |
| A41900 |  | Trial Pits W4 | 1d | 2019-06-05 A | 2019-06-05 A | A72630 | 100% | start on or after 2019-06-05 |  |  |  | Structural Soils | Access: Dewsbury Stn | TP5419 | On Track | On Track | Week 10 | Midweek | Hand Tools & Trolley |  |
| A41910 |  | Trial Pits W4 | 1d | 2019-06-05 A | 2019-06-05 A | A72630 | 100% | start on or after 2019-06-05 |  |  |  | Structural Soils | Access: Dewsbury Stn | TP5420 | On Track | On Track | Week 10 | Midweek | Hand Tools & Trolley |  |
| A41920 |  | Trial Pits W4 | 1d | 2019-06-05 A | 2019-06-05 A | A72630 | 100% | start on or after 2019-06-05 |  |  |  | Structural Soils | Access: Dewsbury Stn | TP5421 | On Track | On Track | Week 10 | Midweek | Hand Tools & Trolley |  |
| A41930 |  | Trial Pits W4 | 1d | 2019-06-05 A | 2019-06-05 A | A72630 | 100% | start on or after 2019-06-05 |  |  |  | Structural Soils | Access: Dewsbury Stn | TP5422 | On Track | On Track | Week 10 | Midweek | Hand Tools & Trolley |  |
| A41940 |  | Trial Pits W4 | 1d | 2019-06-05 A | 2019-06-05 A | A72630 | 100% | start on or after 2019-06-05 |  |  |  | Structural Soils | Access: Dewsbury Stn | TP5423 | On Track | On Track | Week 10 | Midweek | Hand Tools & Trolley |  |
| A41950 |  | Trial Pits W4 | 1d | 2019-06-05 A | 2019-06-05 A | A72630 | 100% | start on or after 2019-06-05 |  |  |  | Structural Soils | Access: Dewsbury Stn | TP5424 | On Track | On Track | Week 10 | Midweek | Hand Tools & Trolley |  |

| ID | WBS | Activity | Duration | Start | Finish | Predecessors | Complete | Constraint | Company Responsible | Location / ELR | GI Reference Number | On/Off Track | On-Track Off-Track | Week Number | Weekend/Midweek | Mileage | Access Point | Discipline | Machines Required |
| --- | --- | --- | --- | --- | --- | --- | --- | --- | --- | --- | --- | --- | --- | --- | --- | --- | --- | --- | --- |
|  | 2 | **Weds - Thorn Hill (LNW Junction) to Copley Hill East Junction (2350-0545) 35m20ch - 36m20ch** |  | 2019-06-09 | 2019-06-09 |  |  |  |  |  |  |  |  |  |  |  |  |  |  |
| A31760 |  | Topographical Survey - Traversing | 1d | 2019-06-09 A | 2019-06-09 A | A72630 | 100% | start on or after 2019-06-06 | Datum | INCOMPLETE | INCOMPLETE | On Track | On Track | Week 10 | Midweek | 35m0ch - 35m60ch UP | Batley | Topographical |  |
|  | 3 | **Thurs - Thorn Hill (LNW Junction) to Copley Hill East Junction (2350-0545) 35m20ch - 36m20ch** |  | 2019-06-09 | 2019-06-09 |  |  |  |  |  |  |  |  |  |  |  |  |  |  |
| A31770 |  | Topographical Survey - Traversing | 1d | 2019-06-09 A | 2019-06-09 A | A72630 | 100% | start on or after 2019-06-07 | Datum | INCOMPLETE | INCOMPLETE | On Track | On Track | Week 10 | Midweek | 35m0ch - 35m60ch UP | Batley | Topographical |  |
|  | 12 | **Week 12** |  | 2019-06-15 | 2019-06-15 |  |  |  |  |  |  |  |  |  |  |  |  |  |  |
|  | 8 | **Weekend Works** |  | 2019-06-15 | 2019-06-15 |  |  |  |  |  |  |  |  |  |  |  |  |  |  |
|  | 1 | **Mirfield East to Copley Hill (0040 Sat - 0510 Sat) 33m40ch - 41m00ch** |  | 2019-06-15 | 2019-06-15 |  |  |  |  |  |  |  |  |  |  |  |  |  |  |
| A42020 |  | Trial Pits | 1d | 2019-06-15 A | 2019-06-15 A | A72630 | 100% | start on or after 2019-06-15 | Structural Soils | MDL1 | TP5401 | On Track | On Track | Week 12 | Weekend | 33m44ch | Dewsbury Stn |  | Hand Tools & Trolley |
| A42030 |  | Trial Pits | 1d | 2019-06-15 A | 2019-06-15 A | A72630 | 100% | start on or after 2019-06-15 | Structural Soils | MDL1 | TP5402 | On Track | On Track | Week 12 | Weekend | 33m44ch | Dewsbury Stn |  | Hand Tools & Trolley |
| A42040 |  | Trial Pits | 1d | 2019-06-15 A | 2019-06-15 A | A72630 | 100% | start on or after 2019-06-15 | Structural Soils | MDL1 | TP5403 | On Track | On Track | Week 12 | Weekend | 33m45ch | Dewsbury Stn |  | Hand Tools & Trolley |
| A42050 |  | Trial Pits | 1d | 2019-06-15 A | 2019-06-15 A | A72630 | 100% | start on or after 2019-06-15 | Structural Soils | MDL1 | TP5404 | On Track | On Track | Week 12 | Weekend | 33m45ch | Dewsbury Stn |  | Hand Tools & Trolley |
| A42060 |  | Trial Pits | 1d | 2019-06-15 A | 2019-06-15 A | A72630 | 100% | start on or after 2019-06-15 | Structural Soils | MDL1 | TP5405 | On Track | On Track | Week 12 | Weekend | 33m49ch | Dewsbury Stn |  | Hand Tools & Trolley |
| A42070 |  | Trial Pits | 1d | 2019-06-15 A | 2019-06-15 A | A72630 | 100% | start on or after 2019-06-15 | Structural Soils | MDL1 | TP5406 | On Track | On Track | Week 12 | Weekend | 33m49ch | Dewsbury Stn |  | Hand Tools & Trolley |
| A42080 |  | Trial Pits | 1d | 2019-06-15 A | 2019-06-15 A | A72630 | 100% | start on or after 2019-06-15 | Structural Soils | MDL1 | TP5407 | On Track | On Track | Week 12 | Weekend | 33m62ch | Dewsbury Stn |  | Hand Tools & Trolley |
| A42090 |  | Trial Pits | 1d | 2019-06-15 A | 2019-06-15 A | A72630 | 100% | start on or after 2019-06-15 | Structural Soils | MDL1 | TP5408 | On Track | On Track | Week 12 | Weekend | 33m62ch | Dewsbury Stn |  | Hand Tools & Trolley |
| A42100 |  | Trial Pits | 1d | 2019-06-15 A | 2019-06-15 A | A72630 | 100% | start on or after 2019-06-15 | Structural Soils | MDL1 | TP5425 | On Track | On Track | Week 12 | Weekend | 34m39ch | Dewsbury Stn |  |  |
| A42110 |  | Trial Pits | 1d | 2019-06-15 A | 2019-06-15 A | A72630 | 100% | start on or after 2019-06-15 | Structural Soils | MDL1 | TP5426 | On Track | On Track | Week 12 | Weekend | 33m49ch | Dewsbury Stn |  |  |
| A48290 |  | Trial Pits | 1d | 2019-06-15 A | 2019-06-15 A | A72630 | 100% | start on or after 2019-06-15 | Structural Soils | MDL1 | TP5427 | On Track | On Track | Week 12 | Weekend | 34m39ch | Dewsbury Stn |  |  |
| A48300 |  | Trial Pits | 1d | 2019-06-15 A | 2019-06-15 A | A72630 | 100% | start on or after 2019-06-15 | Structural Soils | MDL1 | TP5428 | On Track | On Track | Week 12 | Weekend | 34m39ch | Dewsbury Stn |  |  |
| A48310 |  | Trial Pits | 1d | 2019-06-15 A | 2019-06-15 A | A72630 | 100% | start on or after 2019-06-15 | Structural Soils | MDL1 | MDL1-24-TBP4 | On Track | On Track | Week 12 | Weekend | 34m39ch | Dewsbury Stn |  |  |
| A48320 |  | Trial Pits | 1d | 2019-06-15 A | 2019-06-15 A | A72630 | 100% | start on or after 2019-06-15 | Structural Soils | MDL1 | MDL1-16-TBP2 | On Track | On Track | Week 12 | Weekend | 33m49ch | Dewsbury Stn |  |  |
|  | 14 | **Week 14** |  | 2019-06-29 | 2019-06-29 |  |  |  |  |  |  |  |  |  |  |  |  |  |  |
|  | 8 | **Weekend Works** |  | 2019-06-29 | 2019-06-29 |  |  |  |  |  |  |  |  |  |  |  |  |  |  |
|  | 1 | **Ravensthorpe to Copley Hill (0040 Sat - 0510 Sat) 33m00ch - 36m00ch** |  | 2019-06-29 | 2019-06-29 |  |  |  |  |  |  |  |  |  |  |  |  |  |  |
| A48400 |  | Walkout | 1d | 2019-06-29 A | 2019-06-29 A | A72630 | 100% | start on or after 2019-06-29 | Structural Soils | MDL1 |  |  | On Track | Week 14 | Weekend |  | Various |  |  |

| ID | WBS | Activity | Duration | Start | Finish | Predecessors | Complete | Constraint | Machines Required | Company Responsible | Location / ELR | GI Reference Number | On/Off Track | On-Track Off-Track | Week Number | Weekend/Midweek | Access Point | Discipline | Mileage | Teams |
| --- | --- | --- | --- | --- | --- | --- | --- | --- | --- | --- | --- | --- | --- | --- | --- | --- | --- | --- | --- | --- |
|  | 16 | **Week 16** |  | 2019-07-16 | 2019-07-18 |  |  |  |  |  |  |  |  |  |  |  |  |  |  |  |
|  | 7 | **Midweek Works** |  | 2019-07-16 | 2019-07-18 |  |  |  |  |  |  |  |  |  |  |  |  |  |  |  |
|  | 7 | **Mon - Ravensthorpe to Whitehall West (2350 Mon - 0545 Tues) 41m72ch - 185m20ch** |  | 2019-07-16 | 2019-07-16 |  |  |  |  |  |  |  |  |  |  |  |  |  |  |  |
| A48620 |  | ABS | 1d | 2019-07-16 A | 2019-07-16 A | A72630 | 100% | start on or after 2019-07-16 | UNDER LIVE OLE | Bam Ritchies | Morley | ABS5645 | On Track | On Track | Week 16 | Midweek | Copley Hill | ABS |  |  |
| A48630 |  | ABS | 1d | 2019-07-16 A | 2019-07-16 A | A72630 | 100% | start on or after 2019-07-16 | UNDER LIVE OLE | Bam Ritchies | Morley | ABS5644 | On Track | On Track | Week 16 | Midweek | Copley Hill | ABS |  |  |
| A48640 |  | ABS | 1d | 2019-07-16 A | 2019-07-16 A | A72630 | 100% | start on or after 2019-07-16 | UNDER LIVE OLE | Bam Ritchies | Morley | ABS5643 | On Track | On Track | Week 16 | Midweek | Copley Hill | ABS |  |  |
|  | 1 | **Tues - Ravensthorpe to Whitehall West (2350 Tue - 0545 Wed) 41m72ch - 185m20ch** |  | 2019-07-17 | 2019-07-17 |  |  |  |  |  |  |  |  |  |  |  |  |  |  |  |
| A48650 |  | ABS | 1d | 2019-07-17 A | 2019-07-17 A | A72630 | 100% | start on or after 2019-07-17 | UNDER LIVE OLE | Bam Ritchies | Morley | ABS5642 | On Track | On Track | Week 16 | Midweek | Copley Hill | ABS |  |  |
| A48660 |  | ABS | 1d | 2019-07-17 A | 2019-07-17 A | A72630 | 100% | start on or after 2019-07-17 | UNDER LIVE OLE | Bam Ritchies | Morley | ABS5641 | On Track | On Track | Week 16 | Midweek | Copley Hill | ABS |  |  |
|  | 2 | **Weds - Ravensthorpe to Whitehall West (2350 Weds - 0545 Thurs) 41m40ch - 185m20ch** |  | 2019-07-18 | 2019-07-18 |  |  |  |  |  |  |  |  |  |  |  |  |  |  |  |
| A48670 |  | ABS | 1d | 2019-07-18 A | 2019-07-18 A | A72630 | 100% | start on or after 2019-07-18 | UNDER LIVE OLE | Bam Ritchies | Morley | ABS5640 | On Track | On Track | Week 16 | Midweek | Copley Hill | ABS |  |  |
| A48680 |  | ABS | 1d | 2019-07-18 A | 2019-07-18 A | A72630 | 100% | start on or after 2019-07-18 | UNDER LIVE OLE | Bam Ritchies | Morley | ABS5639 | On Track | On Track | Week 16 | Midweek | Copley Hill | ABS |  |  |
| A48690 |  | ABS | 1d | 2019-07-18 A | 2019-07-18 A | A72630 | 100% | start on or after 2019-07-18 | UNDER LIVE OLE | Bam Ritchies | Morley | ABS5638 | On Track | On Track | Week 16 | Midweek | Copley Hill | ABS |  |  |
| A48700 |  | ABS | 1d | 2019-07-18 A | 2019-07-18 A | A72630 | 100% | start on or after 2019-07-18 | UNDER LIVE OLE | Bam Ritchies | Morley | ABS5637 | On Track | On Track | Week 16 | Midweek | Copley Hill | ABS |  |  |
|  | 18 | **Week 18** |  | 2019-07-27 | 2019-07-27 |  |  |  |  |  |  |  |  |  |  |  |  |  |  |  |
|  | 8 | **Weekend Works** |  | 2019-07-27 | 2019-07-27 |  |  |  |  |  |  |  |  |  |  |  |  |  |  |  |
|  | 3 | **Ravensthorpe to Copley Hill East (0040 Sat - 0510 Sat) 32m28ch - 38m40ch** |  | 2019-07-27 | 2019-07-27 |  |  |  |  |  |  |  |  |  |  |  |  |  |  |  |
| A41970 |  | Trial Pits W4 | 1d | 2019-07-27 A | 2019-07-27 A | A72630 | 100% | start on or after 2019-07-27 | Hand Tools & Trolley | Structural Soils | MDL1 | TP5440 | On Track | On Track | Week 18 | Weekend | Batley |  | 36m00ch |  |
| A48340 |  | Trial Pits W4 | 1d | 2019-07-27 A | 2019-07-27 A | A72630 | 100% | start on or after 2019-07-27 | Hand Tools & Trolley | Structural Soils | MDL1 | TP5433 | On Track | On Track | Week 18 | Weekend | Batley |  | 34m77ch |  |
| A48350 |  | Trial Pits W4 | 1d | 2019-07-27 A | 2019-07-27 A | A72630 | 100% | start on or after 2019-07-27 | Hand Tools & Trolley | Structural Soils | MDL1 | TP5434 | On Track | On Track | Week 18 | Weekend | Batley |  | 34m78ch |  |
| A48360 |  | Trial Pits W4 | 1d | 2019-07-27 A | 2019-07-27 A | A72630 | 100% | start on or after 2019-07-27 | Hand Tools & Trolley | Structural Soils | MDL1 | TP5435 | On Track | On Track | Week 18 | Weekend | Batley |  | 34m79ch |  |
| A48370 |  | Trial Pits W4 | 1d | 2019-07-27 A | 2019-07-27 A | A72630 | 100% | start on or after 2019-07-27 | Hand Tools & Trolley | Structural Soils | MDL1 | TP5438 | On Track | On Track | Week 18 | Weekend | Batley |  | 35m02ch |  |
| A48380 |  | Trial Pits W4 | 1d | 2019-07-27 A | 2019-07-27 A | A72630 | 100% | start on or after 2019-07-27 | Hand Tools & Trolley | Structural Soils | MDL1 | TP5436 | On Track | On Track | Week 18 | Weekend | Batley |  | 35m00ch |  |
| A48390 |  | Trial Pits W4 | 1d | 2019-07-27 A | 2019-07-27 A | A72630 | 100% | start on or after 2019-07-27 | Hand Tools & Trolley | Structural Soils | MDL1 | TP5437 | On Track | On Track | Week 18 | Weekend | Batley |  | 35m01ch |  |
| A48600 |  | Signalling Survey | 1d | 2019-07-27 A | 2019-07-27 A | A72630 | 100% | start on or after 2019-07-27 |  | Amey | MDL1 | 32/36 | On Track | On Track | Week 18 | Weekend |  |  | 32m 1234yds | TBC |
| A48610 |  | Signalling Survey | 1d | 2019-07-27 A | 2019-07-27 A | A72630 | 100% | start on or after 2019-07-27 |  | Amey | MDL1 | 33/32 | On Track | On Track | Week 18 | Weekend |  |  | 33m 1103yds | TBC |
| A48790 |  | Window Samples | 1d | 2019-07-27 A | 2019-07-27 A | A72630 | 100% | start on or after 2019-07-27 |  | Structural Soils | MDL1 | WS5421 | On Track | On Track | Week 18 | Weekend | Batley |  | 36m1263yds |  |

| ID | WBS | Activity | Duration | Start | Finish | Predecessors | Complete | Constraint | Calendar | Machines Required | Company Responsible | Location / ELR | GI Reference Number | On/Off Track | On-Track Off-Track | Week Number | Weekend/Midweek | Mileage | Access Point | Teams | Discipline | Text 3 | Text 4 | Text 1 |
| --- | --- | --- | --- | --- | --- | --- | --- | --- | --- | --- | --- | --- | --- | --- | --- | --- | --- | --- | --- | --- | --- | --- | --- | --- |
|  | 22 | **Week 22** |  | 2019-08-24 | 2019-09-02 |  |  |  |  |  |  |  |  |  |  |  |  |  |  |  |  |  |  |  |
|  | 8 | **Weekend Works** |  | 2019-08-24 | 2019-08-24 |  |  |  |  |  |  |  |  |  |  |  |  |  |  |  |  |  |  |  |
|  | 3 | **Ravensthorpe to Copley Hill East (0040 Sat - 0510 Sat) 33m40ch - 38m40ch** |  | 2019-08-24 | 2019-08-24 |  |  |  |  |  |  |  |  |  |  |  |  |  |  |  |  |  |  |  |
| A41980 |  | Trial Pits W4 | 1d | 2019-08-24 A | 2019-08-24 A | A72630 | 100% | start on or after 2019-08-24 |  | Hand Tools & Trolley | Structural Soils | MDL1 | TP5441 | On Track | On Track | Week 22 | Weekend | 36m00ch | Batley |  |  |  |  |  |
| A41990 |  | Trial Pits W4 | 1d | 2019-08-24 A | 2019-08-24 A | A72630 | 100% | start on or after 2019-08-24 |  | Hand Tools & Trolley | Structural Soils | MDL1 | TP5442 | On Track | On Track | Week 22 | Weekend | 36m07ch | Batley |  |  |  |  |  |
| A42000 |  | Trial Pits W4 | 1d | 2019-08-24 A | 2019-08-24 A | A72630 | 100% | start on or after 2019-08-24 |  | Hand Tools & Trolley | Structural Soils | MDL1 | TP5443 | On Track | On Track | Week 22 | Weekend | 36m11ch | Batley |  |  |  |  |  |
| A42010 |  | Trial Pits W4 | 1d | 2019-08-24 A | 2019-08-24 A | A72630 | 100% | start on or after 2019-08-24 |  | Hand Tools & Trolley | Structural Soils | MDL1 | TP5444 | On Track | On Track | Week 22 | Weekend | 36m15ch | Batley |  |  |  |  |  |
|  | 7 | **Midweek Works** |  | 2019-08-27 | 2019-09-02 |  |  |  |  |  |  |  |  |  |  |  |  |  |  |  |  |  |  |  |
|  | 4 | **Mon - Thorn Hill (LNW Junction) to Copley Hill East Junction (2350 - 0545) 35m - 41m60ch** |  | 2019-08-27 | 2019-08-27 |  |  |  |  |  |  |  |  |  |  |  |  |  |  |  |  |  |  |  |
| A47370 |  | ABS | 1d | 2019-08-27 A | 2019-08-27 A | A72630 | 100% | start on or after 2019-08-27 |  | Rig & Trolley | Bam Ritchies | MDL1 | ABS5522 | On Track | On Track | Week 22 | Midweek | 35m40ch - 38m40ch | Batley SB | TBC | ABS |  |  |  |
| A47430 |  | Trial Pits | 1d | 2019-08-27 A | 2019-08-27 A | A72630 | 100% | start on or after 2019-08-27 |  | Hand Tools & Trolley | Structural Soils | TBC | TP5449 | On Track | On Track | Week 22 | Midweek |  |  | TBC |  |  |  |  |
| A55480 |  | ABS | 1d | 2019-08-27 A | 2019-08-27 A | A72630 | 100% | start on or after 2019-08-27 |  | Rig & Trolley | Bam Ritchies | MDL1 | ABS5524 | On Track | On Track | Week 22 | Midweek | 35m40ch - 38m40ch | Batley SB | TBC |  |  |  |  |
| A55620 |  | ABS | 1d | 2019-08-27 A | 2019-08-27 A | A72630 | 100% | start on or after 2019-08-27 |  | Rig & Trolley | Bam Ritchies | MDL1 | ABS5521 | On Track | On Track | Week 22 | Midweek | 35m40ch - 38m40ch | Batley SB | TBC | ABS |  |  |  |
| A55630 |  | ABS | 1d | 2019-08-27 A | 2019-08-27 A | A72630 | 100% | start on or after 2019-08-27 |  | Rig & Trolley | Bam Ritchies | MDL1 | ABS5523 | On Track | On Track | Week 22 | Midweek | 35m40ch - 38m40ch | Batley SB | TBC | ABS |  |  |  |
| A55640 |  | ABS | 1d | 2019-08-27 A | 2019-08-27 A | A72630 | 100% | start on or after 2019-08-27 |  | Rig & Trolley | Bam Ritchies | MDL1 | ABS5556 | On Track | On Track | Week 22 | Midweek | 35m40ch - 38m40ch | Morley | TBC | ABS |  |  |  |
| A55800 |  | ABS | 1d | 2019-08-27 A | 2019-08-27 A | A72630 | 100% | start on or after 2019-08-27 |  | Rig & Trolley | Bam Ritchies | MDL1 | ABS5555 | On Track | On Track | Week 22 | Midweek | 35m40ch - 38m40ch | Morley | TBC | ABS |  |  |  |
| TRA1_14152 |  | Trial Pits | 1d | 2019-08-27 A | 2019-08-27 A | A72630 | 100% | start on or after 2019-08-27 |  |  | Structural Soils |  | TP5450 | On Track | On Track | Week 22 | Midweek |  | Morley Stn |  |  | 2 Morley | Topo | 1 Possession |
| TRA1_14162 |  | Trial Pits | 1d | 2019-08-27 A | 2019-08-27 A | A72630 | 100% | start on or after 2019-08-27 |  |  | Structural Soils |  | TP5451 | On Track | On Track | Week 22 | Midweek |  | Morley Stn |  |  | 2 Morley | Topo | 1 Possession |
| TRA1_14172 |  | Trial Pits | 1d | 2019-08-27 A | 2019-08-27 A | A72630 | 100% | start on or after 2019-08-27 |  |  | Structural Soils |  | TP5452 | On Track | On Track | Week 22 | Midweek |  | Morley Stn |  |  | 2 Morley | Topo | 1 Possession |
| TRA1_14182 |  | Trial Pits | 1d | 2019-08-27 A | 2019-08-27 A | A72630 | 100% | start on or after 2019-08-27 |  |  | Structural Soils |  | TP5453 | On Track | On Track | Week 22 | Midweek |  | Morley Stn |  |  | 2 Morley | Topo | 1 Possession |
| TRA1_14192 |  | Trial Pits | 1d | 2019-08-27 A | 2019-08-27 A | A72630 | 100% | start on or after 2019-08-27 |  |  | Structural Soils |  | TP5454 | On Track | On Track | Week 22 | Midweek |  | Morley Stn |  |  | 2 Morley | Topo | 1 Possession |
| TRA1_14212 |  | Trial Pits | 1d | 2019-08-27 A | 2019-08-27 A | A72630 | 100% | start on or after 2019-08-27 |  |  | Structural Soils |  | TP5455 | On Track | On Track | Week 22 | Midweek |  | Morley Stn |  |  | 2 Morley | Topo | 1 Possession |
| TRA1_14222 |  | Trial Pits | 1d | 2019-08-27 A | 2019-08-27 A | A72630 | 100% | start on or after 2019-08-27 |  |  | Structural Soils |  | TP5456 | On Track | On Track | Week 22 | Midweek |  | Morley Stn |  |  | 2 Morley | Topo | 1 Possession |
|  | 1 | **Tues - Thorn Hill (LNW Junction) to Copley Hill East Junction (2350 - 0545) 35m - 41m60ch** |  | 2019-08-28 | 2019-08-28 |  |  |  |  |  |  |  |  |  |  |  |  |  |  |  |  |  |  |  |
| A47410 |  | ABS | 1d | 2019-08-28 A | 2019-08-28 A | A72630 | 100% | start on or after 2019-08-28 | A03 5 Day Workweek (BH & Xmas as Work) | Rig & Trolley | Bam Ritchies | MDL1 | ABS5550 | On Track | On Track | Week 22 | Midweek | 35m40ch - 38m40ch | Morley | TBC | ABS |  |  |  |
| A48810 |  | Window Samples | 1d | 2019-08-28 A | 2019-08-28 A | A72630 | 100% | start on or after 2019-08-28 |  | WS Rig & Trolley | Structural Soils | TBC | WS5418 | On Track | On Track | Week 22 | Midweek |  |  | TBC |  |  |  |  |
| A55490 |  | ABS | 1d | 2019-08-28 A | 2019-08-28 A | A72630 | 100% | start on or after 2019-08-28 | A03 5 Day Workweek (BH & Xmas as Work) | Rig & Trolley | Bam Ritchies | MDL1 | ABS5529 | On Track | On Track | Week 22 | Midweek | 35m40ch - 38m40ch | Batley SB | TBC | ABS |  |  |  |
| A55520 |  | Trial Pits | 1d | 2019-08-28 A | 2019-08-28 A | A72630 | 100% | start on or after 2019-08-28 |  | Hand Tools & Trolley | Structural Soils | TBC | TP5439 | On Track | On Track | Week 22 | Midweek |  |  | TBC |  |  |  |  |
| A55560 |  | Trial Pits | 1d | 2019-08-28 A | 2019-08-28 A | A72630 | 100% | start on or after 2019-08-28 |  | Hand Tools & Trolley | Structural Soils | TBC | TP5453 | On Track | On Track | Week 22 | Midweek |  |  | TBC |  |  |  |  |
| A55570 |  | Trial Pits | 1d | 2019-08-28 A | 2019-08-28 A | A72630 | 100% | start on or after 2019-08-28 |  | Hand Tools & Trolley | Structural Soils | TBC | TP5442 | On Track | On Track | Week 22 | Midweek |  |  | TBC |  |  |  |  |
| A55580 |  | Trial Pits | 1d | 2019-08-28 A | 2019-08-28 A | A72630 | 100% | start on or after 2019-08-28 |  | Hand Tools & Trolley | Structural Soils | TBC | TP5443 | On Track | On Track | Week 22 | Midweek |  |  | TBC |  |  |  |  |
| A55590 |  | Trial Pits | 1d | 2019-08-28 A | 2019-08-28 A | A72630 | 100% | start on or after 2019-08-28 |  | Hand Tools & Trolley | Structural Soils | TBC | TP5444 | On Track | On Track | Week 22 | Midweek |  |  | TBC |  |  |  |  |
| A55660 |  | ABS | 1d | 2019-08-28 A | 2019-08-28 A | A72630 | 100% | start on or after 2019-08-28 | A03 5 Day Workweek (BH & Xmas as Work) | Rig & Trolley | Bam Ritchies | MDL1 | ABS5525 | On Track | On Track | Week 22 | Midweek | 35m40ch - 38m40ch | Batley SB | TBC | ABS |  |  |  |
| A55670 |  | ABS | 1d | 2019-08-28 A | 2019-08-28 A | A72630 | 100% | start on or after 2019-08-28 | A03 5 Day Workweek (BH & Xmas as Work) | Rig & Trolley | Bam Ritchies | MDL1 | ABS5527 | On Track | On Track | Week 22 | Midweek | 35m40ch - 38m40ch | Batley SB | TBC | ABS |  |  |  |
| A55680 |  | ABS | 1d | 2019-08-28 A | 2019-08-28 A | A72630 | 100% | start on or after 2019-08-28 | A03 5 Day Workweek (BH & Xmas as Work) | Rig & Trolley | Bam Ritchies | MDL1 | ABS5552 | On Track | On Track | Week 22 | Midweek | 35m40ch - 38m40ch | Morley | TBC | ABS |  |  |  |
| A55690 |  | ABS | 1d | 2019-08-28 A | 2019-08-28 A | A72630 | 100% | start on or after 2019-08-28 | A03 5 Day Workweek (BH & Xmas as Work) | Rig & Trolley | Bam Ritchies | MDL1 | ABS5554 | On Track | On Track | Week 22 | Midweek | 35m40ch - 38m40ch | Morley | TBC | ABS |  |  |  |

| ID | WBS | Activity | Duration | Start | Finish | Predecessors | Complete | Planned start | Planned finish | Constraint | Calendar | Machines Required | Company Responsible | Location / ELR | GI Reference Number | Teams | On/Off Track | On-Track Off-Track | Week Number | Weekend/Midweek | Mileage | Access Point | Discipline |
| --- | --- | --- | --- | --- | --- | --- | --- | --- | --- | --- | --- | --- | --- | --- | --- | --- | --- | --- | --- | --- | --- | --- | --- |
|  | 2 | **Weds - Thorn Hill (LNW Junction) to Copley Hill East Junction (2350 - 0545) 35m - 41m60ch** |  | 2019-08-29 | 2019-08-29 |  |  |  |  |  |  |  |  |  |  |  |  |  |  |  |  |  |  |
| A47450 |  | ABS | 1d | 2019-08-29 A | 2019-08-29 A | A72630 | 100% |  |  | start on or after 2019-08-29 | A03 5 Day Workweek (BH & Xmas as Work) | Rig & Trolley | Bam Ritchies | MDL1 | ABS5544 | TBC | On Track | On Track | Week 22 | Midweek | 35m40ch - 38m40ch | Batley SB | ABS |
| A47480 |  | Window Samples | 1d | 2019-08-29 A | 2019-08-29 A | A72630 | 100% |  |  | start on or after 2019-08-29 |  | WS Rig & Trolley | Structural Soils | TBC | WS5419 | TBC | On Track | On Track | Week 22 | Midweek |  |  |  |
| A48820 |  | Window Samples | 1d | 2019-08-29 A | 2019-08-29 A | A72630 | 100% |  |  | start on or after 2019-08-29 |  | WS Rig & Trolley | Structural Soils | TBC | WS5420 | TBC | On Track | On Track | Week 22 | Midweek |  |  |  |
| A55700 |  | ABS | 1d | 2019-08-29 A | 2019-08-29 A | A72630 | 100% |  |  | start on or after 2019-08-29 | A03 5 Day Workweek (BH & Xmas as Work) | Rig & Trolley | Bam Ritchies | MDL1 | ABS5533 | TBC | On Track | On Track | Week 22 | Midweek | 35m40ch - 38m40ch | Batley SB | ABS |
| A55710 |  | ABS | 1d | 2019-08-29 A | 2019-08-29 A | A72630 | 100% |  |  | start on or after 2019-08-29 | A03 5 Day Workweek (BH & Xmas as Work) | Rig & Trolley | Bam Ritchies | MDL1 | ABS5537 | TBC | On Track | On Track | Week 22 | Midweek | 35m40ch - 38m40ch | Batley SB | ABS |
| A55720 |  | ABS | 1d | 2019-08-29 A | 2019-08-29 A | A72630 | 100% |  |  | start on or after 2019-08-29 | A03 5 Day Workweek (BH & Xmas as Work) | Rig & Trolley | Bam Ritchies | MDL1 | ABS5531 | TBC | On Track | On Track | Week 22 | Midweek | 35m40ch - 38m40ch | Batley SB | ABS |
| A55730 |  | ABS | 1d | 2019-08-29 A | 2019-08-29 A | A72630 | 100% |  |  | start on or after 2019-08-29 | A03 5 Day Workweek (BH & Xmas as Work) | Rig & Trolley | Bam Ritchies | MDL1 | ABS5546 | TBC | On Track | On Track | Week 22 | Midweek | 35m40ch - 38m40ch | Morley | ABS |
| A55740 |  | ABS | 1d | 2019-08-29 A | 2019-08-29 A | A72630 | 100% |  |  | start on or after 2019-08-29 | A03 5 Day Workweek (BH & Xmas as Work) | Rig & Trolley | Bam Ritchies | MDL1 | ABS5548 | TBC | On Track | On Track | Week 22 | Midweek | 35m40ch - 38m40ch | Morley | ABS |
|  | 3 | **Thurs - Thorn Hill (LNW Junction) to Copley Hill East Junction (2350 - 0545) 35m - 41m60ch** |  | 2019-08-30 | 2019-09-02 |  |  |  |  |  |  |  |  |  |  |  |  |  |  |  |  |  |  |
| A47490 |  | ABS | 1d | 2019-08-30 A | 2019-08-30 A | A72630 | 100% |  |  | start on or after 2019-08-30 | A03 5 Day Workweek (BH & Xmas as Work) | Rig & Trolley | Bam Ritchies | MDL1 | AB5543 | TBC | On Track | On Track | Week 22 | Midweek | 35m40ch - 38m40ch | Batley SB | ABS |
| A48830 |  | Window Samples | 1d | 2019-08-30 A | 2019-08-30 A | A72630 | 100% |  |  | start on or after 2019-08-30 |  | WS Rig & Trolley | Structural Soils | TBC | WS5422 | TBC | On Track | On Track | Week 22 | Midweek |  |  |  |
| A55750 |  | ABS | 1d | 2019-08-30 A | 2019-08-30 A | A72630 | 100% |  |  | start on or after 2019-08-30 | A03 5 Day Workweek (BH & Xmas as Work) | Rig & Trolley | Bam Ritchies | MDL1 | AB5538 | TBC | On Track | On Track | Week 22 | Midweek | 35m40ch - 38m40ch | Batley SB | ABS |
| A55760 |  | ABS | 1d | 2019-08-30 A | 2019-08-30 A | A72630 | 100% |  |  | start on or after 2019-08-30 | A03 5 Day Workweek (BH & Xmas as Work) | Rig & Trolley | Bam Ritchies | MDL1 | AB5539 | TBC | On Track | On Track | Week 22 | Midweek | 35m40ch - 38m40ch | Batley SB | ABS |
| A55770 |  | ABS | 1d | 2019-08-30 A | 2019-08-30 A | A72630 | 100% |  |  | start on or after 2019-08-30 | A03 5 Day Workweek (BH & Xmas as Work) | Rig & Trolley | Bam Ritchies | MDL1 | AB5541 | TBC | On Track | On Track | Week 22 | Midweek | 35m40ch - 38m40ch | Batley SB | ABS |
| A55780 |  | ABS | 1d | 2019-08-30 A | 2019-09-02 A | A72630 | 100% | 2019-08-30 | 2019-08-30 | start on or after 2019-08-30 | A03 5 Day Workweek (BH & Xmas as Work) | Rig & Trolley | Bam Ritchies | MDL1 | AB5540 | TBC | On Track | On Track | Week 22 | Midweek | 35m40ch - 38m40ch | Morley | ABS |
| A55790 |  | ABS | 1d | 2019-08-30 A | 2019-08-30 A | A72630 | 100% |  |  | start on or after 2019-08-30 | A03 5 Day Workweek (BH & Xmas as Work) | Rig & Trolley | Bam Ritchies | MDL1 | AB5542 | TBC | On Track | On Track | Week 22 | Midweek | 35m40ch - 38m40ch | Morley | ABS |
|  | 24 | **Week 24** |  | 2019-09-07 | 2019-09-07 |  |  |  |  |  |  |  |  |  |  |  |  |  |  |  |  |  |  |
|  | 8 | **Weekend Works** |  | 2019-09-07 | 2019-09-07 |  |  |  |  |  |  |  |  |  |  |  |  |  |  |  |  |  |  |
|  | 3 | **Ravensthorpe to Copley Hill East (0040 Sat - 0510 Sat) 33m40ch - 38m40ch** |  | 2019-09-07 | 2019-09-07 |  |  |  |  |  |  |  |  |  |  |  |  |  |  |  |  |  |  |
| A1060 |  | Trial Pits | 1d | 2019-09-07 A | 2019-09-07 A | A72630 | 100% |  |  | start on or after 2019-09-07 |  |  | Structural Soils | MDL1 | TP5429 |  |  | On Track | Week 24 | Weekend | 34m73ch | Batley SB |  |
| A1070 |  | Trial Pits | 1d | 2019-09-07 A | 2019-09-07 A | A72630 | 100% |  |  | start on or after 2019-09-07 |  |  | Structural Soils | MDL1 | TP5430 |  |  | On Track | Week 24 | Weekend | 34m74ch | Batley SB |  |
| A1080 |  | Trial Pits | 1d | 2019-09-07 A | 2019-09-07 A | A72630 | 100% |  |  | start on or after 2019-09-07 |  |  | Structural Soils | MDL1 | TP5431 |  |  | On Track | Week 24 | Weekend | 34m75ch | Batley SB |  |
| A1090 |  | Trial Pits | 1d | 2019-09-07 A | 2019-09-07 A | A72630 | 100% |  |  | start on or after 2019-09-07 |  |  | Structural Soils | MDL1 | TP5432 |  |  | On Track | Week 24 | Weekend | 34m76ch | Batley SB |  |
| A47330 |  | ABS | 1d | 2019-09-07 A | 2019-09-07 A | A72630 | 100% |  |  | start on or after 2019-09-07 |  | Rig & Trolley | Bam Ritchies | TBC | AB5517 | TBC | On Track | On Track | Week 24 | Weekend | 35m40ch - 38m00ch | Morley | ABS |
| A47560 |  | Window Samples | 1d | 2019-09-07 A | 2019-09-07 A | A72630 | 100% |  |  | start on or after 2019-09-07 |  | WS Rig & Trolley | Structural Soils | TBC | WS5401 | TBC | On Track | On Track | Week 24 | Weekend |  | Dewsbury |  |
| A55460 |  | ABS | 1d | 2019-09-07 A | 2019-09-07 A | A72630 | 100% |  |  | start on or after 2019-09-07 |  | Rig & Trolley | Bam Ritchies | TBC | AB5518 | TBC | On Track | On Track | Week 24 | Weekend | 35m40ch - 38m00ch | Morley | ABS |
| A55610 |  | ABS | 1d | 2019-09-07 A | 2019-09-07 A | A72630 | 100% |  |  | start on or after 2019-09-07 |  | Rig & Trolley | Bam Ritchies | TBC | AB5519 | TBC | On Track | On Track | Week 24 | Weekend | 35m40ch - 38m00ch | Batley | ABS |
| A56110 |  | ABS | 1d | 2019-09-07 A | 2019-09-07 A | A72630 | 100% |  |  | start on or after 2019-09-07 |  | Rig & Trolley | Bam Ritchies | TBC | AB5520 | TBC | On Track | On Track | Week 24 | Weekend | 35m40ch - 38m00ch | Batley | ABS |

| ID | WBS | Activity | Duration | Start | Finish | Predecessors | Complete | Constraint | Machines Required | Company Responsible | Location / ELR | GI Reference Number | Teams | On/Off Track | On-Track Off-Track | Week Number | Weekend/Midweek | Mileage | Access Point | Discipline |
| --- | --- | --- | --- | --- | --- | --- | --- | --- | --- | --- | --- | --- | --- | --- | --- | --- | --- | --- | --- | --- |
|  | 26 | **Week 26** |  | 2019-09-21 | 2019-09-21 |  |  |  |  |  |  |  |  |  |  |  |  |  |  |  |
|  | 8 | **Weekend Works** |  | 2019-09-21 | 2019-09-21 |  |  |  |  |  |  |  |  |  |  |  |  |  |  |  |
|  | 3 | **Ravensthorpe to Copley Hill East (0040 Sat - 0510 Sat) 35m40ch - 41m70ch** |  | 2019-09-21 | 2019-09-21 |  |  |  |  |  |  |  |  |  |  |  |  |  |  |  |
| A47630 |  | Trial Pits | 1d | 2019-09-21 A | 2019-09-21 A | A72630 | 100% | start on or after 2019-09-21 | Hand Tools & Trolley | Structural Soils | 35m1254yds - 36m550yds | TP5486 | TBC | On Track | On Track | Week 26 | Weekend | STRIMMER REQUIRED | Batley SB |  |
| A55540 |  | Angles & Witness Diagrams | 1d | 2019-09-21 A | 2019-09-21 A | A72630 | 100% | start on or after 2019-09-21 |  | Central Alliance | Full Mileage |  | TBC | On Track | On Track | Week 26 | Weekend |  | Batley SB | Topographical |
| A55550 |  | Angles & Witness Diagrams | 1d | 2019-09-21 A | 2019-09-21 A | A72630 | 100% | start on or after 2019-09-21 |  | Central Alliance | Full Mileage |  | TBC | On Track | On Track | Week 26 | Weekend |  | Batley SB | Topographical |
| A55810 |  | ABS | 1d | 2019-09-21 A | 2019-09-21 A | A72630 | 100% | start on or after 2019-09-21 |  | Bam Ritchies | 35m40ch - 36m40ch | AB5465 | TBC | On Track | On Track | Week 26 | Weekend |  | Batley SB | ABS |
| A55820 |  | ABS | 1d | 2019-09-21 A | 2019-09-21 A | A72630 | 100% | start on or after 2019-09-21 |  | Bam Ritchies | 35m40ch - 36m40ch | AB5469 | TBC | On Track | On Track | Week 26 | Weekend |  | Batley SB | ABS |
| A55840 |  | ABS | 1d | 2019-09-21 A | 2019-09-21 A | A72630 | 100% | start on or after 2019-09-21 |  | Bam Ritchies | 35m40ch - 36m40ch | AB5471 | TBC | On Track | On Track | Week 26 | Weekend |  | Batley SB | ABS |
| A55850 |  | ABS | 1d | 2019-09-21 A | 2019-09-21 A | A72630 | 100% | start on or after 2019-09-21 |  | Bam Ritchies | 35m40ch - 36m40ch | AB5468 | TBC | On Track | On Track | Week 26 | Weekend |  | Batley SB | ABS |
| A55860 |  | ABS | 1d | 2019-09-21 A | 2019-09-21 A | A72630 | 100% | start on or after 2019-09-21 |  | Bam Ritchies | 35m40ch - 36m40ch | AB5470 | TBC | On Track | On Track | Week 26 | Weekend |  | Batley SB | ABS |
| A55870 |  | ABS | 1d | 2019-09-21 A | 2019-09-21 A | A72630 | 100% | start on or after 2019-09-21 |  | Bam Ritchies | 35m40ch - 36m40ch | AB5474 | TBC | On Track | On Track | Week 26 | Weekend |  | Batley SB | ABS |
| A55880 |  | ABS | 1d | 2019-09-21 A | 2019-09-21 A | A72630 | 100% | start on or after 2019-09-21 |  | Bam Ritchies | 35m40ch - 36m40ch | AB5476 | TBC | On Track | On Track | Week 26 | Weekend |  | Batley SB | ABS |
| A55890 |  | ABS | 1d | 2019-09-21 A | 2019-09-21 A | A72630 | 100% | start on or after 2019-09-21 |  | Bam Ritchies | 35m40ch - 36m40ch | AB5472 | TBC | On Track | On Track | Week 26 | Weekend |  | Batley SB | ABS |
| A55900 |  | Trial Pits | 1d | 2019-09-21 A | 2019-09-21 A | A72630 | 100% | start on or after 2019-09-21 | Hand Tools & Trolley | Structural Soils | 35m1254yds - 36m550yds | TP5484 | TBC | On Track | On Track | Week 26 | Weekend | STRIMMER REQUIRED | Batley SB |  |
| A55910 |  | Trial Pits | 1d | 2019-09-21 A | 2019-09-21 A | A72630 | 100% | start on or after 2019-09-21 | Hand Tools & Trolley | Structural Soils | 35m1254yds - 36m550yds | TP5488 | TBC | On Track | On Track | Week 26 | Weekend | STRIMMER REQUIRED | Batley SB |  |
| A55920 |  | Trial Pits | 1d | 2019-09-21 A | 2019-09-21 A | A72630 | 100% | start on or after 2019-09-21 | Hand Tools & Trolley | Structural Soils | 35m1254yds - 36m550yds | TP5485 | TBC | On Track | On Track | Week 26 | Weekend | STRIMMER REQUIRED | Batley SB |  |
|  | 28 | **Week 28** |  | 2019-10-05 | 2019-10-21 |  |  |  |  |  |  |  |  |  |  |  |  |  |  |  |
|  | 8 | **Weekend Works** |  | 2019-10-05 | 2019-10-05 |  |  |  |  |  |  |  |  |  |  |  |  |  |  |  |
|  | 3 | **Ravensthorpe to Copley Hill East (0040 Sat - 0510 Sat) 33m20ch - 41m20ch** |  | 2019-10-05 | 2019-10-05 |  |  |  |  |  |  |  |  |  |  |  |  |  |  |  |
| A47650 |  | ABS | 1d | 2019-10-05 A | 2019-10-05 A | A72630 | 100% | start on or after 2019-10-05 | Rig & Trolley | Bam Ritchies | UP 4ft | AB5473 | TBC | On Track | On Track | Week 28 | Weekend | 35m30ch - 36m40ch | Batley SB | ABS |
| A56120 |  | ABS | 1d | 2019-10-05 A | 2019-10-05 A | A72630 | 100% | start on or after 2019-10-05 | Rig & Trolley | Bam Ritchies | UP 4ft | AB5475 | TBC | On Track | On Track | Week 28 | Weekend | 35m30ch - 36m40ch | Batley SB | ABS |
| A57550 |  | ABS | 1d | 2019-10-05 A | 2019-10-05 A | A72630 | 100% | start on or after 2019-10-05 | Rig & Trolley | Bam Ritchies | UP 4ft | AB5494 | TBC | On Track | On Track | Week 28 | Weekend | 35m30ch - 36m40ch | Batley SB | ABS |
| A57560 |  | ABS | 1d | 2019-10-05 A | 2019-10-05 A | A72630 | 100% | start on or after 2019-10-05 | Rig & Trolley | Bam Ritchies | UP 4ft | AB5496 | TBC | On Track | On Track | Week 28 | Weekend | 35m30ch - 36m40ch | Batley SB | ABS |
| A57570 |  | ABS | 1d | 2019-10-05 A | 2019-10-05 A | A72630 | 100% | start on or after 2019-10-05 | Rig & Trolley | Bam Ritchies | UP 4ft | AB5498 | TBC | On Track | On Track | Week 28 | Weekend | 35m30ch - 36m40ch | Batley SB | ABS |
| A57620 |  | ABS | 1d | 2019-10-05 A | 2019-10-05 A | A72630 | 100% | start on or after 2019-10-05 | Rig & Trolley | Bam Ritchies | DN 4ft | AB5493 | TBC | On Track | On Track | Week 28 | Weekend | 35m30ch - 36m40ch | Batley SB | ABS |
| A57630 |  | ABS | 1d | 2019-10-05 A | 2019-10-05 A | A72630 | 100% | start on or after 2019-10-05 | Rig & Trolley | Bam Ritchies | DN 4ft | AB5495 | TBC | On Track | On Track | Week 28 | Weekend | 35m30ch - 36m40ch | Batley SB | ABS |
| A57640 |  | ABS | 1d | 2019-10-05 A | 2019-10-05 A | A72630 | 100% | start on or after 2019-10-05 | Rig & Trolley | Bam Ritchies | DN 4ft | AB5497 | TBC | On Track | On Track | Week 28 | Weekend | 35m30ch - 36m40ch | Batley SB | ABS |
| A57650 |  | Setting Out & Scanning for ABS | 1d | 2019-10-05 A | 2019-10-05 A | A72630 | 100% | start on or after 2019-10-05 |  | Bam Ritchies | TBC |  | TBC | On Track | On Track | Week 28 | Weekend | 35m30ch - 36m40ch | Batley SB | ABS |
| A57790 |  | Walkout | 1d | 2019-10-05 A | 2019-10-05 A | A72630 | 100% | start on or after 2019-10-05 |  | Structural Soils |  |  | TBC | On Track | On Track | Week 28 | Weekend | Full Mileage | Morley Station |  |

| ID | WBS | Activity | Duration | Start | Finish | Predecessors | Complete | Constraint | Calendar | Machines Required | Company Responsible | Location / ELR | GI Reference Number | Teams | On/Off Track | On-Track Off-Track | Week Number | Weekend/Midweek | Mileage | Access Point | Discipline | Location |
| --- | --- | --- | --- | --- | --- | --- | --- | --- | --- | --- | --- | --- | --- | --- | --- | --- | --- | --- | --- | --- | --- | --- |
|  | 7 | **Midweek Works** |  | 2019-10-08 | 2019-10-21 |  |  |  |  |  |  |  |  |  |  |  |  |  |  |  |  |  |
|  | 4 | **Mon - Ravensthorpe to Copley Hill East Junction (2350 - 0545) 32m16ch - 35m15ch** |  | 2019-10-08 | 2019-10-08 |  |  |  |  |  |  |  |  |  |  |  |  |  |  |  |  |  |
| A47700 |  | ABS | 1d | 2019-10-08 A | 2019-10-08 A | A72630 | 100% | start on or after 2019-10-08 | A03 5 Day Workweek (BH & Xmas as Work) | Rig & Trolley | Bam Ritchies | UP | AB5431 | TBC | On Track | On Track | Week 28 | Midweek | 34m15ch - 35m15ch | Batley Station | ABS |  |
| A56140 |  | ABS | 1d | 2019-10-08 A | 2019-10-08 A | A72630 | 100% | start on or after 2019-10-08 | A03 5 Day Workweek (BH & Xmas as Work) | Rig & Trolley | Bam Ritchies | UP | AB5432 | TBC | On Track | On Track | Week 28 | Midweek | 34m15ch - 35m15ch | Batley Station | ABS |  |
| A58100 |  | ABS | 1d | 2019-10-08 A | 2019-10-08 A | A72630 | 100% | start on or after 2019-10-08 |  |  | Bam Ritchies |  | AB5423 |  |  | On Track | Week 28 | Midweek | 34m18 |  | ABS | Dewsbury to Batley |
|  | 1 | **Tues - Ravensthorpe to Copley Hill East Junction (2350 - 0545) 32m16ch - 35m15ch** |  | 2019-10-09 | 2019-10-09 |  |  |  |  |  |  |  |  |  |  |  |  |  |  |  |  |  |
| A47720 |  | Window Samples | 1d | 2019-10-09 A | 2019-10-09 A | A72630 | 100% | start on or after 2019-10-09 |  | WS Rig & Trolley | Structural Soils | MDL1 | WS5405 | TBC | On Track | On Track | Week 28 | Midweek | 33m53ch | Dewsbury Stn |  |  |
| A47730 |  | ABS | 1d | 2019-10-09 A | 2019-10-09 A | A72630 | 100% | start on or after 2019-10-09 | A03 5 Day Workweek (BH & Xmas as Work) | Rig & Trolley | Bam Ritchies | UP | AB5427 | TBC | On Track | On Track | Week 28 | Midweek | 34m15ch - 35m15ch | Batley Station | ABS |  |
| A56030 |  | Window Samples | 1d | 2019-10-09 A | 2019-10-09 A | A72630 | 100% | start on or after 2019-10-09 |  | WS Rig & Trolley | Structural Soils | MDL1 | WS5406 | TBC | On Track | On Track | Week 28 | Midweek | 33m53ch | Dewsbury Stn |  |  |
| A56160 |  | ABS | 1d | 2019-10-09 A | 2019-10-09 A | A72630 | 100% | start on or after 2019-10-09 | A03 5 Day Workweek (BH & Xmas as Work) | Rig & Trolley | Bam Ritchies | UP | AB5429 | TBC | On Track | On Track | Week 28 | Midweek | 34m15ch - 35m15ch | Batley Station | ABS |  |
| A57700 |  | ABS | 1d | 2019-10-09 A | 2019-10-09 A | A72630 | 100% | start on or after 2019-10-09 | A03 5 Day Workweek (BH & Xmas as Work) | Rig & Trolley | Bam Ritchies | DN | AB5443 | TBC | On Track | On Track | Week 28 | Midweek | 34m15ch - 35m15ch | Batley Station | ABS |  |
| A57710 |  | ABS | 1d | 2019-10-09 A | 2019-10-09 A | A72630 | 100% | start on or after 2019-10-09 | A03 5 Day Workweek (BH & Xmas as Work) | Rig & Trolley | Bam Ritchies | DN | AB5445 | TBC | On Track | On Track | Week 28 | Midweek | 34m15ch - 35m15ch | Batley Station | ABS |  |
| A58090 |  | ABS | 1d | 2019-10-09 A | 2019-10-09 A | A72630 | 100% | start on or after 2019-10-09 |  |  | Bam Ritchies |  | AB5422 |  |  | On Track | Week 28 | Midweek | 34m16 |  | ABS | Dewsbury to Batley |
| A58120 |  | ABS | 1d | 2019-10-09 A | 2019-10-09 A | A72630 | 100% | start on or after 2019-10-09 |  |  | Bam Ritchies |  | AB5425 |  |  | On Track | Week 28 | Midweek | 34m22 |  | ABS | Dewsbury to Batley |
|  | 2 | **Weds - Ravensthorpe to Copley Hill East Junction (2350 - 0545) 32m16ch - 35m15ch** |  | 2019-10-10 | 2019-10-10 |  |  |  |  |  |  |  |  |  |  |  |  |  |  |  |  |  |
| A47760 |  | ABS | 1d | 2019-10-10 A | 2019-10-10 A | A72630 | 100% | start on or after 2019-10-10 | A03 5 Day Workweek (BH & Xmas as Work) | Rig & Trolley | Bam Ritchies | DN | AB5428 | TBC | On Track | On Track | Week 28 | Midweek | 34m15ch - 35m15ch | Batley Station | ABS |  |
| A56040 |  | Window Samples | 1d | 2019-10-10 A | 2019-10-10 A | A72630 | 100% | start on or after 2019-10-10 |  | WS Rig & Trolley | Structural Soils | MDL1 | WS5403 | TBC | On Track | On Track | Week 28 | Midweek | 33m49ch | Dewsbury Stn |  |  |
| A56050 |  | Window Samples | 1d | 2019-10-10 A | 2019-10-10 A | A72630 | 100% | start on or after 2019-10-10 |  | WS Rig & Trolley | Structural Soils | MDL1 | WS5409 | TBC | On Track | On Track | Week 28 | Midweek | 34m03ch | Dewsbury Stn |  |  |
| A56180 |  | ABS | 1d | 2019-10-10 A | 2019-10-10 A | A72630 | 100% | start on or after 2019-10-10 | A03 5 Day Workweek (BH & Xmas as Work) | Rig & Trolley | Bam Ritchies | DN | AB5430 | TBC | On Track | On Track | Week 28 | Midweek | 34m15ch - 35m15ch | Batley Station | ABS |  |
| A56190 |  | ABS | 1d | 2019-10-10 A | 2019-10-10 A | A72630 | 100% | start on or after 2019-10-10 | A03 5 Day Workweek (BH & Xmas as Work) | Rig & Trolley | Bam Ritchies | DN | AB5438 | TBC | On Track | On Track | Week 28 | Midweek | 34m15ch - 35m15ch | Batley Station | ABS |  |
| A57720 |  | ABS | 1d | 2019-10-10 A | 2019-10-10 A | A72630 | 100% | start on or after 2019-10-10 | A03 5 Day Workweek (BH & Xmas as Work) | Rig & Trolley | Bam Ritchies | DN | AB5440 | TBC | On Track | On Track | Week 28 | Midweek | 34m15ch - 35m15ch | Batley Station | ABS |  |
| A57730 |  | ABS | 1d | 2019-10-10 A | 2019-10-10 A | A72630 | 100% | start on or after 2019-10-10 | A03 5 Day Workweek (BH & Xmas as Work) | Rig & Trolley | Bam Ritchies | UP | AB5437 | TBC | On Track | On Track | Week 28 | Midweek | 34m15ch - 35m15ch | Batley Station | ABS |  |
| A57740 |  | ABS | 1d | 2019-10-10 A | 2019-10-10 A | A72630 | 100% | start on or after 2019-10-10 | A03 5 Day Workweek (BH & Xmas as Work) | Rig & Trolley | Bam Ritchies | UP | AB5439 | TBC | On Track | On Track | Week 28 | Midweek | 34m15ch - 35m15ch | Batley Station | ABS |  |
| A58330 |  | ABS | 1d | 2019-10-10 A | 2019-10-10 A | A72630 | 100% | start on or after 2019-10-10 |  |  | Bam Ritchies |  | AB5442 |  |  | On Track | Week 28 | Midweek | 34m64 |  | ABS | Dewsbury to Batley |

| ID | WBS | Activity | Duration | Start | Finish | Predecessors | Complete | Constraint | Calendar | Machines Required | Company Responsible | Location / ELR | GI Reference Number | Teams | On/Off Track | On-Track Off-Track | Week Number | Weekend/Midweek | Mileage | Access Point | Discipline | Location |
| --- | --- | --- | --- | --- | --- | --- | --- | --- | --- | --- | --- | --- | --- | --- | --- | --- | --- | --- | --- | --- | --- | --- |
|  | 3 | **Thurs - Ravensthorpe to Copley Hill East Junction (2350 - 0545) 32m16ch - 35m15ch** |  | 2019-10-11 | 2019-10-21 |  |  |  |  |  |  |  |  |  |  |  |  |  |  |  |  |  |
| A56200 |  | ABS | 1d | 2019-10-11 A | 2019-10-11 A | A72630 | 100% | start on or after 2019-10-11 | A03 5 Day Workweek (BH & Xmas as Work) | Rig & Trolley | Bam Ritchies | DN | AB5424 | TBC | On Track | On Track | Week 28 | Midweek | 34m15ch - 35m15ch | Batley Station | ABS |  |
| A56210 |  | ABS | 1d | 2019-10-11 A | 2019-10-11 A | A72630 | 100% | start on or after 2019-10-11 | A03 5 Day Workweek (BH & Xmas as Work) | Rig & Trolley | Bam Ritchies | DN | AB5426 | TBC | On Track | On Track | Week 28 | Midweek | 34m15ch - 35m15ch | Batley Station | ABS |  |
| A57750 |  | ABS | 1d | 2019-10-11 A | 2019-10-11 A | A72630 | 100% | start on or after 2019-10-11 | A03 5 Day Workweek (BH & Xmas as Work) | Rig & Trolley | Bam Ritchies | DN | AB5433 | TBC | On Track | On Track | Week 28 | Midweek | 34m15ch - 35m15ch | Batley Station | ABS |  |
| A57760 |  | ABS | 1d | 2019-10-11 A | 2019-10-11 A | A72630 | 100% | start on or after 2019-10-11 | A03 5 Day Workweek (BH & Xmas as Work) | Rig & Trolley | Bam Ritchies | DN | AB5435 | TBC | On Track | On Track | Week 28 | Midweek | 34m15ch - 35m15ch | Batley Station | ABS |  |
| A57770 |  | ABS | 1d | 2019-10-11 A | 2019-10-11 A | A72630 | 100% | start on or after 2019-10-11 | A03 5 Day Workweek (BH & Xmas as Work) | Rig & Trolley | Bam Ritchies | UP | AB5434 | TBC | On Track | On Track | Week 28 | Midweek | 34m15ch - 35m15ch | Batley Station | ABS |  |
| A57780 |  | ABS | 1d | 2019-10-11 A | 2019-10-11 A | A72630 | 100% | start on or after 2019-10-11 | A03 5 Day Workweek (BH & Xmas as Work) | Rig & Trolley | Bam Ritchies | UP | AB5436 | TBC | On Track | On Track | Week 28 | Midweek | 34m15ch - 35m15ch | Batley Station | ABS |  |
| A56060 |  | Window Samples | 1d | 2019-10-20 A | 2019-10-20 A | A72630 | 100% | start on or after 2019-10-11 |  | WS Rig & Trolley | Structural Soils | MDL1 | WS5411 | TBC | On Track | On Track | Week 28 | Midweek | 34m12ch | Dewsbury Stn |  |  |
| A56070 |  | Window Samples | 1d | 2019-10-20 A | 2019-10-20 A | A72630 | 100% | start on or after 2019-10-11 |  | WS Rig & Trolley | Structural Soils | MDL1 | WS5412 | TBC | On Track | On Track | Week 28 | Midweek | 34m36ch | Dewsbury Stn |  |  |
| A56150 |  | ABS | 1d | 2019-10-21 A | 2019-10-21 A | A72630 | 100% | start on or after 2019-10-11 | A03 5 Day Workweek (BH & Xmas as Work) | Rig & Trolley | Bam Ritchies | UP | AB5448 | TBC | On Track | On Track | Week 28 | Midweek | 34m15ch - 35m15ch | Batley Station | ABS |  |
| A56170 |  | ABS | 1d | 2019-10-21 A | 2019-10-21 A | A72630 | 100% | start on or after 2019-10-11 | A03 5 Day Workweek (BH & Xmas as Work) | Rig & Trolley | Bam Ritchies | UP | AB5444 | TBC | On Track | On Track | Week 28 | Midweek | 34m15ch - 35m15ch | Batley Station | ABS |  |
| A57660 |  | ABS | 1d | 2019-10-21 A | 2019-10-21 A | A72630 | 100% | start on or after 2019-10-11 | A03 5 Day Workweek (BH & Xmas as Work) | Rig & Trolley | Bam Ritchies | UP | AB5450 | TBC | On Track | On Track | Week 28 | Midweek | 34m15ch - 35m15ch | Batley Station | ABS |  |
| A57670 |  | ABS | 1d | 2019-10-21 A | 2019-10-21 A | A72630 | 100% | start on or after 2019-10-11 | A03 5 Day Workweek (BH & Xmas as Work) | Rig & Trolley | Bam Ritchies | DN | AB5447 | TBC | On Track | On Track | Week 28 | Midweek | 34m15ch - 35m15ch | Batley Station | ABS |  |
| A57680 |  | ABS | 1d | 2019-10-21 A | 2019-10-21 A | A72630 | 100% | start on or after 2019-10-11 | A03 5 Day Workweek (BH & Xmas as Work) | Rig & Trolley | Bam Ritchies | DN | AB5449 | TBC | On Track | On Track | Week 28 | Midweek | 34m15ch - 35m15ch | Batley Station | ABS |  |
| A57690 |  | ABS | 1d | 2019-10-21 A | 2019-10-21 A | A72630 | 100% | start on or after 2019-10-11 | A03 5 Day Workweek (BH & Xmas as Work) | Rig & Trolley | Bam Ritchies | UP | AB5446 | TBC | On Track | On Track | Week 28 | Midweek | 34m15ch - 35m15ch | Batley Station | ABS |  |
|  | 30 | **Week 30** |  | 2019-10-19 | 2019-10-19 |  |  |  |  |  |  |  |  |  |  |  |  |  |  |  |  |  |
|  | 8 | **Weekend Works** |  | 2019-10-19 | 2019-10-19 |  |  |  |  |  |  |  |  |  |  |  |  |  |  |  |  |  |
|  | 3 | **Ravensthorpe to Copley Hill East (0040 Sat - 0510 Sat) 32m28ch - 41m20ch** |  | 2019-10-19 | 2019-10-19 |  |  |  |  |  |  |  |  |  |  |  |  |  |  |  |  |  |
| A58390 |  | ABS | 1d | 2019-10-19 A | 2019-10-19 A | A72630 | 100% | start on or after 2019-10-19 |  |  | Bam Ritchies |  | AB5401 |  |  | On Track | Week 30 | Weekend | 33m47 | Dewsbury | ABS | Approach to Dewsbury Station |
| A58400 |  | ABS | 1d | 2019-10-19 A | 2019-10-19 A | A72630 | 100% | start on or after 2019-10-19 |  |  | Bam Ritchies |  | AB5402 |  |  | On Track | Week 30 | Weekend | 33m47 | Dewsbury | ABS | Approach to Dewsbury Station |
| A58410 |  | ABS | 1d | 2019-10-19 A | 2019-10-19 A | A72630 | 100% | start on or after 2019-10-19 |  |  | Bam Ritchies |  | AB5403 |  |  | On Track | Week 30 | Weekend | 33m48 | Dewsbury | ABS | Approach to Dewsbury Station |
| A58420 |  | ABS | 1d | 2019-10-19 A | 2019-10-19 A | A72630 | 100% | start on or after 2019-10-19 |  |  | Bam Ritchies |  | AB5404 |  |  | On Track | Week 30 | Weekend | 33m51 | Dewsbury | ABS | Approach to Dewsbury Station |
| A58430 |  | ABS | 1d | 2019-10-19 A | 2019-10-19 A | A72630 | 100% | start on or after 2019-10-19 |  |  | Bam Ritchies |  | AB5405 |  |  | On Track | Week 30 | Weekend | 33m53 | Dewsbury | ABS | Approach to Dewsbury Station |
| A58440 |  | ABS | 1d | 2019-10-19 A | 2019-10-19 A | A72630 | 100% | start on or after 2019-10-19 |  |  | Bam Ritchies |  | AB5406 |  |  | On Track | Week 30 | Weekend | 33m55 | Dewsbury | ABS | Approach to Dewsbury Station |
| A64140 |  | ABS - Setting Out | 1d | 2019-10-19 A | 2019-10-19 A | A72630 | 100% | start on or after 2019-10-19 |  |  | Bam Ritchies |  |  |  |  | On Track | Week 30 | Weekend |  | Dewsbury | ABS | Approach to Dewsbury Station |

| ID | WBS | Activity | Duration | Start | Finish | Predecessors | Complete | Planned start | Planned finish | Constraint | Company Responsible | Location / ELR | GI Reference Number | On/Off Track | On-Track Off-Track | Week Number | Weekend/Midweek | Mileage | Location | Discipline | Access Point | Machines Required |
| --- | --- | --- | --- | --- | --- | --- | --- | --- | --- | --- | --- | --- | --- | --- | --- | --- | --- | --- | --- | --- | --- | --- |
|  | 32 | **Week 32** |  | 2019-11-02 | 2019-11-02 |  |  |  |  |  |  |  |  |  |  |  |  |  |  |  |  |  |
|  | 8 | **Weekend Works** |  | 2019-11-02 | 2019-11-02 |  |  |  |  |  |  |  |  |  |  |  |  |  |  |  |  |  |
|  | 4 | **Ravensthorpe to Copley Hill East (0040 Sat - 0510 Sat) 32m28ch - 41m20ch** |  | 2019-11-02 | 2019-11-02 |  |  |  |  |  |  |  |  |  |  |  |  |  |  |  |  |  |
| A57800 |  | Telecoms - Cable Route Survey | 1d | 2019-11-02 A | 2019-11-02 A | A72630 | 100% |  |  | start on or after 2019-11-02 | Amey | TBC | TBC | On Track | On Track | Week 32 | Weekend | 35m55ch - 36m55ch |  |  |  |  |
| A57960 |  | ABS | 1d | 2019-11-02 A | 2019-11-02 A | A72630 | 100% |  |  | start on or after 2019-11-02 | Bam Ritchies |  | AB5412 |  | On Track | Week 32 | Weekend | 33m63 | Dewsbury Station | ABS |  |  |
| A57970 |  | ABS | 1d | 2019-11-02 A | 2019-11-02 A | A72630 | 100% |  |  | start on or after 2019-11-02 | Bam Ritchies |  | AB5413 |  | On Track | Week 32 | Weekend | 33m65 | Dewsbury Station | ABS | Dewsbury |  |
| A57980 |  | ABS | 1d | 2019-11-02 A | 2019-11-02 A | A72630 | 100% |  |  | start on or after 2019-11-02 | Bam Ritchies |  | AB5414 |  | On Track | Week 32 | Weekend | 33m65 | Dewsbury Station | ABS | Dewsbury |  |
| A57990 |  | ABS | 1d | 2019-11-02 A | 2019-11-02 A | A72630 | 100% |  |  | start on or after 2019-11-02 | Bam Ritchies |  | AB5415 |  | On Track | Week 32 | Weekend | 33m67 | Dewsbury Station | ABS | Dewsbury |  |
| A58450 |  | ABS | 1d | 2019-11-02 A | 2019-11-02 A | A72630 | 100% |  |  | start on or after 2019-11-02 | Bam Ritchies |  | AB5407 |  | On Track | Week 32 | Weekend | 33m57 | Approach to Dewsbury Station | ABS |  |  |
| A58460 |  | ABS | 1d | 2019-11-02 A | 2019-11-02 A | A72630 | 100% |  |  | start on or after 2019-11-02 | Bam Ritchies |  | AB5408 |  | On Track | Week 32 | Weekend | 33m57 | Approach to Dewsbury Station | ABS |  |  |
| A58470 |  | ABS | 1d | 2019-11-02 A | 2019-11-02 A | A72630 | 100% |  |  | start on or after 2019-11-02 | Bam Ritchies |  | AB5409 |  | On Track | Week 32 | Weekend | 33m59 | Dewsbury Station | ABS |  |  |
| A58480 |  | ABS | 1d | 2019-11-02 A | 2019-11-02 A | A72630 | 100% |  |  | start on or after 2019-11-02 | Bam Ritchies |  | AB5410 |  | On Track | Week 32 | Weekend | 33m61 | Dewsbury Station | ABS |  |  |
| A58490 |  | ABS | 1d | 2019-11-02 A | 2019-11-02 A | A72630 | 100% |  |  | start on or after 2019-11-02 | Bam Ritchies |  | AB5411 |  | On Track | Week 32 | Weekend | 33m61 | Dewsbury Station | ABS |  |  |
|  | 34 | **Week 34** |  | 2019-11-16 | 2019-11-22 |  |  |  |  |  |  |  |  |  |  |  |  |  |  |  |  |  |
|  | 1 | **Weekend Works** |  | 2019-11-16 | 2019-11-18 |  |  |  |  |  |  |  |  |  |  |  |  |  |  |  |  |  |
|  | 3 | **Ravensthorpe to Copley Hill East (0040 Sat - 0510 Sat) 32m28ch - 41m20ch** |  | 2019-11-16 | 2019-11-18 |  |  |  |  |  |  |  |  |  |  |  |  |  |  |  |  |  |
| A58000 |  | ABS | 1d | 2019-11-16 A | 2019-11-16 A | A72630 | 100% | 2019-12-20 | 2019-12-20 | start on or after 2019-12-20 | Bam Ritchies | Dewsbury Station - Move To Unplanned | AB5416 |  | On Track | Week 34 | Weekend | 33m69 | Dewsbury Station | ABS | Dewsbury | Trolley up/Down |
| A58010 |  | ABS | 1d | 2019-11-16 A | 2019-11-16 A | A72630 | 100% | 2019-11-18 | 2019-11-18 | start on or after 2019-11-18 | Bam Ritchies | Dewsbury Station - Move To Unplanned | AB5417 |  | On Track | Week 34 | Weekend | 33m69 | Dewsbury Station | ABS | Dewsbury | Trolley up/Down |
| A58020 |  | ABS | 1d | 2019-11-16 A | 2019-11-16 A | A72630 | 100% | 2019-11-18 | 2019-11-18 | start on or after 2019-11-16 | Bam Ritchies | Dewsbury Station | AB5418 |  | On Track | Week 34 | Weekend | 33m71 | Dewsbury Station | ABS | Dewsbury | Trolley up/Down |
| A61130 |  | Trial Hole | 1d | 2019-11-16 A | 2019-11-16 A | A72630 | 100% | 2019-11-18 | 2019-11-18 | start on or after 2019-11-16 | Structural Soils | Dewsbury Station | MDL1/23/TH/02 |  | On Track | Week 34 | Weekend | 34m21 | OB MDL1/23 - Wood Lane |  | Dewsbury |  |
| A61140 |  | Trial Hole | 1d | 2019-11-16 A | 2019-11-16 A | A72630 | 100% | 2019-11-18 | 2019-11-18 | start on or after 2019-11-16 | Structural Soils | Dewsbury Station | MDL1/23/TH/03 |  | On Track | Week 34 | Weekend | 34m21 | OB MDL1/23 - Wood Lane |  | Dewsbury |  |
| A61150 |  | Trial Hole | 1d | 2019-11-16 A | 2019-11-16 A | A72630 | 100% | 2019-11-18 | 2019-11-18 | start on or after 2019-11-16 | Structural Soils | Dewsbury Station | MDL1/23/TH/04 |  | On Track | Week 34 | Weekend | 34m21 | OB MDL1/23 - Wood Lane |  | Dewsbury |  |
| A64150 |  | ABS | 1d | 2019-11-16 A | 2019-11-16 A | A72630 | 100% | 2019-11-18 | 2019-11-18 | start on or after 2019-11-16 | Bam Ritchies | Dewsbury Station | AB5421 |  | On Track | Week 34 | Weekend |  | Cottingley to Copley Hill | ABS | Batley SB | Trolley up/Down |
| A64160 |  | ABS | 1d | 2019-11-16 A | 2019-11-16 A | A72630 | 100% | 2019-11-18 | 2019-11-18 | start on or after 2019-11-16 | Bam Ritchies | Dewsbury Station | AB5420 |  | On Track | Week 34 | Weekend |  | Cottingley to Copley Hill | ABS | Batley SB | Trolley up/Down |
| A64170 |  | ABS | 1d | 2019-11-16 A | 2019-11-16 A | A72630 | 100% | 2019-11-18 | 2019-11-18 | start on or after 2019-11-16 | Bam Ritchies | Dewsbury Station | AB5419 |  | On Track | Week 34 | Weekend |  | Cottingley to Copley Hill | ABS | Batley SB | Trolley up/Down |
| A57810 |  | Telecoms - Cable Route Survey | 1d | 2019-11-18 A | 2019-11-18 A | A72630 | 100% |  |  | start on or after 2019-11-16 | Amey | Morley | 36m 55c-37m 55c | On Track | On Track | Week 34 | Weekend | 36m55ch - 37m55ch |  |  |  |  |
| A58080 |  | Window Sample | 1d | 2019-11-18 A | 2019-11-18 A | A72630 | 100% |  |  | start on or after 2019-11-16 | Structural Soils | Dewsbury Station | WS5410 - REFUSED @ 2.40M |  | On Track | Week 34 | Weekend | 34m10 | Dewsbury to Batley |  | Dewsbury |  |

| ID | WBS | Activity | Duration | Start | Finish | Predecessors | Complete | Planned start | Planned finish | Constraint | Company Responsible | Location / ELR | GI Reference Number | On/Off Track | On-Track Off-Track | Week Number | Weekend/Midweek | Mileage | Location | Discipline | Access Point | Teams |
| --- | --- | --- | --- | --- | --- | --- | --- | --- | --- | --- | --- | --- | --- | --- | --- | --- | --- | --- | --- | --- | --- | --- |
|  | 7 | **Midweek Works** |  | 2019-11-19 | 2019-11-22 |  |  |  |  |  |  |  |  |  |  |  |  |  |  |  |  |  |
|  | 4 | **Mon - Ravensthorpe to Copley Hill East Junction (2350 - 0545) 32m16ch - 35m60ch** |  | 2019-11-19 | 2019-11-19 |  |  |  |  |  |  |  |  |  |  |  |  |  |  |  |  |  |
| A57840 |  | Telecoms - Cable Route Survey | 1d | 2019-11-19 A | 2019-11-19 A | A72630 | 100% |  |  | start on or after 2019-11-19 | Amey | TBC | 32m 16c - 33m 16c | On Track | On Track | Week 34 | Midweek | 32m16ch - 33m16ch |  |  |  |  |
| A58600 |  | ABS | 1d | 2019-11-19 A | 2019-11-19 A | A72630 | 100% |  |  | start on or after 2019-11-19 | Bam Ritchies | Batley Station | AB5460 Down |  | On Track | Week 34 | Midweek | 35m25 | Batley to Morley Tunnel | ABS |  |  |
| A58610 |  | ABS | 1d | 2019-11-19 A | 2019-11-19 A | A72630 | 100% |  |  | start on or after 2019-11-19 | Bam Ritchies | Batley Station | AB5461 Down |  | On Track | Week 34 | Midweek | 35m26 | Batley to Morley Tunnel | ABS |  |  |
| A58700 |  | ABS | 1d | 2019-11-19 A | 2019-11-19 A | A72630 | 100% |  |  | start on or after 2019-11-19 | Bam Ritchies | Batley Station | AB5463 Down |  | On Track | Week 34 | Midweek | 35m44 | Batley to Morley Tunnel | ABS | Batley SB |  |
| A61180 |  | Trial Hole | 1d | 2019-11-19 A | 2019-11-19 A | A72630 | 100% |  |  | start on or after 2019-11-19 | Structural Soils | MDL1/29 - Soothill Lane | MDL1/29/TH/03 |  | On Track | Week 34 | Midweek | 35m19 | OB MDL1/29 - Soothill Lane |  | Batley Station |  |
| A61190 |  | Trial Hole | 1d | 2019-11-19 A | 2019-11-19 A | A72630 | 100% |  |  | start on or after 2019-11-19 | Structural Soils | MDL1/29 - Soothill Lane | MDL1/29/TH/04 |  | On Track | Week 34 | Midweek | 35m19 | OB MDL1/29 - Soothill Lane |  | Batley Station |  |
| A64260 |  | Window Sample | 1d | 2019-11-19 A | 2019-11-19 A | A72630 | 100% |  |  | start on or after 2019-11-19 | Structural Soils | Dewsbury Station | WS5402 |  | On Track | Week 34 | Midweek | 33m1009yds | Approach to Dewsbury Station |  | Dewsbury | Structural Soils |
|  | 1 | **Tues - Ravensthorpe to Copley Hill East Junction (2350 - 0545) 32m16ch - 35m60ch** |  | 2019-11-20 | 2019-11-21 |  |  |  |  |  |  |  |  |  |  |  |  |  |  |  |  |  |
| A57850 |  | Telecoms - Cable Route Survey | 1d | 2019-11-20 A | 2019-11-20 A | A72630 | 100% |  |  | start on or after 2019-11-20 | Amey | 33m 16c - 34m 16c | TBC | On Track | On Track | Week 34 | Midweek | 33m16ch - 34m16ch |  |  |  |  |
| A58060 |  | ABS | 1d | 2019-11-20 A | 2019-11-20 A | A72630 | 100% |  |  | start on or after 2019-11-20 | Bam Ritchies | Batley Station | AB5453 Down |  | On Track | Week 34 | Midweek | 34m7 | Dewsbury to Batley | ABS |  |  |
| A58620 |  | ABS | 1d | 2019-11-20 A | 2019-11-20 A | A72630 | 100% |  |  | start on or after 2019-11-20 | Bam Ritchies | Batley Station | AB5457 Down |  | On Track | Week 34 | Midweek | 35m28 | Batley to Morley Tunnel | ABS |  |  |
| A58640 |  | ABS | 1d | 2019-11-20 A | 2019-11-20 A | A72630 | 100% |  |  | start on or after 2019-11-20 | Bam Ritchies | Batley Station | AB5455 Down |  | On Track | Week 34 | Midweek | 35m32 | Batley to Morley Tunnel | ABS |  |  |
| A64280 |  | Window Sample | 2d | 2019-11-21 A | 2019-11-21 A | A72630 | 100% | 2019-11-20 | 2019-11-21 | start on or after 2019-11-20 | Structural Soils | Dewsbury Station | WS5414 |  | On Track | Week 34 | Midweek | TBC | Dewsbury Station |  | Dewsbury |  |
| A64270 |  | Window Sample | 1d | 2019-11-21 A | 2019-11-21 A | A72630 | 100% |  |  | start on or after 2019-11-21 | Structural Soils | Dewsbury Station | WS5413 |  | On Track | Week 34 | Midweek | TBC | Dewsbury Station |  | Dewsbury |  |
|  | 2 | **Weds - Ravensthorpe to Copley Hill East Junction (2350 - 0545) 32m16ch - 35m60ch** |  | 2019-11-21 | 2019-11-21 |  |  |  |  |  |  |  |  |  |  |  |  |  |  |  |  |  |
| A57860 |  | Telecoms - Cable Route Survey | 1d | 2019-11-21 A | 2019-11-21 A | A72630 | 100% |  |  | start on or after 2019-11-21 | Amey |  | 34m 16c - 35m 16c | On Track | On Track | Week 34 | Midweek | 34m16ch - 35m16ch |  |  |  |  |
| A58070 |  | ABS | 1d | 2019-11-21 A | 2019-11-21 A | A72630 | 100% |  |  | start on or after 2019-11-21 | Bam Ritchies | Batley Station | AB5456 Up |  | On Track | Week 34 | Midweek | 34m9 | Dewsbury to Batley | ABS |  |  |
| A58570 |  | ABS | 1d | 2019-11-21 A | 2019-11-21 A | A72630 | 100% |  |  | start on or after 2019-11-21 | Bam Ritchies | Batley Station | AB5459 UP |  | On Track | Week 34 | Midweek | 35m19 | Batley to Morley Tunnel | ABS |  |  |
| A58710 |  | ABS | 1d | 2019-11-21 A | 2019-11-21 A | A72630 | 100% |  |  | start on or after 2019-11-21 | Bam Ritchies | Batley Station | AB5462 Up |  | On Track | Week 34 | Midweek | 35m46 | Batley to Morley Tunnel | ABS |  |  |
| A64290 |  | Window Sample | 1d | 2019-11-21 A | 2019-11-21 A | A72630 | 100% |  |  | start on or after 2019-11-21 | Structural Soils | Dewsbury Station | WS5408 |  | On Track | Week 34 | Midweek | TBC | Dewsbury Station |  | Dewsbury |  |
|  | 3 | **Thurs - Ravensthorpe to Copley Hill East Junction (2350 - 0545) 32m16ch - 35m60ch** |  | 2019-11-21 | 2019-11-22 |  |  |  |  |  |  |  |  |  |  |  |  |  |  |  |  |  |
| A64340 |  | ABS | 1d | 2019-11-21 A | 2019-11-22 A | A72630 | 100% | 2019-11-21 | 2019-11-21 | start on or after 2019-11-21 | Bam Ritchies | Batley Station | AB5452 Up |  | On Track | Week 34 | Midweek | 34m9 | Dewsbury to Batley | ABS |  |  |
| A64350 |  | ABS | 1d | 2019-11-21 A | 2019-11-22 A | A72630 | 100% | 2019-11-21 | 2019-11-21 | start on or after 2019-11-21 | Bam Ritchies | Batley Station | AB5454 UP |  | On Track | Week 34 | Midweek | 35m19 | Batley to Morley Tunnel | ABS |  |  |
| A64360 |  | ABS | 1d | 2019-11-21 A | 2019-11-22 A | A72630 | 100% | 2019-11-21 | 2019-11-21 | start on or after 2019-11-21 | Bam Ritchies | Batley Station | AB5458 Down |  | On Track | Week 34 | Midweek | 35m46 | Batley to Morley Tunnel | ABS |  |  |
| A57870 |  | Telecoms - Cable Route Survey | 1d | 2019-11-22 A | 2019-11-22 A | A72630 | 100% |  |  | start on or after 2019-11-22 | Amey |  | 35m 16c - 35m 60c | On Track | On Track | Week 34 | Midweek | 35m16ch - 35m60ch |  |  |  |  |
| A60320 |  | Window Sample - PART 2 | 1d | 2019-11-22 A | 2019-11-22 A | A72630 | 100% |  |  | start on or after 2019-11-22 | Structural Soils | PART 2 Dewsbury Station | WS5442 |  | On Track | Week 34 | Midweek | 33m63 | Dewsbury Station |  |  |  |
| A60360 |  | Window Sample - PART 2 | 1d | 2019-11-22 A | 2019-11-22 A | A72630 | 100% |  |  | start on or after 2019-11-22 | Structural Soils | PART 2 Dewsbury Station | WS5443 |  | On Track | Week 34 | Midweek | 33m70 | Dewsbury Station |  | Dewsbury |  |

| ID | WBS | Activity | Duration | Start | Finish | Predecessors | Complete | Constraint | Company Responsible | Location / ELR | GI Reference Number | On/Off Track | On-Track Off-Track | Week Number | Weekend/Midweek | Mileage | Teams | Access Point | Location | Discipline | Text 1 |
| --- | --- | --- | --- | --- | --- | --- | --- | --- | --- | --- | --- | --- | --- | --- | --- | --- | --- | --- | --- | --- | --- |
|  | 35 | **Week 36** |  | 2019-11-30 | 2019-11-30 |  |  |  |  |  |  |  |  |  |  |  |  |  |  |  |  |
|  | 1 | **Weekend Works** |  | 2019-11-30 | 2019-11-30 |  |  |  |  |  |  |  |  |  |  |  |  |  |  |  |  |
|  | 3 | **Ravensthorpe to Copley Hill East (0040 Sat - 0510 Sat) 33m60ch - 41m60ch** |  | 2019-11-30 | 2019-11-30 |  |  |  |  |  |  |  |  |  |  |  |  |  |  |  |  |
| A57820 |  | Telecoms - Cable Route Survey | 1d | 2019-11-30 A | 2019-11-30 A | A72630 | 100% | start on or after 2019-11-30 | Amey | TBC | TBC | On Track | On Track | Week 36 | Weekend | 37m55ch - 38m55ch |  |  |  |  |  |
| A57950 |  | Trial Pit - PART 2 | 1d | 2019-11-30 A | 2019-11-30 A | A72630 | 100% | start on or after 2019-11-30 | Structural Soils | PART 2 Dewsbury Station | TP5409 |  | On Track | Week 36 | Weekend | 33m62 | Structural Soils | Dewsbury | Dewsbury Station Subway |  |  |
| A58930 |  | ABS - PART 2 | 1d | 2019-11-30 A | 2019-11-30 A | A72630 | 100% | start on or after 2019-11-30 | Bam Ritchies | MDL1 | AB5492 - UP |  | On Track | Week 36 | Weekend | 35m100yds-36m600yds |  | Batley SB | Batley to Morley Tunnel | ABS |  |
| A59040 |  | ABS | 1d | 2019-11-30 A | 2019-11-30 A | A72630 | 100% | start on or after 2019-11-30 | Bam Ritchies | MDL1 | AB5490 - UP |  | On Track | Week 36 | Weekend | 35m100yds-36m600yds |  | Batley SB | Morley Tunnel | ABS |  |
| A59050 |  | ABS | 1d | 2019-11-30 A | 2019-11-30 A | A72630 | 100% | start on or after 2019-11-30 | Bam Ritchies | MDL1 | AB5491 - UP |  | On Track | Week 36 | Weekend | 35m100yds-36m600yds |  | Batley SB | Morley Tunnel | ABS |  |
| A59110 |  | ABS | 1d | 2019-11-30 A | 2019-11-30 A | A72630 | 100% | start on or after 2019-11-30 | Bam Ritchies | MDL1 | AB5485 - UP |  | On Track | Week 36 | Weekend | 35m100yds-36m600yds |  | Batley SB | Morley Tunnel | ABS |  |
| A59160 |  | ABS | 1d | 2019-11-30 A | 2019-11-30 A | A72630 | 100% | start on or after 2019-11-30 | Bam Ritchies | MDL1 | AB5486 - UP |  | On Track | Week 36 | Weekend | 35m100yds-36m600yds |  | Batley SB | Morley Tunnel | ABS |  |
| A64240 |  | Replace CRT Monitor | 1d | 2019-11-30 A | 2019-11-30 A | A72630 | 100% | start on or after 2019-11-30 | Amey | TBC | TBC | On Track | On Track | Week 36 | Weekend | 38m1100yds |  |  |  |  |  |
| A64330 |  | ABS | 1d | 2019-11-30 A | 2019-11-30 A | A72630 | 100% | start on or after 2019-11-30 | Bam Ritchies | MDL1 | AB5488 - UP |  | On Track | Week 36 | Weekend | 35m100yds-36m600yds |  | Batley SB | Dewsbury to Batley | ABS |  |
| A64390 |  | Trial Pit Christmas Prep - SHOULD BE W5 | 1d | 2019-11-30 A | 2019-11-30 A | A72630 | 100% | start on or after 2019-11-30 | Structural Soils |  | BH5601 - W5 |  | On Track | Week 36 | Weekend | 38m20ch-38m30c |  | Morley Station | Morley Tunnel (MDL1/36) |  |  |
| A64400 |  | Trial Pit Christmas Prep - SHOULD BE W5 | 1d | 2019-11-30 A | 2019-11-30 A | A72630 | 100% | start on or after 2019-11-30 | Structural Soils |  | BH5602 - W5 |  | On Track | Week 36 | Weekend | 38m20ch-38m30c |  | Morley Station | Morley Tunnel (MDL1/36) |  |  |
| A64410 |  | Trial Pit Christmas Prep - SHOULD BE W5 | 1d | 2019-11-30 A | 2019-11-30 A | A72630 | 100% | start on or after 2019-11-30 | Structural Soils |  | BH5603 - W5 |  | On Track | Week 36 | Weekend | 38m20ch-38m30c |  | Morley Station | Morley Tunnel (MDL1/36) |  |  |
|  | 36 | **Week 38** |  | 2019-12-14 | 2019-12-14 |  |  |  |  |  |  |  |  |  |  |  |  |  |  |  |  |
|  | 1 | **Weekend Works** |  | 2019-12-14 | 2019-12-14 |  |  |  |  |  |  |  |  |  |  |  |  |  |  |  |  |
|  | 3 | **Ravensthorpe to Copley Hill East (0040 Sat - 0510 Sat) 32m20ch - 41m20ch** |  | 2019-12-14 | 2019-12-14 |  |  |  |  |  |  |  |  |  |  |  |  |  |  |  |  |
| A57830 |  | Telecoms - Cable Route Survey | 1d | 2019-12-14 A | 2019-12-14 A | A72630 | 100% | start on or after 2019-12-14 | Amey | TBC | TBC | On Track | On Track | Week 38 | Weekend | 37m55ch - 38m55ch |  | White Rose |  |  |  |
|  | 38 | **Week 42** |  | 2020-01-11 | 2020-01-19 |  |  |  |  |  |  |  |  |  |  |  |  |  |  |  |  |
|  | 1 | **Weekend Works** |  | 2020-01-11 | 2020-01-19 |  |  |  |  |  |  |  |  |  |  |  |  |  |  |  |  |
|  | 1 | **Ravensthorpe to Copley Hill East (0040 Sat - 0510 Sat) 32m20ch - 41m20ch** |  | 2020-01-11 | 2020-01-19 |  |  |  |  |  |  |  |  |  |  |  |  |  |  |  |  |
| A57880 |  | Telecoms - Cable Route Survey | 1d | 2020-01-11 A | 2020-01-11 A | A72630 | 100% | start on or after 2020-01-11 | Amey | TBC | TBC | On Track | On Track | Week 42 | Weekend | 39m55ch - 40m55ch |  | Cottingley |  |  |  |
| A60230 |  | Trial Pit - PART 2 | 1d | 2020-01-11 A | 2020-01-11 A | A72630 | 100% | start on or after 2020-01-11 | Structural Soils | PART 2 | TP5460 |  | On Track | Week 42 | Weekend | 33m56 |  | Dewsbury | Dewsbury Station | Trial Pit |  |
| A60240 |  | Trial Pit - PART 2 | 1d | 2020-01-11 A | 2020-01-11 A | A72630 | 100% | start on or after 2020-01-11 | Structural Soils | PART 2 | TP5461 |  | On Track | Week 42 | Weekend | 33m58 |  | Dewsbury | Dewsbury Station | Trial Pit |  |
| A60250 |  | Trial Pit - PART 2 | 1d | 2020-01-11 A | 2020-01-11 A | A72630 | 100% | start on or after 2020-01-11 | Structural Soils | PART 2 | TP5462 |  | On Track | Week 42 | Weekend | 33m58 |  | Dewsbury | Dewsbury Station | Trial Pit |  |
| A60300 |  | Trial Pit - PART 2 | 1d | 2020-01-11 A | 2020-01-11 A | A72630 | 100% | start on or after 2020-01-11 | Structural Soils | PART 2 | TP5466 |  | On Track | Week 42 | Weekend | 33m61 |  | Dewsbury | Dewsbury Station | Trial Pit |  |
| A61120 |  | Trial Hole | 1d | 2020-01-11 A | 2020-01-11 A | A72630 | 100% | start on or after 2020-01-11 | Structural Soils | Dewsbury Station | MDL1/23/TH/01 |  | On Track | Week 42 | Weekend | 34m21 |  | Dewsbury | OB MDL1/23 - Wood Lane | Trial Pit |  |
| A61410 |  | 75mm Horizontal Core - PART 2 | 1d | 2020-01-11 A | 2020-01-11 A | A72630 | 100% | start on or after 2020-01-11 | Bam Ritchies | 35m1000yds - 36m1000yds | MDL1/36/B1/SC/05 |  | On Track | Week 42 | Weekend | 36m25 |  | Batley SB | RW MDL1/36/B1 | Coring |  |
| A61420 |  | 75mm Horizontal Core - PART 2 | 1d | 2020-01-11 A | 2020-01-11 A | A72630 | 100% | start on or after 2020-01-11 | Bam Ritchies | 35m1000yds - 36m1000yds | MDL1/36/B1/SC/06 |  | On Track | Week 42 | Weekend | 36m25 |  | Batley SB | RW MDL1/36/B1 | Coring |  |
| A61430 |  | 75mm Horizontal Core - PART 2 | 1d | 2020-01-11 A | 2020-01-11 A | A72630 | 100% | start on or after 2020-01-11 | Bam Ritchies | 35m1000yds - 36m1000yds | MDL1/36/B1/SC/07 |  | On Track | Week 42 | Weekend | 36m25 |  | Batley SB | RW MDL1/36/B1 | Coring |  |
| A64450 |  | Walkout | 1d | 2020-01-11 A | 2020-01-11 A | A72630 | 100% | start on or after 2020-01-11 | Structural Soils |  |  |  | On Track | Week 42 | Weekend | Full Mileage |  | Dragon Bridge | Dewsbury Station | Trial Pit |  |
| A64710 |  | Level 1 PGM | 1d | 2020-01-11 A | 2020-01-11 A | A72630 | 100% | start on or after 2020-01-11 | Central Alliance |  | P2019/2622605 |  | On Track | Week 42 | Weekend | 32m20ch to 41m20ch |  | Dewsbury |  | Topographical |  |
| A64720 |  | Trial Pit - PART 2 | 1d | 2020-01-11 A | 2020-01-11 A | A72630 | 100% | start on or after 2020-01-11 | Structural Soils | PART 2 | TP5467 |  | On Track | Week 42 | Weekend | 33m61 |  | Dewsbury | Dewsbury Station | Trial Pit |  |
| A64730 |  | Trial Pit - PART 2 | 1d | 2020-01-11 A | 2020-01-11 A | A72630 | 100% | start on or after 2020-01-11 | Structural Soils | PART 2 | TP5409 |  | On Track | Week 42 | Weekend | 33m62 |  | Dewsbury | Dewsbury Station | Trial Pit |  |
| A64770 |  | Prep For Safety - Fence Repairs | 1d | 2020-01-11 A | 2020-01-11 A | A72630 | 100% | start on or after 2020-01-11 | Bam Nuttall | Bridge 13 Bridge Watergate Road |  |  | On Track | Week 42 | Weekend | 33m 32ch |  | Toad Holes | Dewsbury Station |  |  |
| A64780 |  | Prep For Safety - Fence Repairs | 1d | 2020-01-11 A | 2020-01-11 A | A72630 | 100% | start on or after 2020-01-11 | Bam Nuttall | Bridge 16 George Street |  |  | On Track | Week 42 | Weekend | 33m 49.1ch |  | Dewsbury | Dewsbury Station |  |  |
| A64790 |  | Prep For Safety - Fence Repairs | 1d | 2020-01-11 A | 2020-01-11 A | A72630 | 100% | start on or after 2020-01-11 | Bam Nuttall | Bridge 19 George Street |  |  | On Track | Week 42 | Weekend | 33m 73ch |  | Dewsbury | Dewsbury Station |  |  |
| A64900 |  | Scan North Tunnel Portal | 1d | 2020-01-11 A | 2020-01-11 A | A72630 | 100% | start on or after 2020-01-11 | Bridgeway | Morley Tunnel |  | On Track | On Track | Week 42 | Weekend | 38m - 39m |  | Morley St |  | Topographical |  |
| A64910 |  | Scan South Tunnel Portal | 1d | 2020-01-11 A | 2020-01-11 A | A72630 | 100% | start on or after 2020-01-11 | Bridgeway | Morley Tunnel |  | On Track | On Track | Week 42 | Weekend | 38m - 39m |  | Morley St |  | Topographical |  |
| A64920 |  | Installation Of Chainage - 75% - 1500m/2000m | 1d | 2020-01-11 A | 2020-01-11 A | A72630 | 100% | start on or after 2020-01-11 | Bridgeway | Morley Tunnel |  | On Track | On Track | Week 42 | Weekend | 38m - 39m |  | Morley St |  | Topographical |  |
| A58770 |  | ABS | 1d | 2020-01-19 A | 2020-01-19 A | A72630 | 100% | start on or after 2020-01-11 | Bam Ritchies | 35m1000yds - 36m600yds | AB5478 |  | On Track | Week 42 | Weekend | 35m71 |  | Batley SB | Batley to Morley Tunnel | ABS |  |
| A58790 |  | ABS | 1d | 2020-01-19 A | 2020-01-19 A | A72630 | 100% | start on or after 2020-01-11 | Bam Ritchies | 35m1000yds - 36m600yds | AB5480 |  | On Track | Week 42 | Weekend | 35m75 |  | Batley SB | Batley to Morley Tunnel | ABS |  |
| A58820 |  | ABS | 1d | 2020-01-19 A | 2020-01-19 A | A72630 | 100% | start on or after 2020-01-11 | Bam Ritchies | 35m1000yds - 36m600yds | AB5482 |  | On Track | Week 42 | Weekend | 35m79 |  | Batley SB | Batley to Morley Tunnel | ABS |  |
| A58850 |  | ABS | 1d | 2020-01-19 A | 2020-01-19 A | A72630 | 100% | start on or after 2020-01-11 | Bam Ritchies | 35m1000yds - 36m600yds | AB5484 |  | On Track | Week 42 | Weekend | 36m5 |  | Batley SB | Batley to Morley Tunnel | ABS | W46 |
| A58880 |  | ABS - PART 2 | 1d | 2020-01-19 A | 2020-01-19 A | A72630 | 100% | start on or after 2020-01-11 | Bam Ritchies | 35m1000yds - 36m600yds | AB5487 |  | On Track | Week 42 | Weekend | 36m9 |  | Batley SB | Batley to Morley Tunnel | ABS | W44 |

| ID | WBS | Activity | Duration | Start | Finish | Predecessors | Complete | Planned start | Planned finish | Constraint | Company Responsible | GI Reference Number | On-Track Off-Track | Week Number | Weekend/Midweek | Mileage | Location | Text 1 | Location / ELR | On/Off Track | Project | Access Point | Discipline |
| --- | --- | --- | --- | --- | --- | --- | --- | --- | --- | --- | --- | --- | --- | --- | --- | --- | --- | --- | --- | --- | --- | --- | --- |
|  | 52 | **Week 46** |  | 2019-11-10 | 2019-11-10 |  |  |  |  |  |  |  |  |  |  |  |  |  |  |  |  |  |  |
|  | 7 | **Midweek Works** |  | 2019-11-10 | 2019-11-10 |  |  |  |  |  |  |  |  |  |  |  |  |  |  |  |  |  |  |
|  | 3 | **Weds - Thorn Hill (LNW Junction) to Copley Hill East Junction** |  | 2019-11-10 | 2019-11-10 |  |  |  |  |  |  |  |  |  |  |  |  |  |  |  |  |  |  |
| A60430 |  | Trial Pit - DESCOPED | 1d | 2019-11-10 A | 2019-11-10 A | A72630 | 100% | 2020-02-13 | 2020-02-13 | start on or after 2020-02-13 | Structural Soils | TP5500 | On Track | Week 46 | Midweek | 38m32 | Morley |  |  |  |  |  |  |
| A60440 |  | Trial Pit - DESCOPED | 1d | 2019-11-10 A | 2019-11-10 A | A72630 | 100% | 2020-02-13 | 2020-02-13 | start on or after 2020-02-13 | Structural Soils | TP5501 | On Track | Week 46 | Midweek | 38m33 | Morley |  |  |  |  |  |  |
|  | 4 | **Thurs - Thorn Hill (LNW Junction) to Copley Hill East Junction** |  | 2019-11-10 | 2019-11-10 |  |  |  |  |  |  |  |  |  |  |  |  |  |  |  |  |  |  |
| A60450 |  | Trial Pit - DESCOPED | 1d | 2019-11-10 A | 2019-11-10 A | A72630 | 100% | 2020-02-14 | 2020-02-14 | start on or after 2020-02-14 | Structural Soils | TP5502 | On Track | Week 46 | Midweek | 38m35 | Morley |  |  |  |  |  |  |
| A60460 |  | Trial Pit - DESCOPED | 1d | 2019-11-10 A | 2019-11-10 A | A72630 | 100% | 2020-02-14 | 2020-02-14 | start on or after 2020-02-14 | Structural Soils | TP5503 | On Track | Week 46 | Midweek | 38m35 | Morley |  |  |  |  |  |  |
| A60470 |  | Trial Pit - DESCOPED | 1d | 2019-11-10 A | 2019-11-10 A | A72630 | 100% | 2020-02-14 | 2020-02-14 | start on or after 2020-02-14 | Structural Soils | TP5504 | On Track | Week 46 | Midweek | 38m37 | Morley |  |  |  |  |  |  |
| A60480 |  | Trial Pit - DESCOPED | 1d | 2019-11-10 A | 2019-11-10 A | A72630 | 100% | 2020-02-14 | 2020-02-14 | start on or after 2020-02-14 | Structural Soils | TP5505 | On Track | Week 46 | Midweek | 38m38 | Morley |  |  |  |  |  |  |
|  | 46 | **Week 48** |  | 2019-11-10 | 2020-02-23 |  |  |  |  |  |  |  |  |  |  |  |  |  |  |  |  |  |  |
|  | 8 | **Weekend Works** |  | 2019-11-10 | 2020-02-23 |  |  |  |  |  |  |  |  |  |  |  |  |  |  |  |  |  |  |
|  | 6 | **Ravensthorpe to Copley Hill East (0040 Sat - 0510 Sat) 33m60ch - 40m02ch** |  | 2019-11-10 | 2020-02-22 |  |  |  |  |  |  |  |  |  |  |  |  |  |  |  |  |  |  |
| A60490 |  | Trial Pit - DESCOPED | 1d | 2019-11-10 A | 2019-11-10 A | A72630 | 100% | 2020-02-22 | 2020-02-22 | start on or after 2020-02-22 | Structural Soils | TP5506 | On Track | Week 48 | Weekend | 38m44 | Morley |  |  |  |  |  |  |
| A60500 |  | Trial Pit - DESCOPED | 1d | 2019-11-10 A | 2019-11-10 A | A72630 | 100% | 2020-02-22 | 2020-02-22 | start on or after 2020-02-22 | Structural Soils | TP5508 | On Track | Week 48 | Weekend | 38m47 | Morley |  |  |  |  |  |  |
| A64740 |  | OLE Site Familiarisation | 1d | 2020-02-22 A | 2020-02-22 A | A72630 | 100% |  |  | start on or after 2020-02-22 | Keltbray | TBC | On Track | Week 48 | Weekend | TBC |  | W44 | TBC | On Track | W4 | Various | OLE Setting Out |
| A64970 |  | Topographical Survey - Chaining Out | 1d | 2020-02-22 A | 2020-02-22 A | A72630 | 100% |  |  | start on or after 2020-02-22 | Bridgeway |  | On Track | Week 48 | Weekend | 34m60ch to 35m 20ch | Batley to Morley Tunnel | W46 | Morley Tunnel |  | W4 | Batley Station | Topographical |
| A64980 |  | Topographical Survey - Platform Gauging | 1d | 2020-02-22 A | 2020-02-22 A | A72630 | 100% |  |  | start on or after 2020-02-22 | Bridgeway |  | On Track | Week 48 | Weekend | 34m60ch to 35m 20ch | Batley to Morley Tunnel | W46 | Morley Tunnel |  | W4 | Batley Station | Topographical |
| A65270 |  | Install Load Monitor & Assessment | 1d | 2020-02-22 A | 2020-02-22 A | A72630 | 100% |  |  | start on or after 2020-02-22 | Amey |  | On Track | Week 48 | Weekend | 33m45ch -34m00ch | OB MDL1/36P2 - Valley Road OB (Tunnel portal) |  | Dewsbury Points Heating |  | W4 | Dewsbury Stn | Load Monitoring |
| A65330 |  | Topographical Survey - Track Survey | 1d | 2020-02-22 A | 2020-02-22 A | A72630 | 100% |  |  | start on or after 2020-02-22 | Bridgeway |  | On Track | Week 48 | Weekend | 34m60ch to 35m 20ch | Batley to Morley Tunnel | W46 | Morley Tunnel |  | W4 | Batley Station | Topographical |
| A65450 |  | Walkout / Scrap Rail Removal | 1d | 2020-02-22 A | 2020-02-22 A | A72630 | 100% |  |  | start on or after 2020-02-22 | Structural Soils |  | On Track | Week 48 | Weekend | 38m25ch - 39m75ch | Cottingley to Copley Hill |  |  |  | W4 | Morley | Walkout |
| A65550 |  | Prep For Safety | 1d | 2020-02-22 A | 2020-02-22 A | A72630 | 100% |  |  | start on or after 2020-02-22 | Amey |  | On Track | Week 48 | Weekend | 38m 27ch to 38m 60ch | OB MDL1/47 - Whitehall Road Dragon Bridge |  |  |  | W4 | Natasha Elliot Fbr | Prep For Safety |
|  | 5 | **Mirfield East to Copley Hill (2350 Sat - 0820 Sun) 32m16ch - 38m15ch** |  | 2020-02-23 | 2020-02-23 |  |  |  |  |  |  |  |  |  |  |  |  |  |  |  |  |  |  |
| A64990 |  | Topographical Survey - Wall Plate Installation | 1d | 2020-02-23 A | 2020-02-23 A | A72630 | 100% |  |  | start on or after 2020-02-23 | Bridgeway |  | On Track | Week 48 | Weekend | 35m 56ch To 38m 29ch | Batley to Morley Tunnel | W46 | Morley Tunnel |  | W4 | Batley SB | Topographical |
| A65620 |  | Walkout | 1d | 2020-02-23 A | 2020-02-23 A | A72630 | 100% |  |  | start on or after 2020-02-23 | Structural Soils |  | On Track | Week 48 | Weekend | 35m5ch - 35m30ch | Cottingley to Copley Hill |  |  |  | W4 | Batley Stn | Walkout |

Notes:
- A64990: General Comments: 10/02 - Changed from chaining out to Wall Plate Install as the rails are being replaced through Morley tunnel in weeks 50 and / 51 applying the chainage to the rail in week 48 would be / pointless

| ID | WBS | Activity | Duration | Start | Finish | Predecessors | Complete | Constraint | Text 1 | Company Responsible | Location / ELR | GI Reference Number | On-Track Off-Track | Week Number | Weekend/Midweek | Project | Mileage | Access Point | Location | Discipline | Teams |
| --- | --- | --- | --- | --- | --- | --- | --- | --- | --- | --- | --- | --- | --- | --- | --- | --- | --- | --- | --- | --- | --- |
|  | 57 | **Week 49-1** |  | 2020-03-01 | 2020-03-01 |  |  |  |  |  |  |  |  |  |  |  |  |  |  |  |  |
|  | 1 | **Weekend** |  | 2020-03-01 | 2020-03-01 |  |  |  |  |  |  |  |  |  |  |  |  |  |  |  |  |
|  | 1 | **Ravensthorpe to Copley Hill (2355 Sat - 0915 Sun) 33m26ch to38m19ch** |  | 2020-03-01 | 2020-03-01 |  |  |  |  |  |  |  |  |  |  |  |  |  |  |  |  |
| A57920 |  | Window Sample | 1d | 2020-03-01 A | 2020-03-01 A | A72630 | 100% | start on or after 2020-03-01 | W46 | Structural Soils | Dewsbury Station | WS5404 | On Track | Week 49 | Weekend | W4 | 33m49ch | Dewsbury | Approach to Dewsbury Station | Window Sample |  |
| A58830 |  | Window Sample | 1d | 2020-03-01 A | 2020-03-01 A | A72630 | 100% | start on or after 2020-03-01 | W46 | Structural Soils |  | WS5423 | On Track | Week 49 | Weekend | W4 | 36m01ch | Batley SB | Batley to Morley Tunnel | Window Sample |  |
| A60710 |  | 75mm Inclined Core - PART 2 | 1d | 2020-03-01 A | 2020-03-01 A | A72630 | 100% | start on or after 2020-03-01 | W46 | Structural Soils | PART 2 | MDL1/17/SC/03 | On Track | Week 49 | Weekend | W4 | 33m57 | Dewsbury | OB MDL1/17 - Ashworth Road | Coring |  |
| A60720 |  | 75mm Inclined Core - PART 2 | 1d | 2020-03-01 A | 2020-03-01 A | A72630 | 100% | start on or after 2020-03-01 | W46 | Structural Soils | PART 2 | MDL1/17/SC/04 | On Track | Week 49 | Weekend | W4 | 33m57 | Dewsbury | OB MDL1/17 - Ashworth Road | Coring |  |
| A60770 |  | 75mm Inclined Core - PART 2 | 1d | 2020-03-01 A | 2020-03-01 A | A72630 | 100% | start on or after 2020-03-01 | W46 | Structural Soils | PART 2 | MDL1/17/SC/09 | On Track | Week 49 | Weekend | W4 | 33m57 | Dewsbury | OB MDL1/17 - Ashworth Road | Coring |  |
| A61330 |  | Paint Sample - PART 2 | 1d | 2020-03-01 A | 2020-03-01 A | A72630 | 100% | start on or after 2020-03-01 | W46 | Structural Soils | PART 2 | MDL1/17/PS/01 | On Track | Week 49 | Weekend | W4 | 33m57ch | Dewsbury | OB MDL1/17 - Ashworth Road | Paint Sample |  |
| A64830 |  | Prep For Safety - Ballast Board Install | 1d | 2020-03-01 A | 2020-03-01 A | A72630 | 100% | start on or after 2020-03-01 |  | Bam Nuttall |  |  | On Track | Week 49 | Weekend | W4 | 34m 73ch | 34m 73ch | Cottingley to Copley Hill | Prep For Safety |  |
| A65010 |  | Topographical Survey - Wall Plate Installation | 1d | 2020-03-01 A | 2020-03-01 A | A72630 | 100% | start on or after 2020-03-01 | W46 | Bridgeway | Morley Tunnel |  | On Track | Week 49 | Weekend | W4 | 35m 56ch To 38m 29ch | Batley SB | Batley to Morley Tunnel | Topographical |  |
| A65020 |  | Topographical Survey - Wall Plate Installation | 1d | 2020-03-01 A | 2020-03-01 A | A72630 | 100% | start on or after 2020-03-01 | W46 | Bridgeway | Morley Tunnel |  | On Track | Week 49 | Weekend | W4 | 35m 56ch To 38m 29ch | Batley SB | Batley to Morley Tunnel | Topographical |  |
| A65280 |  | Install Load Monitor & Assessment | 1d | 2020-03-01 A | 2020-03-01 A | A72630 | 100% | start on or after 2020-03-01 |  | Amey | Dewsbury Points Heating |  | On Track | Week 49 | Weekend | W4 | 33m45ch -34m00ch | Dewsbury | OB MDL1/36P2 - Valley Road OB (Tunnel portal) | Load Monitoring |  |
| A66650 |  | Prep For Safety - Scoping Works | 1d | 2020-03-01 A | 2020-03-01 A | A72630 | 100% | start on or after 2020-03-01 |  | Bam Nuttall |  |  | On Track | Week 49 | Weekend | W4 | Full Mileage | Various | Cottingley to Copley Hill | Prep For Safety |  |
|  | 54 | **Week 50** |  | 2020-03-07 | 2020-03-08 |  |  |  |  |  |  |  |  |  |  |  |  |  |  |  |  |
|  | 8 | **Weekend Works** |  | 2020-03-07 | 2020-03-08 |  |  |  |  |  |  |  |  |  |  |  |  |  |  |  |  |
|  | 4 | **Ravensthorpe to Copley Hill East (0040 Sat - 0510 Sat) 32m26ch - 40m02ch** |  | 2020-03-07 | 2020-03-07 |  |  |  |  |  |  |  |  |  |  |  |  |  |  |  |  |
| A58270 |  | Window Sample | 1d | 2020-03-07 A | 2020-03-07 A | A72630 | 100% | start on or after 2020-03-07 |  | Structural Soils |  | WS5415 | On Track | Week 50 | Weekend | W4 | 34m52 | Batley Station | Dewsbury to Batley | Window Sample | Structural Soils |
| A58340 |  | Window Sample | 1d | 2020-03-07 A | 2020-03-07 A | A72630 | 100% | start on or after 2020-03-07 |  | Structural Soils |  | WS5416 | On Track | Week 50 | Weekend | W4 | 34m66 | Batley Station | Dewsbury to Batley | Window Sample | Structural Soils |
| A59210 |  | ABS | 1d | 2020-03-07 A | 2020-03-07 A | A72630 | 100% | start on or after 2020-03-07 | W46 | Bam Ritchies |  | AB5526 | On Track | Week 50 | Weekend | W4 | 35m40ch - 38m30ch | Batley | Morley Tunnel | ABS |  |
| A59230 |  | ABS | 1d | 2020-03-07 A | 2020-03-07 A | A72630 | 100% | start on or after 2020-03-07 | W46 | Bam Ritchies |  | AB5528 | On Track | Week 50 | Weekend | W4 | 35m40ch - 38m30ch | Batley | Morley Tunnel | ABS |  |
| A59240 |  | ABS | 1d | 2020-03-07 A | 2020-03-07 A | A72630 | 100% | start on or after 2020-03-07 | W46 | Bam Ritchies |  | AB5530 | On Track | Week 50 | Weekend | W4 | 35m40ch - 38m30ch | Batley | Morley Tunnel | ABS |  |
| A59250 |  | ABS | 1d | 2020-03-07 A | 2020-03-07 A | A72630 | 100% | start on or after 2020-03-07 | W46 | Bam Ritchies |  | AB5532 | On Track | Week 50 | Weekend | W4 | 35m40ch - 38m30ch | Batley | Morley Tunnel | ABS |  |
| A59270 |  | ABS | 1d | 2020-03-07 A | 2020-03-07 A | A72630 | 100% | start on or after 2020-03-07 | W46 | Bam Ritchies |  | AB5535 | On Track | Week 50 | Weekend | W4 | 35m40ch - 38m30ch | Batley | Morley Tunnel | ABS |  |
| A64750 |  | OLE Site Familiarisation | 1d | 2020-03-07 A | 2020-03-07 A | A72630 | 100% | start on or after 2020-03-07 |  | Keltbray |  |  | On Track | Week 50 | Weekend | W4 | 37m - 38m25ch | Morley Station, E:Cottingley | Cottingley to Copley Hill | OLE Setting Out |  |
| A65050 |  | Topographical Survey - Chain Out / Wall Plate Install | 1d | 2020-03-07 A | 2020-03-07 A | A72630 | 100% | start on or after 2020-03-07 | W46 | Bridgeway | Batley |  | On Track | Week 50 | Weekend | W4 | 34m60ch to 35m 20ch | Batley SB | Batley to Morley Tunnel | Topographical |  |
| A65060 |  | Topographical Survey - Wall Plate Install | 1d | 2020-03-07 A | 2020-03-07 A | A72630 | 100% | start on or after 2020-03-07 | W46 | Bridgeway | Batley |  | On Track | Week 50 | Weekend | W4 | 34m60ch to 35m 20ch | Batley SB | Batley to Morley Tunnel | Topographical |  |
| A65130 |  | Walkout | 1d | 2020-03-07 A | 2020-03-07 A | A72630 | 100% | start on or after 2020-03-07 |  | Bam Ritchies |  |  | On Track | Week 50 | Weekend | W4 | 35m00ch - 40m00ch | Batley | OB MDL1/47 - Whitehall Road Dragon Bridge | Walkout |  |
| A65150 |  | ABS | 1d | 2020-03-07 A | 2020-03-07 A | A72630 | 100% | start on or after 2020-03-07 | W46 | Bam Ritchies |  | AB5517 | On Track | Week 50 | Weekend | W4 | 35m40ch - 38m30ch | Batley | Morley Tunnel | ABS |  |
| A65160 |  | ABS | 1d | 2020-03-07 A | 2020-03-07 A | A72630 | 100% | start on or after 2020-03-07 | W46 | Bam Ritchies |  | AB5519 | On Track | Week 50 | Weekend | W4 | 35m40ch - 38m30ch | Batley | Morley Tunnel | ABS |  |
| A65170 |  | ABS | 1d | 2020-03-07 A | 2020-03-07 A | A72630 | 100% | start on or after 2020-03-07 | W46 | Bam Ritchies |  | AB5518 | On Track | Week 50 | Weekend | W4 | 35m40ch - 38m30ch | Batley | Morley Tunnel | ABS |  |
| A65180 |  | ABS | 1d | 2020-03-07 A | 2020-03-07 A | A72630 | 100% | start on or after 2020-03-07 | W46 | Bam Ritchies |  | AB5520 | On Track | Week 50 | Weekend | W4 | 35m40ch - 38m30ch | Batley | Morley Tunnel | ABS |  |
| A65340 |  | Topographical Survey - Track Survey | 1d | 2020-03-07 A | 2020-03-07 A | A72630 | 100% | start on or after 2020-03-07 | W46 | Bridgeway | Batley |  | On Track | Week 50 | Weekend | W4 | 34m60ch to 35m 20ch | Batley SB | Batley to Morley Tunnel | Topographical |  |
| A65350 |  | Topographical Survey - Kinematic Survey | 1d | 2020-03-07 A | 2020-03-07 A | A72630 | 100% | start on or after 2020-03-07 | W46 | Bridgeway | Batley |  | On Track | Week 50 | Weekend | W4 | 34m60ch to 35m 20ch | Batley SB | Batley to Morley Tunnel | Topographical |  |

Notes:
- A60710: General Comments: 02/03 - Brought forward a week in place of other high level cores that / were unachievable
- A60720: General Comments: 02/03 - Brought forward a week in place of other high level cores that / were unachievable
- A60770: General Comments: 02/03 - Brought forward a week in place of other high level cores that / were unachievable

| ID | WBS | Activity | Duration | Start | Finish | Predecessors | Complete | Constraint | Text 1 | Company Responsible | GI Reference Number | On-Track Off-Track | Week Number | Weekend/Midweek | Project | Mileage | Access Point | Location | Discipline | Location / ELR | Teams |
| --- | --- | --- | --- | --- | --- | --- | --- | --- | --- | --- | --- | --- | --- | --- | --- | --- | --- | --- | --- | --- | --- |
|  | 3 | **Ravensthorpe to Copley Hill East Jct (2355 Sat - 0915 Sun) 33m50ch - 38m25ch** |  | 2020-03-08 | 2020-03-08 |  |  |  |  |  |  |  |  |  |  |  |  |  |  |  |  |
| A60870 |  | 75mm Inclined Core | 1d | 2020-03-08 A | 2020-03-08 A | A72630 | 100% | start on or after 2020-03-08 | W46 | Structural Soils | MDL1/29/SC/01 | On Track | Week 50 | Weekend | W4 | 35m19 | Batley | OB MDL1/29 - Soothill Lane | Coring |  |  |
| A60880 |  | 75mm Horizontal Core | 1d | 2020-03-08 A | 2020-03-08 A | A72630 | 100% | start on or after 2020-03-08 |  | Structural Soils | MDL1/29/SC/02 | On Track | Week 50 | Weekend | W4 | 35m19 | Batley | OB MDL1/29 - Soothill Lane | Coring |  |  |
| A60890 |  | 75mm Inclined Core | 1d | 2020-03-08 A | 2020-03-08 A | A72630 | 100% | start on or after 2020-03-08 | W46 | Structural Soils | MDL1/29/SC/03 | On Track | Week 50 | Weekend | W4 | DESCOPED | Batley | OB MDL1/29 - Soothill Lane | Coring |  |  |
| A64860 |  | Prep For Safety Walkout | 1d | 2020-03-08 A | 2020-03-08 A | A72630 | 100% | start on or after 2020-03-08 |  | Bam Nuttall |  | On Track | Week 50 | Weekend | W4 | 35m 36M | Batley | Cottingley to Copley Hill | Prep For Safety | Bridge 6 |  |
| A65630 |  | Window Sample | 1d | 2020-03-08 A | 2020-03-08 A | A72630 | 100% | start on or after 2020-03-08 |  | Structural Soils | WS5442 | On Track | Week 50 | Weekend | W4 | 33m50ch - 33m70ch | Dewsbury | Dewsbury to Batley | Window Sample |  | Structural Soils |
| A65640 |  | Window Sample | 1d | 2020-03-08 A | 2020-03-08 A | A72630 | 100% | start on or after 2020-03-08 |  | Structural Soils | WS5443 | On Track | Week 50 | Weekend | W4 | 33m50ch - 33m70ch | Dewsbury | Dewsbury to Batley | Window Sample |  | Structural Soils |
|  | 58 | **Week 51-1** |  | 2020-03-15 | 2020-03-29 |  |  |  |  |  |  |  |  |  |  |  |  |  |  |  |  |
|  | 1 | **Weekend Works** |  | 2020-03-15 | 2020-03-29 |  |  |  |  |  |  |  |  |  |  |  |  |  |  |  |  |
|  | 1 | **Ravensthorpe to Copley Hill (2355 Sat - 0915 Sun) 38m20ch to 41m0ch** |  | 2020-03-15 | 2020-03-29 |  |  |  |  |  |  |  |  |  |  |  |  |  |  |  |  |
| A65070 |  | Topographical Survey - Platform Gauging | 1d | 2020-03-15 A | 2020-03-15 A | A72630 | 100% | start on or after 2020-03-15 | W46 | Bridgeway |  | On Track | Week 51 | Weekend | W4 | 38m 20ch to 38m 40ch | Morley Station | Batley to Morley Tunnel | Topographical | Morley Tunnel |  |
| A65080 |  | Topographical Survey - Track/Topo Survey | 1d | 2020-03-15 A | 2020-03-15 A | A72630 | 100% | start on or after 2020-03-15 | W46 | Bridgeway |  | On Track | Week 51 | Weekend | W4 | 38m 20ch to 38m 40ch | Morley Station | Batley to Morley Tunnel | Topographical | Morley Tunnel |  |
| A65320 |  | POS Rep Walkout | 1d | 2020-03-15 A | 2020-03-15 A | A72630 | 100% | start on or after 2020-03-15 |  | Bam Nuttall |  | On Track | Week 51 | Weekend |  |  | Morley RRAP |  | POS |  |  |
| A70700 |  | Prep For Safety - Install Handrail & Split Duct Installation | 1d | 2020-03-15 A | 2020-03-15 A | A72630 | 100% | start on or after 2020-03-15 |  | Bam Nuttall |  | On Track | Week 51 | Weekend |  | 39m 50ch – 40m 20ch | 40m00ch |  | Prep For Safety |  |  |
| A65250 |  | Drainage Walkout | 1d | 2020-03-29 A | 2020-03-29 A | A72630 | 100% | start on or after 2020-03-15 | W46 | Aaron Rail |  | On Track | Week 51 | Weekend | W4 | Full Mileage | Natasha Elliot Fbr | Batley to Morley Tunnel | Walkout |  |  |
|  | 56 | **Week 52** |  | 2019-11-27 | 2020-04-12 |  |  |  |  |  |  |  |  |  |  |  |  |  |  |  |  |
|  | 8 | **Weekend Works** |  | 2020-03-21 | 2020-04-12 |  |  |  |  |  |  |  |  |  |  |  |  |  |  |  |  |
|  | 7 | **Ravensthorpe to Copley Hill East (0040 Sat - 0510 Sat) 32m26ch - 40m02ch** |  | 2020-03-21 | 2020-04-12 |  |  |  |  |  |  |  |  |  |  |  |  |  |  |  |  |
| A59430 |  | Window Sample | 1d | 2020-03-21 A | 2020-03-21 A | A72630 | 100% | start on or after 2020-03-21 | W46 | Structural Soils | WS5424 | On Track | Week 52 | Weekend | W4 | 39m61 | White Rose | Morley to Cottingley | Window Sample |  |  |
| A59460 |  | Window Sample | 1d | 2020-03-21 A | 2020-03-21 A | A72630 | 100% | start on or after 2020-03-21 | W46 | Structural Soils | WS5425 | On Track | Week 52 | Weekend | W4 | 39m75 | White Rose | Morley to Cottingley | Window Sample |  |  |
| A65090 |  | Topographical Survey - Track Survey | 1d | 2020-03-21 A | 2020-03-21 A | A72630 | 100% | start on or after 2020-03-21 | W46 | Bridgeway |  | On Track | Week 52 | Weekend | W4 | 34m60ch to 35m 20ch | Batley SB | Batley to Morley Tunnel | Topographical | Batley |  |
| A65100 |  | Topographical Survey - Track Survey | 1d | 2020-03-21 A | 2020-03-21 A | A72630 | 100% | start on or after 2020-03-21 | W46 | Bridgeway |  | On Track | Week 52 | Weekend | W4 | 34m60ch to 35m 20ch | Batley SB | Batley to Morley Tunnel | Topographical | Batley |  |
| A65570 |  | Temporary Works Walkout | 1d | 2020-03-21 A | 2020-03-21 A | A72630 | 100% | start on or after 2020-03-21 |  | Bam Nuttall |  | On Track | Week 52 | Weekend | W4 | 35m - 38m20ch | Morley | Cottingley to Copley Hill | Walkout |  |  |
| A66840 |  | ABS Walkout | 1d | 2020-03-21 A | 2020-03-21 A | A72630 | 100% | start on or after 2020-03-21 | W46 | Bam Ritchies |  | On Track | Week 52 | Weekend | W4 | Morley to 40m02ch | Morley RRAP | Morley Tunnel | ABS | Morley to Dragon Bridge |  |
| A70760 |  | Track Dilapidation Survey - NO REPORT | 1d | 2020-04-12 A | 2020-04-12 A | A72630 | 100% | start on or after 2020-03-21 | W46 | Design | NO REPORT | On Track | Week 52 | Weekend | W4 | 35m220yds - 36m220yds | Batley SB | Morley Tunnel | Walkout |  |  |

| ID | WBS | Activity | Duration | Start | Finish | Predecessors | Complete | Planned start | Planned finish | Constraint | Text 1 | Company Responsible | Location / ELR | On-Track Off-Track | Week Number | Weekend/Midweek | Project | Mileage | Access Point | Location | Discipline | On/Off Track | GI Reference Number |
| --- | --- | --- | --- | --- | --- | --- | --- | --- | --- | --- | --- | --- | --- | --- | --- | --- | --- | --- | --- | --- | --- | --- | --- |
|  | 6 | **Ravensthorpe to Copley Hill (2355 Sat - 0915 Sun) 38m20ch to 39m0ch** |  | 2020-04-05 | 2020-04-12 |  |  |  |  |  |  |  |  |  |  |  |  |  |  |  |  |  |  |
| A65110 |  | Topographical Survey - Track/Topo - NO REPORT | 1d | 2020-04-05 A | 2020-04-05 A | A72630 | 100% |  |  | start on or after 2020-03-22 | W46 | Bridgeway | Morley Tunnel | On Track | Week 52 | Weekend | W4 | 38m 20ch to 38m 40ch | Morley Station | Batley to Morley Tunnel | Topographical |  |  |
| A70770 |  | Track Dilapidation Survey - NO REPORT | 1d | 2020-04-12 A | 2020-04-12 A | A72630 | 100% |  |  | start on or after 2020-03-22 | W46 | Design |  | On Track | Week 52 | Weekend | W4 | 38m20ch - 39m00ch | Morley | Morley Tunnel | Walkout |  |  |
|  | 7 | **Midweek Works** |  | 2019-11-27 | 2020-03-27 |  |  |  |  |  |  |  |  |  |  |  |  |  |  |  |  |  |  |
|  | 7 | **Mon - Ravens to Copley Hill (2350 - 0515) 32m25ch - 35m10ch & 38m40ch - 41m70ch** |  | 2020-03-24 | 2020-03-24 |  |  |  |  |  |  |  |  |  |  |  |  |  |  |  |  |  |  |
| A65260 |  | Telecoms - Cable Route Survey | 1d | 2020-03-24 A | 2020-03-24 A | A72630 | 100% |  |  | start on or after 2020-03-24 | W44 | Amey | TBC | On Track | Week 52 | Midweek | W4 | 41m00ch - 41m70ch | REPLAN COVID-19 |  | Telecoms | On Track |  |
| A65370 |  | Topographical Survey - Levelling | 1d | 2020-03-24 A | 2020-03-24 A | A72630 | 100% |  |  | start on or after 2020-03-24 | W46 | Bridgeway | Batley | On Track | Week 52 | Midweek | W4 | 34m60ch to 35m 10ch | REPLAN COVID-19 | Batley to Morley Tunnel | Topographical |  | CANCELLED |
| A65380 |  | Topographical Survey - Platform/Station Area Topo | 1d | 2020-03-24 A | 2020-03-24 A | A72630 | 100% |  |  | start on or after 2020-03-24 | W46 | Bridgeway | Batley | On Track | Week 52 | Midweek | W4 | 34m60ch to 35m 10ch | REPLAN COVID-19 | Batley to Morley Tunnel | Topographical |  | CANCELLED |
| A65480 |  | Prep For Safety - Handrail Installation | 1d | 2020-03-24 A | 2020-03-24 A | A72630 | 100% |  |  | start on or after 2020-03-24 |  | Bam Nuttall | Bridge 6&8 | On Track | Week 52 | Midweek | W4 | 32m25ch - 35m10ch | REPLAN COVID-19 | Cottingley to Copley Hill | Prep For Safety |  | CANCELLED |
| A65580 |  | Temporary Works Walkout | 1d | 2020-03-24 A | 2020-03-24 A | A72630 | 100% |  |  | start on or after 2020-03-24 |  | Bam Nuttall |  | On Track | Week 52 | Midweek | W4 | 33m00ch - 35m00ch | REPLAN COVID-19 | Cottingley to Copley Hill | Walkout |  | CANCELLED |
| A70780 |  | Track Dilapidation Survey | 1d | 2020-03-24 A | 2020-03-24 A | A72630 | 100% |  |  | start on or after 2020-03-24 | W46 | Design |  | On Track | Week 52 | Midweek | W4 | 41m - 41m70ch | REPLAN COVID-19 | Morley Tunnel | Walkout |  | CANCELLED |
|  | 1 | **Tues - Ravens to Copley Hill (2350 - 0515) 32m25ch - 35m10ch & 38m40ch - 41m70ch** |  | 2019-11-27 | 2020-03-25 |  |  |  |  |  |  |  |  |  |  |  |  |  |  |  |  |  |  |
| A61160 |  | Trial Hole - DESCOPED | 1d | 2019-11-27 A | 2019-11-27 A | A72630 | 100% | 2020-03-25 | 2020-03-25 | start on or after 2020-03-25 |  | Structural Soils | MDL1/29 - Soothill Lane | On Track | Descoped | Midweek |  | 35m19 | Batley Station | OB MDL1/29 - Soothill Lane |  |  | MDL1/29/TH/01 - 3RD PARTY |
| A61170 |  | Trial Hole - DESCOPED | 1d | 2019-11-27 A | 2019-11-27 A | A72630 | 100% |  |  | start on or after 2019-11-27 |  | Structural Soils | MDL1/29 - Soothill Lane | On Track | Descoped | Midweek |  | 35m19 | Batley Station | OB MDL1/29 - Soothill Lane |  |  | MDL1/29/TH/02 - 3RD PARTY |
| A61200 |  | Trial Hole - DESCOPED | 1d | 2019-11-27 A | 2019-11-27 A | A72630 | 100% |  |  | start on or after 2019-11-27 |  | Structural Soils | MDL1/29 - Soothill Lane | On Track | Descoped | Midweek |  | 35m19 | Batley Station | OB MDL1/29 - Soothill Lane |  |  | MDL1/29/TH/05 - 3RD PARTY |
| A61210 |  | Trial Hole - DESCOPED | 1d | 2019-11-27 A | 2019-11-27 A | A72630 | 100% |  |  | start on or after 2019-11-27 |  | Structural Soils | MDL1/29 - Soothill Lane | On Track | Descoped | Midweek |  | 35m19 | Batley Station | OB MDL1/29 - Soothill Lane |  |  | MDL1/29/TH/06 - 3RD PARTY |
| A65390 |  | Topographical Survey - Platform/Station Area Topo | 1d | 2020-03-25 A | 2020-03-25 A | A72630 | 100% |  |  | start on or after 2020-03-25 | W46 | Bridgeway | Batley | On Track | Week 52 | Midweek | W4 | 34m60ch to 35m 10ch | REPLAN COVID-19 | Batley to Morley Tunnel | Topographical |  | CANCELLED |
| A65400 |  | Topographical Survey - Drainage | 1d | 2020-03-25 A | 2020-03-25 A | A72630 | 100% |  |  | start on or after 2020-03-25 | W46 | Bridgeway | Batley | On Track | Week 52 | Midweek | W4 | 34m60ch to 35m 10ch | REPLAN COVID-19 | Batley to Morley Tunnel | Topographical |  | CANCELLED |
| A65490 |  | Prep For Safety - Handrail Installation | 1d | 2020-03-25 A | 2020-03-25 A | A72630 | 100% |  |  | start on or after 2020-03-25 |  | Bam Nuttall | Bridge 6&8 | On Track | Week 52 | Midweek | W4 | 32m25ch - 35m10ch | REPLAN COVID-19 | Cottingley to Copley Hill | Prep For Safety |  | CANCELLED |
| A65590 |  | Temporary Works Walkout | 1d | 2020-03-25 A | 2020-03-25 A | A72630 | 100% |  |  | start on or after 2020-03-25 |  | Bam Nuttall |  | On Track | Week 52 | Midweek | W4 | 38m20ch - 40m00ch | REPLAN COVID-19 | Cottingley to Copley Hill | Walkout |  | CANCELLED |
| A70790 |  | Track Dilapidation Survey | 1d | 2020-03-25 A | 2020-03-25 A | A72630 | 100% |  |  | start on or after 2020-03-25 | W46 | Design |  | On Track | Week 52 | Midweek | W4 | 34m220yds - 35m220yds | REPLAN COVID-19 | Morley Tunnel | Walkout |  | CANCELLED |
|  | 2 | **Weds - Ravens to Copley Hill (2350 - 0515) 32m25ch - 35m10ch & 38m40ch - 41m70ch** |  | 2020-03-26 | 2020-03-26 |  |  |  |  |  |  |  |  |  |  |  |  |  |  |  |  |  |  |
| A65410 |  | Topographical Survey - Datum Plates | 1d | 2020-03-26 A | 2020-03-26 A | A72630 | 100% |  |  | start on or after 2020-03-26 | W46 | Bridgeway | Batley | On Track | Week 52 | Midweek | W4 | 34m60ch to 35m 10ch | REPLAN COVID-19 | Batley to Morley Tunnel | Topographical |  | CANCELLED |
| A65420 |  | Topographical Survey - Drainage | 1d | 2020-03-26 A | 2020-03-26 A | A72630 | 100% |  |  | start on or after 2020-03-26 | W46 | Bridgeway | Batley | On Track | Week 52 | Midweek | W4 | 34m60ch to 35m 10ch | REPLAN COVID-19 | Batley to Morley Tunnel | Topographical |  | CANCELLED |
| A65500 |  | Prep For Safety - Handrail Installation | 1d | 2020-03-26 A | 2020-03-26 A | A72630 | 100% |  |  | start on or after 2020-03-26 |  | Bam Nuttall | Bridge 6&8 | On Track | Week 52 | Midweek | W4 | 32m25ch - 35m10ch | REPLAN COVID-19 | Cottingley to Copley Hill | Prep For Safety |  | CANCELLED |
| A65600 |  | Temporary Works Walkout | 1d | 2020-03-26 A | 2020-03-26 A | A72630 | 100% |  |  | start on or after 2020-03-26 |  | Bam Nuttall |  | On Track | Week 52 | Midweek | W4 | 40m00ch - 41m70ch | REPLAN COVID-19 | Cottingley to Copley Hill | Walkout |  | CANCELLED |
| A65730 |  | Scrap Rail Removal | 1d | 2020-03-26 A | 2020-03-26 A | A72630 | 100% |  |  | start on or after 2020-03-26 |  | Structural Soils |  | On Track | Week 52 | Midweek | W4 | 41m00ch - 41m70ch | REPLAN COVID-19 | MDL1/52 Copley Hill | Walkout |  | CANCELLED |
| A70800 |  | Track Dilapidation Survey | 1d | 2020-03-26 A | 2020-03-26 A | A72630 | 100% |  |  | start on or after 2020-03-26 | W46 | Design |  | On Track | Week 52 | Midweek | W4 | 33m00ch - 34m20ch | REPLAN COVID-19 | Morley Tunnel | Walkout |  | CANCELLED |

| ID | WBS | Activity | Duration | Start | Finish | Predecessors | Complete | Planned start | Planned finish | Constraint | Text 1 | Company Responsible | Location / ELR | GI Reference Number | On-Track Off-Track | Week Number | Weekend/Midweek | Project | Mileage | Access Point | Location | Discipline | Machines Required | Comment | Responsibility | Teams | On/Off Track |
| --- | --- | --- | --- | --- | --- | --- | --- | --- | --- | --- | --- | --- | --- | --- | --- | --- | --- | --- | --- | --- | --- | --- | --- | --- | --- | --- | --- |
|  | 3 | **Thurs - Ravens to Copley Hill (2350 - 0515) 32m25ch - 35m10ch & 38m40ch - 41m70ch** |  | 2020-03-27 | 2020-03-27 |  |  |  |  |  |  |  |  |  |  |  |  |  |  |  |  |  |  |  |  |  |  |
| A65430 |  | Topographical Survey - Datum Plates | 1d | 2020-03-27 A | 2020-03-27 A | A72630 | 100% |  |  | start on or after 2020-03-27 | W46 | Bridgeway | Batley | CANCELLED | On Track | Week 52 | Midweek | W4 | 34m60ch to 35m 10ch | REPLAN COVID-19 | Batley to Morley Tunnel | Topographical |  |  |  |  |  |
| A65440 |  | Topographical Survey - Track Survey | 1d | 2020-03-27 A | 2020-03-27 A | A72630 | 100% |  |  | start on or after 2020-03-27 | W46 | Bridgeway | Batley | CANCELLED | On Track | Week 52 | Midweek | W4 | 34m60ch to 35m 10ch | REPLAN COVID-19 | Batley to Morley Tunnel | Topographical |  |  |  |  |  |
| A65510 |  | Prep For Safety - Handrail Installation | 1d | 2020-03-27 A | 2020-03-27 A | A72630 | 100% |  |  | start on or after 2020-03-27 |  | Bam Nuttall | Bridge 6&8 | CANCELLED | On Track | Week 52 | Midweek | W4 | 32m25ch - 35m10ch | REPLAN COVID-19 | Cottingley to Copley Hill | Prep For Safety |  |  |  |  |  |
| A65610 |  | Temporary Works Walkout | 1d | 2020-03-27 A | 2020-03-27 A | A72630 | 100% |  |  | start on or after 2020-03-27 |  | Bam Nuttall | Bridge 8 | CANCELLED | On Track | Week 52 | Midweek | W4 | 32m25ch - 35m10ch / 38m40ch - 41m70ch | REPLAN COVID-19 | Cottingley to Copley Hill | Walkout |  |  |  |  |  |
| A70810 |  | Track Dilapidation Survey | 1d | 2020-03-27 A | 2020-03-27 A | A72630 | 100% |  |  | start on or after 2020-03-27 | W46 | Design |  | CANCELLED | On Track | Week 52 | Midweek | W4 | 40m - 41m70ch | REPLAN COVID-19 | Morley Tunnel | Walkout |  |  |  |  |  |
|  | 2 | **Week 01** |  | 2019-11-30 | 2020-04-04 |  |  |  |  |  |  |  |  |  |  |  |  |  |  |  |  |  |  |  |  |  |  |
|  | 8 | **Weekend Works** |  | 2019-11-30 | 2020-04-04 |  |  |  |  |  |  |  |  |  |  |  |  |  |  |  |  |  |  |  |  |  |  |
|  | 5 | **Ravensthorpe to Copley Hill East (0040 Sat - 0510 Sat) 32m28ch - 41m40ch** |  | 2019-11-30 | 2020-04-04 |  |  |  |  |  |  |  |  |  |  |  |  |  |  |  |  |  |  |  |  |  |  |
| A58200 |  | Window Sample | 1d | 2019-11-30 A | 2019-11-30 A | A72630 | 100% | 2020-04-04 | 2020-04-04 | start on or after 2020-04-04 |  | Structural Soils | DONE - 36 | WS5413 | On Track | Week 01 | Weekend | W4 | 34m38 |  | Dewsbury to Batley | Window Sample |  |  |  |  |  |
| A58210 |  | Window Sample | 1d | 2019-11-30 A | 2019-11-30 A | A72630 | 100% | 2020-04-04 | 2020-04-04 | start on or after 2020-04-04 |  | Structural Soils | DONE - 36 | WS5414 | On Track | Week 01 | Weekend | W4 | 34m40 |  | Dewsbury to Batley | Window Sample |  |  |  |  |  |
| A62590 |  | Powerline crossings - PART 2 - MOVE | 1d | 2020-03-07 A | 2020-03-07 A | A72630 | 100% | 2020-04-04 | 2020-04-04 | start on or after 2020-04-04 |  | Keltbray | PART 2 |  | On Track | Week 01 | Weekend | W4 | 35m72 |  | MDL1/34 | OLE Initiatives |  |  |  |  |  |
| A60690 |  | 75mm Horizontal Core - DESCOPED | 1d | 2020-03-12 A | 2020-03-12 A | A72630 | 100% | 2020-04-04 | 2020-04-04 | start on or after 2020-04-04 |  | Bam Ritchies | PART 2 | MDL1/17/SC/01 - DESCOPED | On Track | Week 01 | Weekend | W4 | DESCOPED | Dewsbury | OB MDL1/17 - Ashworth Road | Coring | PLAN |  |  |  |  |
| A60700 |  | 75mm Horizontal Core - DESCOPED | 1d | 2020-03-12 A | 2020-03-12 A | A72630 | 100% | 2020-04-04 | 2020-04-04 | start on or after 2020-04-04 |  | Bam Ritchies | PART 2 | MDL1/17/SC/02 - DESCOPED | On Track | Week 01 | Weekend | W4 | DESCOPED | Dewsbury | OB MDL1/17 - Ashworth Road | Coring | PLAN |  |  |  |  |
| A60730 |  | 75mm Horizontal Core - DESCOPED | 1d | 2020-03-12 A | 2020-03-12 A | A72630 | 100% | 2020-04-04 | 2020-04-04 | start on or after 2020-04-04 |  | Bam Ritchies | PART 2 | MDL1/17/SC/05 - DESCOPED | On Track | Week 01 | Weekend | W4 | DESCOPED | Dewsbury | OB MDL1/17 - Ashworth Road | Coring | PLAN |  |  |  |  |
| A60780 |  | 75mm Inclined Core - DESCOPED | 1d | 2020-03-12 A | 2020-03-12 A | A72630 | 100% | 2020-04-04 | 2020-04-04 | start on or after 2020-04-04 | W46 | Bam Ritchies | PART 2 | MDL1/17/SC/10 - DESCOPED | On Track | Week 01 | Weekend | W4 | DESCOPED | Dewsbury | OB MDL1/17 - Ashworth Road | Coring | PLAN |  |  |  |  |
| A65740 |  | Walkout | 1d | 2020-04-04 A | 2020-04-04 A | A72630 | 100% |  |  | start on or after 2020-04-04 |  | Structural Soils |  |  | On Track | Week 01 | Weekend | W4 | 35m1254yds to 38m0628yds | A: Batley, E: Morley | Morley Tunnel (MDL1/36) | Walkout | ON | Olly Phillips | Olly Phillips |  |  |
| A65750 |  | Topographical Survey - Control Coordination | 1d | 2020-04-04 A | 2020-04-04 A | A72630 | 100% |  |  | start on or after 2020-04-04 |  | Bridgeway | Morley Tunnel |  | On Track | Week 01 | Weekend | W4 | 35m56ch - 38m29ch | Morley Station | Morley Tunnel (MDL1/36) | Topographical | ON | Darren Walsh | Darren Walsh |  |  |
| A72560 |  | OLE Setting Out - CANCELLED | 1d | 2020-04-04 A | 2020-04-04 A | A72630 | 100% |  |  | start on or after 2020-04-04 |  | Keltbray |  |  | On Track | Week 01 | Weekend | W4 | 38m – 40m | TBC | MDL1/34 | OLE Trial Hole | ON | Tom Wilson | Tom Wilson |  |  |
|  | 4 | **Week 03** |  | 2019-04-20 | 2020-04-18 |  |  |  |  |  |  |  |  |  |  |  |  |  |  |  |  |  |  |  |  |  |  |
|  | 8 | **Weekend Works** |  | 2019-04-20 | 2020-04-18 |  |  |  |  |  |  |  |  |  |  |  |  |  |  |  |  |  |  |  |  |  |  |
|  | 5 | **Ravensthorpe to Copley Hill East (0040 Sat - 0510 Sat) 32m28ch - 41m40ch** |  | 2019-04-20 | 2020-04-18 |  |  |  |  |  |  |  |  |  |  |  |  |  |  |  |  |  |  |  |  |  |  |
| A59380 |  | ABS - PROVISIONAL | 1d | 2019-04-20 A | 2019-04-20 A | A72630 | 100% | 2020-04-18 | 2020-04-18 | start on or after 2020-04-18 | W46 | Bam Ritchies | Done? | AB5561 | On Track | Week 03 | Weekend | W4 | 37m70 |  | Morley Tunnel | ABS |  |  | Jamie Hogg |  |  |
| A59390 |  | ABS - PROVISIONAL | 1d | 2019-04-20 A | 2019-04-20 A | A72630 | 100% | 2020-04-18 | 2020-04-18 | start on or after 2020-04-18 | W46 | Bam Ritchies | Done? | AB5562 | On Track | Week 03 | Weekend | W4 | 37m72 |  | Morley Tunnel | ABS |  |  | Jamie Hogg |  |  |
| A58810 |  | Window Sample | 1d | 2019-08-24 A | 2019-08-24 A | A72630 | 100% | 2020-04-18 | 2020-04-18 | start on or after 2020-04-18 | W46 | Structural Soils | DONE - 22 | WS5422 | On Track | Week 03 | Weekend | W4 | 35m79 |  | Batley to Morley Tunnel | Window Sample |  |  |  |  |  |
| A60740 |  | 75mm Horizontal Core - PART 2 | 1d | 2020-03-12 A | 2020-03-12 A | A72630 | 100% | 2020-04-18 | 2020-04-18 | start on or after 2020-04-18 |  | Structural Soils | PART 2 | MDL1/17/SC/06 - DESCOPED | On Track | Week 03 | Weekend | W4 | DESCOPED | Dewsbury | OB MDL1/17 - Ashworth Road | Coring | PLAN |  |  |  |  |
| A60750 |  | 75mm Horizontal Core - PART 2 | 1d | 2020-03-12 A | 2020-03-12 A | A72630 | 100% | 2020-04-18 | 2020-04-18 | start on or after 2020-04-18 |  | Structural Soils | PART 2 | MDL1/17/SC/07 - DESCOPED | On Track | Week 03 | Weekend | W4 | DESCOPED | Dewsbury | OB MDL1/17 - Ashworth Road | Coring | PLAN |  |  |  |  |
| A60760 |  | 75mm Horizontal Core - PART 2 | 1d | 2020-03-12 A | 2020-03-12 A | A72630 | 100% | 2020-04-18 | 2020-04-18 | start on or after 2020-04-18 |  | Structural Soils | PART 2 | MDL1/17/SC/08 - DESCOPED | On Track | Week 03 | Weekend | W4 | DESCOPED | Dewsbury | OB MDL1/17 - Ashworth Road | Coring | PLAN |  |  |  |  |
| A60960 |  | 75mm Horizontal Core - PROVISIONAL | 1d | 2020-04-18 A | 2020-04-18 A | A72630 | 100% |  |  | start on or after 2020-04-18 |  | Structural Soils | Dragon Bridge MDL1/47 | MDL1/47/SC/02 | On Track | Week 03 | Weekend | W4 | 41m14 | Dragon Bridge | OB MDL1/47 - Whitehall Road Dragon Bridge | Coring |  |  | Olly Phillips | A |  |
| A60970 |  | 75mm Inclined Core - PROVISIONAL | 1d | 2020-04-18 A | 2020-04-18 A | A72630 | 100% |  |  | start on or after 2020-04-18 |  | Structural Soils | Dragon Bridge MDL1/47 | MDL1/47/SC/03 | On Track | Week 03 | Weekend | W4 | 41m14 | Dragon Bridge | OB MDL1/47 - Whitehall Road Dragon Bridge | Coring |  |  | Olly Phillips | A |  |
| A61020 |  | 75mm Horizontal Core - PROVISIONAL | 1d | 2020-04-18 A | 2020-04-18 A | A72630 | 100% |  |  | start on or after 2020-04-18 |  | Structural Soils | Dragon Bridge MDL1/47 | MDL1/47/SC/08 | On Track | Week 03 | Weekend | W4 | 41m14 | Dragon Bridge | OB MDL1/47 - Whitehall Road Dragon Bridge | Coring |  |  | Olly Phillips | A |  |
| A61030 |  | 75mm Inclined Core - PROVISIONAL | 1d | 2020-04-18 A | 2020-04-18 A | A72630 | 100% |  |  | start on or after 2020-04-18 |  | Structural Soils | Dragon Bridge MDL1/47 | MDL1/47/SC/09 | On Track | Week 03 | Weekend | W4 | 41m14 | Dragon Bridge | OB MDL1/47 - Whitehall Road Dragon Bridge | Coring |  |  | Olly Phillips | A |  |
| A62190 |  | Trial Pit - PROVISIONAL | 1d | 2020-04-18 A | 2020-04-18 A | A72630 | 100% |  |  | start on or after 2020-04-18 |  | Structural Soils | Morley Tunnel | MT-TP-A:58550 UP | On Track | Week 03 | Weekend | W4 | 36m31 | Batley SB | Morley Tunnel (MDL1/36) | Trial Pit |  |  | Olly Phillips |  |  |
| A62200 |  | Trial Pit - PROVISIONAL | 1d | 2020-04-18 A | 2020-04-18 A | A72630 | 100% |  |  | start on or after 2020-04-18 | W46 | Structural Soils | Morley Tunnel | MT-TP-A:58550 DN | On Track | Week 03 | Weekend | W4 | 36m31 | Batley SB | Morley Tunnel (MDL1/36) | Trial Pit |  |  | Olly Phillips |  |  |
| A62210 |  | Trial Pit - PROVISIONAL | 1d | 2020-04-18 A | 2020-04-18 A | A72630 | 100% |  |  | start on or after 2020-04-18 |  | Structural Soils | Morley Tunnel | MT-TP-A:59000 UP | On Track | Week 03 | Weekend | W4 | 36m53 | Batley SB | Morley Tunnel (MDL1/36) | Trial Pit |  |  | Olly Phillips |  |  |
| A62220 |  | Trial Pit - PROVISIONAL | 1d | 2020-04-18 A | 2020-04-18 A | A72630 | 100% |  |  | start on or after 2020-04-18 |  | Structural Soils | Morley Tunnel | MT-TP-A:59000 DN | On Track | Week 03 | Weekend | W4 | 36m53 | Batley SB | Morley Tunnel (MDL1/36) | Trial Pit |  |  | Olly Phillips |  |  |
| A62230 |  | Trial Pit - PROVISIONAL | 1d | 2020-04-18 A | 2020-04-18 A | A72630 | 100% |  |  | start on or after 2020-04-18 | W44 | Structural Soils | Morley Tunnel | MT-TP-A:59450 UP | On Track | Week 03 | Weekend | W4 | 36m75 | Batley SB | Morley Tunnel (MDL1/36) | Trial Pit |  |  | Olly Phillips |  |  |
| A62240 |  | Trial Pit - PROVISIONAL | 1d | 2020-04-18 A | 2020-04-18 A | A72630 | 100% |  |  | start on or after 2020-04-18 | W44 | Structural Soils | Morley Tunnel | MT-TP-A:59450 DN | On Track | Week 03 | Weekend | W4 | 36m75 | Batley SB | Morley Tunnel (MDL1/36) | Trial Pit |  |  | Olly Phillips |  |  |
| A65530 |  | Topographical Survey - Control Coordination | 1d | 2020-04-18 A | 2020-04-18 A | A72630 | 100% |  |  | start on or after 2020-04-18 |  | Bridgeway | Morley Tunnel |  | On Track | Week 03 | Weekend | W4 | 35m 56ch To 38m 29ch | Morley Station | Dewsbury Station | Topographical |  |  | Darren Walsh |  |  |
| A71620 |  | TBC | 1d | 2020-04-18 A | 2020-04-18 A | A72630 | 100% |  |  | start on or after 2020-04-18 |  | Severn Partnership |  |  | On Track | Week 03 | Weekend | W3 | 33m - 35m20ch | Dewsbury Stn |  | Topographical |  |  | John Woods |  | On Track |
| A72720 |  | TBC | 1d | 2020-04-18 A | 2020-04-18 A | A72630 | 100% |  |  | start on or after 2020-04-18 |  | Severn Partnership |  |  | On Track | Week 03 | Weekend | W3 | 33m - 35m20ch | Dewsbury Stn |  | Topographical |  |  | John Woods |  | On Track |
| A73670 |  | OLE Setting Out - CANCELLED | 1d | 2020-04-18 A | 2020-04-18 A |  | 100% |  |  | start on or after 2020-04-18 |  | Keltbray |  |  | On Track | Week 03 | Weekend | W4 | 38m – 40m | TBC | MDL1/34 | OLE Trial Hole |  | Tom Wilson | Tom Wilson |  |  |
| A73680 |  | Prep For Safety - Scoping Works | 1d | 2020-04-18 A | 2020-04-18 A |  | 100% |  |  | start on or after 2020-04-18 |  | Bam Nuttall |  |  | On Track | Week 03 | Weekend | W4 | 32m28ch - 36m25ch | Batley | Dewsbury Station | Prep For Safety |  |  | Phil Henry |  |  |
| A73840 |  | Prep For Safety - Scoping | 1d | 2020-04-18 A | 2020-04-18 A |  | 100% |  |  | start on or after 2020-04-18 |  | Amey |  |  | On Track | Week 03 | Weekend | W3 | Full Mileage | Ravensthorpe |  | Prep For Safety |  |  | Gary Rhodes |  | On Track |
| A74520 |  | OLE Setting Out - CANCELLED | 1d | 2020-04-18 A | 2020-04-18 A |  | 100% |  |  | start on or after 2020-04-18 |  | Keltbray |  |  | On Track | Week 03 | Weekend | W4 | 38m – 40m | TBC | MDL1/34 | OLE Trial Hole |  | Tom Wilson | Tom Wilson |  |  |
| A74530 |  | OLE Setting Out - CANCELLED | 1d | 2020-04-18 A | 2020-04-18 A |  | 100% |  |  | start on or after 2020-04-18 |  | Keltbray |  |  | On Track | Week 03 | Weekend | W4 | 38m – 40m | TBC | MDL1/34 | OLE Trial Hole |  | Tom Wilson | Tom Wilson |  |  |

Notes:
- A60690: General Comments: 02/03 - High level cores requiring a scaffold tower. The wind was reaching / up to 44mph and this is unsafe conditions to be using the tower. Replaced with 3 / lower level cores
- A60700: General Comments: 02/03 - High level cores requiring a scaffold tower. The wind was reaching / up to 44mph and this is unsafe conditions to be using the tower. Replaced with 3 / lower level cores
- A60730: General Comments: 02/03 - High level cores requiring a scaffold tower. The wind was reaching / up to 44mph and this is unsafe conditions to be using the tower. Replaced with 3 / lower level cores
- A60740: General Comments: 02/03 - High level cores requiring a scaffold tower. The wind was reaching / up to 44mph and this is unsafe conditions to be using the tower. Replaced with 3 / lower level cores
- A60750: General Comments: 02/03 - High level cores requiring a scaffold tower. The wind was reaching / up to 44mph and this is unsafe conditions to be using the tower. Replaced with 3 / lower level cores
- A60760: General Comments: 02/03 - High level cores requiring a scaffold tower. The wind was reaching / up to 44mph and this is unsafe conditions to be using the tower. Replaced with 3 / lower level cores
- A62190: General Comments: 23/03 - No tools on site
- A62210: General Comments: 23/03 - No tools on site
- A62220: General Comments: 23/03 - No tools on site
- A62240: General Comments: 23/03 - No tools on site
- A73670: General Comments: 20/04 - Instruments weren't working for any of the teams.

| ID | WBS | Activity | Duration | Start | Finish | Predecessors | Complete | Planned start | Planned finish | Total float | Free float | Constraint | Company Responsible | Location / ELR | GI Reference Number | On-Track Off-Track | Week Number | Weekend/Midweek | Project | Mileage | Access Point | Responsibility | Location | Discipline | Text 1 | Teams | On/Off Track | Comment | Text 3 | Text 4 | Acty ID Record | Machines Required |
| --- | --- | --- | --- | --- | --- | --- | --- | --- | --- | --- | --- | --- | --- | --- | --- | --- | --- | --- | --- | --- | --- | --- | --- | --- | --- | --- | --- | --- | --- | --- | --- | --- |
|  | 6 | **Week 05** |  | 2019-04-22 | 2020-07-05 |  |  |  |  |  |  |  |  |  |  |  |  |  |  |  |  |  |  |  |  |  |  |  |  |  |  |  |
|  | 8 | **Weekend Works** |  | 2019-04-22 | 2020-07-05 |  |  |  |  |  |  |  |  |  |  |  |  |  |  |  |  |  |  |  |  |  |  |  |  |  |  |  |
|  | 5 | **Ravensthorpe to Copley Hill East (0040 Sat - 0510 Sat) 32m28ch - 41m40ch** |  | 2019-04-22 | 2020-07-05 |  |  |  |  |  |  |  |  |  |  |  |  |  |  |  |  |  |  |  |  |  |  |  |  |  |  |  |
| A59010 |  | ABS | 1d | 2019-04-22 A | 2019-04-22 A | A72630 | 100% | 2020-05-02 | 2020-05-02 |  |  | start on or after 2020-05-02 | Bam Ritchies | Done? | AB5500 | On Track | Week 05 | Weekend | W4 | 36m29 | Batley SB | Jamie Hogg | Morley Tunnel | ABS |  |  |  |  |  |  |  |  |
| A59020 |  | ABS | 1d | 2019-04-22 A | 2019-04-22 A | A72630 | 100% | 2020-05-02 | 2020-05-02 |  |  | start on or after 2020-05-02 | Bam Ritchies | Done? | AB5501 | On Track | Week 05 | Weekend | W4 | 36m31 | Batley SB | Jamie Hogg | Morley Tunnel | ABS |  |  |  |  |  |  |  |  |
| A59030 |  | ABS | 1d | 2019-04-22 A | 2019-04-22 A | A72630 | 100% | 2020-05-02 | 2020-05-02 |  |  | start on or after 2020-05-02 | Bam Ritchies | Done? | AB5502 | On Track | Week 05 | Weekend | W4 | 36m33 | Batley SB | Jamie Hogg | Morley Tunnel | ABS |  |  |  |  |  |  |  |  |
| A59060 |  | ABS | 1d | 2019-04-22 A | 2019-04-22 A | A72630 | 100% | 2020-05-02 | 2020-05-02 |  |  | start on or after 2020-05-02 | Bam Ritchies | Done? | AB5505 | On Track | Week 05 | Weekend | W4 | 36m39 | Batley SB | Jamie Hogg | Morley Tunnel | ABS | W44 |  |  |  |  |  |  |  |
| A59070 |  | ABS | 1d | 2019-04-22 A | 2019-04-22 A | A72630 | 100% | 2020-05-02 | 2020-05-02 |  |  | start on or after 2020-05-02 | Bam Ritchies | Done? | AB5506 | On Track | Week 05 | Weekend | W4 | 36m41 | Batley SB | Jamie Hogg | Morley Tunnel | ABS | W44 |  |  |  |  |  |  |  |
| A67880 |  | ABS | 1d | 2019-04-22 A | 2019-04-22 A | A72630 | 100% | 2020-05-02 | 2020-05-02 |  |  | start on or after 2020-05-02 | Bam Ritchies | 2m Scheduled Depth | AB5504 | On Track | Week 05 | Weekend | W4 | 36m35ch | Batley | Jamie Hogg | OB MDL1/29 - Soothill Lane | ABS |  |  |  |  |  |  |  |  |
| A62610 |  | Powerline crossings - PART 2 | 1d | 2020-03-07 A | 2020-03-07 A | A72630 | 100% | 2020-05-02 | 2020-05-02 |  |  | start on or after 2020-05-02 | Keltbray | PART 2 |  | On Track | Week 05 | Weekend | W4 | 36m5 |  |  | East of MDL1/35 | OLE Initiatives |  |  |  |  |  |  |  |  |
| A59480 |  | ABS | 1d | 2020-05-02 A | 2020-05-02 A | A72630 | 100% |  |  |  |  | start on or after 2020-05-02 | Bam Ritchies |  | AB5578 | On Track | Week 05 | Weekend | W4 | 39m50ch - 41m60ch | Cottingley | Jamie Hogg | Cottingley Station | ABS | W46 |  |  |  |  |  |  |  |
| A59490 |  | ABS | 1d | 2020-05-02 A | 2020-05-02 A | A72630 | 100% |  |  |  |  | start on or after 2020-05-02 | Bam Ritchies |  | AB5579 | On Track | Week 05 | Weekend | W4 | 39m50ch - 41m60ch | Cottingley | Jamie Hogg | Cottingley Station | ABS | W46 |  |  |  |  |  |  |  |
| A59520 |  | ABS | 1d | 2020-05-02 A | 2020-05-02 A | A72630 | 100% |  |  |  |  | start on or after 2020-05-02 | Bam Ritchies |  | AB5582 | On Track | Week 05 | Weekend | W4 | 39m50ch - 41m60ch | Cottingley | Jamie Hogg | Cottingley to Copley Hill | ABS |  |  |  |  |  |  |  |  |
| A60990 |  | 75mm Horizontal Core | 1d | 2020-05-02 A | 2020-05-02 A | A72630 | 100% |  |  |  |  | start on or after 2020-05-02 | Structural Soils |  | MDL1/47/SC/05 | On Track | Week 05 | Weekend | W4 | 41m14 | Dragon Bridge | Olly Phillips | OB MDL1/47 - Whitehall Road Dragon Bridge | Coring |  | A |  |  |  |  |  |  |
| A61000 |  | 75mm Inclined Core | 1d | 2020-05-02 A | 2020-05-02 A | A72630 | 100% |  |  |  |  | start on or after 2020-05-02 | Structural Soils |  | MDL1/47/SC/06 | On Track | Week 05 | Weekend | W4 | 41m14 | Dragon Bridge | Olly Phillips | OB MDL1/47 - Whitehall Road Dragon Bridge | Coring |  | A |  |  |  |  |  |  |
| A61050 |  | 75mm Horizontal Core | 1d | 2020-05-02 A | 2020-05-02 A | A72630 | 100% |  |  |  |  | start on or after 2020-05-02 | Structural Soils |  | MDL1/47/SC/11 | On Track | Week 05 | Weekend | W4 | 41m14 | Dragon Bridge | Olly Phillips | OB MDL1/47 - Whitehall Road Dragon Bridge | Coring |  | A |  |  |  |  |  |  |
| A61060 |  | 75mm Inclined Core | 1d | 2020-05-02 A | 2020-05-02 A | A72630 | 100% |  |  |  |  | start on or after 2020-05-02 | Structural Soils |  | MDL1/47/SC/12 | On Track | Week 05 | Weekend | W4 | 41m14 | Dragon Bridge | Olly Phillips | OB MDL1/47 - Whitehall Road Dragon Bridge | Coring |  | A |  |  |  |  |  |  |
| A62410 |  | Existing Services Survey / GPR | 1d | 2020-05-02 A | 2020-05-02 A | A72630 | 100% |  |  |  |  | start on or after 2020-05-02 | RSK |  | COMPLETE | On Track | Week 05 | Weekend | W4 | 33m60 |  | Olly Phillips | Dewsbury Station | GPR |  |  |  |  |  |  |  |  |
| A67210 |  | Coring | 1d | 2020-05-02 A | 2020-05-02 A | A72630 | 100% |  |  |  |  | start on or after 2020-05-02 | Bam Ritchies | MDL1/33 Disused Abutment | MDL1/33/SC/01 | On Track | Week 05 | Weekend | W4 | 35m40ch - 35m70ch | Batley | Jamie Hogg | OB MDL1/47 - Whitehall Road Dragon Bridge | Coring |  |  |  |  |  |  |  |  |
| A67220 |  | Coring | 1d | 2020-05-02 A | 2020-05-02 A | A72630 | 100% |  |  |  |  | start on or after 2020-05-02 | Bam Ritchies | MDL1/33 Disused Abutment | MDL1/33/SC/02 | On Track | Week 05 | Weekend | W4 | 35m40ch - 35m70ch | Batley | Jamie Hogg | OB MDL1/47 - Whitehall Road Dragon Bridge | Coring |  |  |  |  |  |  |  |  |
| A67230 |  | Coring | 1d | 2020-05-02 A | 2020-05-02 A | A72630 | 100% |  |  |  |  | start on or after 2020-05-02 | Bam Ritchies | MDL1/33 Disused Abutment | MDL1/33/SC/03 | On Track | Week 05 | Weekend | W4 | 35m40ch - 35m70ch | Batley | Jamie Hogg | OB MDL1/47 - Whitehall Road Dragon Bridge | Coring |  |  |  |  |  |  |  |  |
| A72700 |  | Topographical Survey - Levelling - 86% | 1d | 2020-05-02 A | 2020-05-02 A | A72630 | 100% |  |  |  |  | start on or after 2020-05-02 | Severn Partnership |  |  | On Track | Week 05 | Weekend | W3 | 33m - 35m20ch | Dewsbury Stn | John Woods |  | Topographical |  |  | On Track |  |  |  |  |  |
| A72730 |  | Topographical Survey - Traversing - 0% | 1d | 2020-05-02 A | 2020-05-02 A | A72630 | 100% |  |  |  |  | start on or after 2020-05-02 | Severn Partnership |  | NR MTT CLASH | On Track | Week 05 | Weekend | W3 | 33m - 35m20ch | Dewsbury Stn | John Woods |  | Topographical |  |  | On Track |  |  |  |  |  |
| A73690 |  | Topographical Survey - Control Coordination | 1d | 2020-05-02 A | 2020-05-02 A |  | 100% |  |  |  |  | start on or after 2020-05-02 | Bridgeway |  |  | On Track | Week 05 | Weekend | W4 | 34m60ch to 35m 10ch | Morley | Darren Walsh | Dewsbury Station | Topographical |  |  |  |  |  |  |  |  |
| A73700 |  | Topographical Survey - Control Coordination | 1d | 2020-05-02 A | 2020-05-02 A |  | 100% |  |  |  |  | start on or after 2020-05-02 | Bridgeway |  |  | On Track | Week 05 | Weekend | W4 | 34m60ch to 35m 10ch | Morley | Darren Walsh | Dewsbury Station | Topographical |  |  |  |  |  |  |  |  |
| A73710 |  | Surveying Trial Holes | 1d | 2020-05-02 A | 2020-05-02 A |  | 100% |  |  |  |  | start on or after 2020-05-02 | Structural Soils |  |  | On Track | Week 05 | Weekend | W4 | 33m1240yds - 34m342yds | Dewsbury Stn | Olly Phillips | Morley Tunnel (MDL1/36) | Walkout |  |  |  |  |  |  |  |  |
| A74540 |  | OLE Setting Out - 6X LOCATIONS | 1d | 2020-05-02 A | 2020-05-02 A |  | 100% |  |  |  |  | start on or after 2020-05-02 | Keltbray |  |  | On Track | Week 05 | Weekend | W4 | 38m – 40m | Morley/Cottingley | Tom Wilson | MDL1/34 | OLE Setting Out |  |  |  | Tom Wilson |  |  |  |  |
| A74550 |  | OLE Setting Out - 6X LOCATIONS | 1d | 2020-05-02 A | 2020-05-02 A |  | 100% |  |  |  |  | start on or after 2020-05-02 | Keltbray |  |  | On Track | Week 05 | Weekend | W4 | 38m – 40m | Morley/Cottingley | Tom Wilson | MDL1/34 | OLE Setting Out |  |  |  | Tom Wilson |  |  |  |  |
| A74560 |  | OLE Setting Out - 5X LOCATIONS | 1d | 2020-05-02 A | 2020-05-02 A |  | 100% |  |  |  |  | start on or after 2020-05-02 | Keltbray |  |  | On Track | Week 05 | Weekend | W4 | 38m – 40m | Morley/Cottingley | Tom Wilson | MDL1/34 | OLE Setting Out |  |  |  | Tom Wilson |  |  |  |  |
| A75380 |  | ABS Walkout | 1d | 2020-05-02 A | 2020-05-02 A |  | 100% |  |  |  |  | start on or after 2020-05-02 | Bam Ritchies |  |  | On Track | Week 05 | Weekend | W4 | Full Mileage | Various | Jamie Hogg | Cottingley to Copley Hill | Walkout |  |  |  |  |  |  |  |  |
| A75570 |  | Drainage Walkout/Site Familiarisation | 1d | 2020-05-02 A | 2020-05-02 A |  | 100% |  |  |  |  | start on or after 2020-05-02 | Lanes4Drains |  |  | On Track | Week 05 | Weekend | W4 | 34m30ch - 34m40ch | Dewsbury/Batley | Ben Cantrell | Morley Tunnel (MDL1/36) | Walkout |  |  |  |  |  |  |  |  |
| A75650 |  | Drainage Walkout/Site Familiarisation | 1d | 2020-05-02 A | 2020-05-02 A |  | 100% |  |  |  |  | start on or after 2020-05-02 | Lanes4Drains |  |  | On Track | Week 05 | Weekend | W4 | 35m00ch - 35m20ch | Batley | Ben Cantrell | Morley Tunnel (MDL1/36) | Walkout |  |  |  |  |  |  |  |  |
| A75940 |  | ABS | 1d | 2020-05-02 A | 2020-05-02 A | A72630 | 100% |  |  |  |  | start on or after 2020-05-02 | Bam Ritchies |  | AB5583 | On Track | Week 05 | Weekend | W4 | 39m50ch - 41m60ch | Cottingley | Jamie Hogg | Cottingley to Copley Hill | ABS |  |  |  |  |  |  |  |  |
| TRA1_15662 |  | Trial Pit - RE-DIG - TBC | 1d | 2020-05-02 A | 2020-05-02 A |  | 100% |  |  |  |  | start on or after 2020-05-02 | Structural Soils | Morley Tunnel | MT-TP-A:61400-UP | On Track | Week 05 | Weekend | W5 | 35m1254yds - 38m618yds | Morley Station | Olly Phillips |  | Trial Pit | 1 Possession |  | On Track |  | 2 Morley | Topo | TRA1_15302 |  |
| TRA1_15672 |  | Trial Pit - RE-DIG - TBC | 1d | 2020-05-02 A | 2020-05-02 A |  | 100% |  |  |  |  | start on or after 2020-05-02 | Structural Soils | Morley Tunnel | MT-TP-A:61450-UP | On Track | Week 05 | Weekend | W5 | 35m1254yds - 38m618yds | Morley Station | Olly Phillips |  | Trial Pit | 1 Possession |  | On Track |  | 2 Morley | Topo | TRA1_15302 |  |
| TRA1_15682 |  | Trial Pit - RE-DIG - TBC | 1d | 2020-05-02 A | 2020-05-02 A |  | 100% |  |  |  |  | start on or after 2020-05-02 | Structural Soils | Morley Tunnel | MT-TP-A:61520-UP | On Track | Week 05 | Weekend | W5 | 35m1254yds - 38m618yds | Morley Station | Olly Phillips |  | Trial Pit | 1 Possession |  | On Track |  | 2 Morley | Topo | TRA1_15302 |  |
| TRA1_15692 |  | GPR | 1d | 2020-05-02 A | 2020-05-02 A |  | 100% |  |  |  |  | start on or after 2020-05-02 | Structural Soils | Dewsbury Station |  | On Track | Week 05 | Weekend | W5 | 33m1080yds - 33m1376yds | Dewsbury Station | Olly Phillips |  | GPR | 1 Possession |  | On Track |  | 2 Morley | Topo | TRA1_15302 |  |
| A74470 |  | Prep For Safety - Scoping | 1d | 2020-06-22 A | 2020-06-22 A |  | 100% |  |  |  |  | start on or after 2020-05-02 | Amey |  |  | On Track | Week 05 | Weekend | W3 | Full Mileage | Various | Gary Rhodes |  | Prep For Safety |  |  | On Track |  |  |  |  |  |
| TRA1_15652 |  | Trial Pit - RE-DIG - TBC | 1d | 2020-07-05 | 2020-07-05 |  |  |  |  | 84d | 0d | start on or after 2020-05-02 | Structural Soils | Morley Tunnel | MT-TP-A:61350-UP | On Track |  | Weekend | W5 | 35m1254yds - 38m618yds | Morley Station | Olly Phillips |  | Trial Pit | 1 Possession |  | On Track |  | 2 Morley | Topo | TRA1_15302 | EH |

Notes:
- A59490: General Comments: 17/04 - Works cancelled week 3 due to poor planning process
- A59520: General Comments: 17/04 - Works cancelled week 3 due to poor planning process
- A62410: General Comments: ? / 07/04 - Cancelled / midweek 52 due to COVID-19, planned for week, 5, 7 & 9.
- A73710: General Comments: 23/03 - No tools on site
- A75380: General Comments: 17/04 - Works cancelled week 3 due to poor planning process
- A75940: General Comments: 17/04 - Works cancelled week 3 due to poor planning process

| ID | WBS | Activity | Duration | Start | Finish | Predecessors | Complete | Planned start | Planned finish | Constraint | Company Responsible | Location / ELR | On-Track Off-Track | Week Number | Weekend/Midweek | Project | Mileage | Location | Discipline | GI Reference Number | Access Point | Responsibility | Machines Required | On/Off Track | Comment |
| --- | --- | --- | --- | --- | --- | --- | --- | --- | --- | --- | --- | --- | --- | --- | --- | --- | --- | --- | --- | --- | --- | --- | --- | --- | --- |
|  | 7 | **Midweek Works** |  | 2019-11-16 | 2020-05-08 |  |  |  |  |  |  |  |  |  |  |  |  |  |  |  |  |  |  |  |  |
|  | 7 | **Mon - Ravensthorpe to Copley (2350 - 0545) 38m28ch - 185m25ch** |  | 2020-03-07 | 2020-05-05 |  |  |  |  |  |  |  |  |  |  |  |  |  |  |  |  |  |  |  |  |
| A62600 |  | Powerline crossings - PART 2 | 1d | 2020-03-07 A | 2020-03-07 A | A72630 | 100% | 2020-05-05 | 2020-05-05 | start on or after 2020-05-05 | Keltbray | PART 2 | On Track | Week 05 | Midweek | W4 | 36m0 | MDL1/35 | OLE Initiatives |  |  |  |  |  |  |
| A62620 |  | Powerline crossings - PART 2 | 1d | 2020-03-07 A | 2020-03-07 A | A72630 | 100% | 2020-05-05 | 2020-05-05 | start on or after 2020-05-05 | Keltbray | PART 2 | On Track | Week 05 | Midweek | W4 | 38m20 | West of MDL1/37A | OLE Initiatives |  |  |  |  |  |  |
| A60110 |  | ABS | 1d | 2020-05-05 A | 2020-05-05 A | A72630 | 100% |  |  | start on or after 2020-05-05 | Bam Ritchies | NEW | On Track | Week 05 | Midweek | W4 | 41m32ch - 41m70ch | Cottingley to Copley Hill | ABS | AB5631 | Copley Hill | Jamie Hogg |  |  |  |
| A60120 |  | ABS | 1d | 2020-05-05 A | 2020-05-05 A | A72630 | 100% |  |  | start on or after 2020-05-05 | Bam Ritchies | NEW | On Track | Week 05 | Midweek | W4 | 41m32ch - 41m70ch | Cottingley to Copley Hill | ABS | AB5632 | Copley Hill | Jamie Hogg |  |  |  |
| A60130 |  | ABS | 1d | 2020-05-05 A | 2020-05-05 A | A72630 | 100% |  |  | start on or after 2020-05-05 | Bam Ritchies | NEW | On Track | Week 05 | Midweek | W4 | 41m10ch - 41m70ch | Cottingley to Copley Hill | ABS | AB5633 | Copley Hill | Jamie Hogg |  |  |  |
| A60140 |  | ABS | 1d | 2020-05-05 A | 2020-05-05 A | A72630 | 100% |  |  | start on or after 2020-05-05 | Bam Ritchies | NEW | On Track | Week 05 | Midweek | W4 | 41m10ch - 41m70ch | Cottingley to Copley Hill | ABS | AB5634 | Copley Hill | Jamie Hogg |  |  |  |
| A60150 |  | ABS | 1d | 2020-05-05 A | 2020-05-05 A | A72630 | 100% |  |  | start on or after 2020-05-05 | Bam Ritchies | NEW | On Track | Week 05 | Midweek | W4 | 41m10ch - 41m70ch | Cottingley to Copley Hill | ABS | AB5635 | Copley Hill | Jamie Hogg |  |  |  |
| A60160 |  | ABS | 1d | 2020-05-05 A | 2020-05-05 A | A72630 | 100% |  |  | start on or after 2020-05-05 | Bam Ritchies | NEW | On Track | Week 05 | Midweek | W4 | 41m10ch - 41m70ch | Cottingley to Copley Hill | ABS | AB5636 | Copley Hill | Jamie Hogg |  |  |  |
| A61240 |  | Trial Hole | 1d | 2020-05-05 A | 2020-05-05 A | A72630 | 100% |  |  | start on or after 2020-05-05 | Structural Soils | Dragon Bridge MDL1/47 | On Track | Week 05 | Midweek | W4 | 41m14 | OB MDL1/47 - Whitehall Road Dragon Bridge | Trial Pit | MDL1/47/TH/01 | Dragon Bridge | Olly Phillips | PLAN |  |  |
| A61250 |  | Trial Hole | 1d | 2020-05-05 A | 2020-05-05 A | A72630 | 100% |  |  | start on or after 2020-05-05 | Structural Soils | Dragon Bridge MDL1/47 | On Track | Week 05 | Midweek | W4 | 41m14 | OB MDL1/47 - Whitehall Road Dragon Bridge | Trial Pit | MDL1/47/TH/02 | Dragon Bridge | Olly Phillips | PLAN |  |  |
| A61260 |  | Trial Hole | 1d | 2020-05-05 A | 2020-05-05 A | A72630 | 100% |  |  | start on or after 2020-05-05 | Structural Soils | Dragon Bridge MDL1/47 | On Track | Week 05 | Midweek | W4 | 41m14 | OB MDL1/47 - Whitehall Road Dragon Bridge | Trial Pit | MDL1/47/TH/03 | Dragon Bridge | Olly Phillips | PLAN |  |  |
| A61270 |  | Trial Hole | 1d | 2020-05-05 A | 2020-05-05 A | A72630 | 100% |  |  | start on or after 2020-05-05 | Structural Soils | Dragon Bridge MDL1/47 | On Track | Week 05 | Midweek | W4 | 41m14 | OB MDL1/47 - Whitehall Road Dragon Bridge | Trial Pit | MDL1/47/TH/04 | Dragon Bridge | Olly Phillips | PLAN |  |  |
| A66440 |  | Infill Control & Chain Out | 1d | 2020-05-05 A | 2020-05-05 A | A72630 | 100% |  |  | start on or after 2020-05-05 | SEP | MDL1 | On Track | Week 05 | Midweek | W4 | 41m00ch - 42m20ch | Morley Tunnel (MDL1/36) | Topographical |  |  | Matt Levine |  |  |  |
| A66450 |  | Infill Control & Chain Out | 1d | 2020-05-05 A | 2020-05-05 A | A72630 | 100% |  |  | start on or after 2020-05-05 | SEP | MDL1 | On Track | Week 05 | Midweek | W4 | 41m00ch - 42m20ch | Morley Tunnel (MDL1/36) | Topographical |  |  | Matt Levine |  |  |  |
| A66460 |  | Infill Control | 1d | 2020-05-05 A | 2020-05-05 A | A72630 | 100% |  |  | start on or after 2020-05-05 | SEP | MDL1 | On Track | Week 05 | Midweek | W4 | 41m00ch - 42m20ch | Morley Tunnel (MDL1/36) | Topographical |  |  | Matt Levine |  |  |  |
| A66470 |  | Infill Control | 1d | 2020-05-05 A | 2020-05-05 A | A72630 | 100% |  |  | start on or after 2020-05-05 | SEP | MDL1 | On Track | Week 05 | Midweek | W4 | 41m00ch - 42m20ch | Morley Tunnel (MDL1/36) | Topographical |  |  | Matt Levine |  |  |  |
| A66830 |  | Telecoms - Cable Route Survey - 50%: 41m00ch to 42m02ch | 1d | 2020-05-05 A | 2020-05-05 A | A72630 | 100% |  |  | start on or after 2020-05-05 | Amey | MDL1/DOL | On Track | Week 05 | Midweek | W4 | 41m00ch - 185m25ch | Morley Tunnel (MDL1/36) | Telecoms |  | Copley Hill JN | Mark Radnage |  |  |  |
| A67400 |  | Coring | 1d | 2020-05-05 A | 2020-05-05 A | A72630 | 100% |  |  | start on or after 2020-05-05 | Structural Soils | MDL1/41/B1 Retaining Wall | On Track | Week 05 | Midweek | W4 | 41m10ch - 41m20ch | OB MDL1/47 - Whitehall Road Dragon Bridge | Coring | MDL1/41/B1/SC/02 | Dragon Bridge | Olly Phillips | ON HOLD |  |  |
| A67420 |  | Coring | 1d | 2020-05-05 A | 2020-05-05 A | A72630 | 100% |  |  | start on or after 2020-05-05 | Structural Soils | MDL1/41/B1 Retaining Wall | On Track | Week 05 | Midweek | W4 | 41m10ch - 41m20ch | OB MDL1/47 - Whitehall Road Dragon Bridge | Coring | MDL1/41/B1/SC/04 | Dragon Bridge | Olly Phillips | ON HOLD |  |  |
| A67440 |  | Coring | 1d | 2020-05-05 A | 2020-05-05 A | A72630 | 100% |  |  | start on or after 2020-05-05 | Structural Soils | MDL1/41/B1 Retaining Wall | On Track | Week 05 | Midweek | W4 | 41m10ch - 41m20ch | OB MDL1/47 - Whitehall Road Dragon Bridge | Coring | MDL1/41/B1/SC/06 | Dragon Bridge | Olly Phillips | ON HOLD |  |  |
| A67460 |  | Coring | 1d | 2020-05-05 A | 2020-05-05 A | A72630 | 100% |  |  | start on or after 2020-05-05 | Structural Soils | MDL1/41/B1 Retaining Wall | On Track | Week 05 | Midweek | W4 | 41m10ch - 41m20ch | OB MDL1/47 - Whitehall Road Dragon Bridge | Coring | MDL1/41/B1/SC/08 | Dragon Bridge | Olly Phillips | ON HOLD |  |  |
| A67960 |  | ABS | 1d | 2020-05-05 A | 2020-05-05 A | A72630 | 100% |  |  | start on or after 2020-05-05 | Bam Ritchies | NEW | On Track | Week 05 | Midweek | W4 | 39m50ch - 40m00ch | OB MDL1/29 - Soothill Lane | ABS | AB5570 | Cottingley | Jamie Hogg |  |  |  |
| A67970 |  | ABS | 1d | 2020-05-05 A | 2020-05-05 A | A72630 | 100% |  |  | start on or after 2020-05-05 | Bam Ritchies | NEW | On Track | Week 05 | Midweek | W4 | 39m50ch - 40m00ch | OB MDL1/29 - Soothill Lane | ABS | AB5571 | Cottingley | Jamie Hogg |  |  |  |
| A70720 |  | Chain Out And Install - 0% | 1d | 2020-05-05 A | 2020-05-05 A | A72630 | 100% |  |  | start on or after 2020-05-05 | SEP | DOL | On Track | Week 05 | Midweek | W4 | 184m18ch - 185m20ch | Morley Tunnel (MDL1/36) | Topographical |  | TBC | Matt Levine |  |  |  |
| A74480 |  | Prep For Safety - Scoping | 1d | 2020-05-05 A | 2020-05-05 A |  | 100% |  |  | start on or after 2020-05-05 | Amey |  | On Track | Week 05 | Midweek | W3 | Full Mileage |  | Prep For Safety |  | Various | Gary Rhodes |  | On Track |  |
| A74600 |  | OLE Setting Out x6 | 1d | 2020-05-05 A | 2020-05-05 A |  | 100% |  |  | start on or after 2020-05-05 | Keltbray |  | On Track | Week 05 | Midweek | W4 | 38m – 40m | MDL1/34 | OLE Setting Out | REF TBC | Morley/Cottingley | Tom Wilson |  |  | Tom Wilson |
| A74610 |  | OLE Setting Out x6 | 1d | 2020-05-05 A | 2020-05-05 A |  | 100% |  |  | start on or after 2020-05-05 | Keltbray |  | On Track | Week 05 | Midweek | W4 | 38m – 40m | MDL1/34 | OLE Setting Out | REF TBC | Morley/Cottingley | Tom Wilson |  |  | Tom Wilson |
| A74620 |  | OLE Setting Out x6 | 1d | 2020-05-05 A | 2020-05-05 A |  | 100% |  |  | start on or after 2020-05-05 | Keltbray |  | On Track | Week 05 | Midweek | W4 | 38m – 40m | MDL1/34 | OLE Setting Out | REF TBC | Morley/Cottingley | Tom Wilson |  |  | Tom Wilson |
| A75580 |  | Drainage Walkout/Site Familiarisation - 0% | 1d | 2020-05-05 A | 2020-05-05 A |  | 100% |  |  | start on or after 2020-05-05 | Lanes4Drains |  | On Track | Week 05 | Midweek | W4 | 42m00ch - 42m20ch | Morley Tunnel (MDL1/36) | Walkout |  | Copley HIll Jn | Ben Cantrell |  |  |  |

Notes:
- A60110: General Comments: 23/03 - Cancelled by Jamie Hogg for midweek 52, resource prioritised to W5 / works. To be replanned
- A60140: General Comments: 17/04 - Works cancelled week 3 due to poor planning process
- A60160: General Comments: 17/04 - Works cancelled week 3 due to poor planning process

| ID | WBS | Activity | Duration | Start | Finish | Predecessors | Complete | Planned start | Planned finish | Constraint | Text 1 | Company Responsible | Location / ELR | GI Reference Number | On-Track Off-Track | Week Number | Weekend/Midweek | Project | Mileage | Location | Discipline | Access Point | Responsibility | Machines Required | Comment | On/Off Track | Teams |
| --- | --- | --- | --- | --- | --- | --- | --- | --- | --- | --- | --- | --- | --- | --- | --- | --- | --- | --- | --- | --- | --- | --- | --- | --- | --- | --- | --- |
|  | 1 | **Tues - Ravensthorpe to Copley (2350 - 0545) 38m28ch - 40m00ch & 41m32ch - 185m25ch** |  | 2019-11-16 | 2020-05-06 |  |  |  |  |  |  |  |  |  |  |  |  |  |  |  |  |  |  |  |  |  |  |
| A58030 |  | Window Sample | 1d | 2019-11-16 A | 2019-11-16 A | A72630 | 100% | 2020-05-06 | 2020-05-06 | start on or after 2020-05-06 | W44 | Structural Soils | DONE - 34 | WS5408 | On Track | Week 05 | Midweek | W4 | 33m72 | Dewsbury Station | Window Sample |  |  |  |  |  |  |
| A62630 |  | OLE Setting Out | 1d | 2020-03-07 A | 2020-03-07 A | A72630 | 100% | 2020-05-06 | 2020-05-06 | start on or after 2020-05-06 |  | Keltbray | PART 2 |  | On Track | Week 05 | Midweek | W4 | 39m0 | West of MDL1/38 | OLE Initiatives |  |  |  |  |  |  |
| A60040 |  | ABS | 1d | 2020-05-06 A | 2020-05-06 A | A72630 | 100% |  |  | start on or after 2020-05-06 |  | Bam Ritchies | NEW | AB5625 | On Track | Week 05 | Midweek | W4 | 41m10ch - 41m70ch | Cottingley to Copley Hill | ABS | Copley Hill | Jamie Hogg |  |  |  |  |
| A60050 |  | ABS | 1d | 2020-05-06 A | 2020-05-06 A | A72630 | 100% |  |  | start on or after 2020-05-06 |  | Bam Ritchies | NEW | AB5626 | On Track | Week 05 | Midweek | W4 | 41m10ch - 41m70ch | Cottingley to Copley Hill | ABS | Copley Hill | Jamie Hogg |  |  |  |  |
| A60060 |  | ABS | 1d | 2020-05-06 A | 2020-05-06 A | A72630 | 100% |  |  | start on or after 2020-05-06 |  | Bam Ritchies | NEW | AB5627 | On Track | Week 05 | Midweek | W4 | 41m10ch - 41m70ch | Cottingley to Copley Hill | ABS | Copley Hill | Jamie Hogg |  |  |  |  |
| A60080 |  | ABS | 1d | 2020-05-06 A | 2020-05-06 A | A72630 | 100% |  |  | start on or after 2020-05-06 |  | Bam Ritchies | NEW | AB5629 | On Track | Week 05 | Midweek | W4 | 41m32ch - 41m70ch | Cottingley to Copley Hill | ABS | Copley Hill | Jamie Hogg |  |  |  |  |
| A60180 |  | Trial Pit | 1d | 2020-05-06 A | 2020-05-06 A | A72630 | 100% |  |  | start on or after 2020-05-06 |  | Structural Soils |  | TP5457 | On Track | Week 05 | Midweek | W4 | 41m66 | MDL1/52 Copley Hill | Trial Pit |  | Olly Phillips | ON |  |  |  |
| A60190 |  | Trial Pit | 1d | 2020-05-06 A | 2020-05-06 A | A72630 | 100% |  |  | start on or after 2020-05-06 |  | Structural Soils |  | TP5458 | On Track | Week 05 | Midweek | W4 | 41m66 | MDL1/52 Copley Hill | Trial Pit |  | Olly Phillips | ON |  |  |  |
| A66480 |  | Traverse & Topo - CANCELLED | 1d | 2020-05-06 A | 2020-05-06 A | A72630 | 100% |  |  | start on or after 2020-05-06 |  | SEP | DOL |  | On Track | Week 05 | Midweek | W4 | 184m18ch - 185m20ch | Morley Tunnel (MDL1/36) | Topographical |  | Matt Levine |  |  |  |  |
| A66490 |  | Infill Control & Level - CANCELLED | 1d | 2020-05-06 A | 2020-05-06 A | A72630 | 100% |  |  | start on or after 2020-05-06 |  | SEP | DOL |  | On Track | Week 05 | Midweek | W4 | 184m18ch - 185m20ch | Morley Tunnel (MDL1/36) | Topographical |  | Matt Levine |  |  |  |  |
| A66500 |  | Gedo Rails | 1d | 2020-05-06 A | 2020-05-06 A | A72630 | 100% |  |  | start on or after 2020-05-06 |  | SEP | DOL |  | On Track | Week 05 | Midweek | W4 | 184m18ch - 185m20ch | Morley Tunnel (MDL1/36) | Topographical |  | Matt Levine |  |  |  |  |
| A66510 |  | Traverse & Topo - CANCELLED | 1d | 2020-05-06 A | 2020-05-06 A | A72630 | 100% |  |  | start on or after 2020-05-06 |  | SEP | DOL |  | On Track | Week 05 | Midweek | W4 | 184m18ch - 185m20ch | Morley Tunnel (MDL1/36) | Topographical |  | Matt Levine |  |  |  |  |
| A67980 |  | ABS | 1d | 2020-05-06 A | 2020-05-06 A | A72630 | 100% |  |  | start on or after 2020-05-06 |  | Bam Ritchies | NEW | AB5572 | On Track | Week 05 | Midweek | W4 | 39m50ch - 40m00ch | OB MDL1/29 - Soothill Lane | ABS | Cottingley | Jamie Hogg |  |  |  |  |
| A67990 |  | ABS | 1d | 2020-05-06 A | 2020-05-06 A | A72630 | 100% |  |  | start on or after 2020-05-06 |  | Bam Ritchies | NEW | AB5574 | On Track | Week 05 | Midweek | W4 | 39m50ch - 40m00ch | OB MDL1/29 - Soothill Lane | ABS | Cottingley | Jamie Hogg |  |  |  |  |
| A70730 |  | Topo | 1d | 2020-05-06 A | 2020-05-06 A | A72630 | 100% |  |  | start on or after 2020-05-06 |  | SEP |  |  | On Track | Week 05 | Midweek | W4 | 39m40ch - 40m00ch | Morley Tunnel (MDL1/36) | Topographical | TBC | Matt Levine |  |  |  |  |
| A72780 |  | Visual Survey - CANCELLED | 1d | 2020-05-06 A | 2020-05-06 A | A72630 | 100% |  |  | start on or after 2020-05-06 | W46 | Amey |  |  | On Track | Week 05 | Midweek | W4 | TBC | Morley Tunnel | Walkout | TBC | Ema Cossu |  | Emanuela Cossu |  |  |
| A74490 |  | Prep For Safety - Scoping | 1d | 2020-05-06 A | 2020-05-06 A |  | 100% |  |  | start on or after 2020-05-06 |  | Amey |  |  | On Track | Week 05 | Midweek | W3 | Full Mileage |  | Prep For Safety | Various | Gary Rhodes |  |  | On Track |  |
| A74660 |  | OLE Setting Out x6 | 1d | 2020-05-06 A | 2020-05-06 A |  | 100% |  |  | start on or after 2020-05-06 |  | Keltbray |  | REF TBC | On Track | Week 05 | Midweek | W4 | 38m – 40m | MDL1/34 | OLE Setting Out | Morley/Cottingley | Tom Wilson |  | Tom Wilson |  |  |
| A74670 |  | OLE Setting Out x6 | 1d | 2020-05-06 A | 2020-05-06 A |  | 100% |  |  | start on or after 2020-05-06 |  | Keltbray |  | REF TBC | On Track | Week 05 | Midweek | W4 | 38m – 40m | MDL1/34 | OLE Setting Out | Morley/Cottingley | Tom Wilson |  | Tom Wilson |  |  |
| A75590 |  | Drainage Walkout/Site Familiarisation - CANCELLED | 1d | 2020-05-06 A | 2020-05-06 A |  | 100% |  |  | start on or after 2020-05-06 |  | Lanes4Drains |  |  | On Track | Week 05 | Midweek | W4 | 40m40ch - 40m60ch | Morley Tunnel (MDL1/36) | Walkout | Cottingley | Ben Cantrell |  |  |  |  |
| setting |  | OLE Setting Out x6 | 1d | 2020-05-06 A | 2020-05-06 A |  | 100% |  |  | start on or after 2020-05-06 |  | Keltbray |  | REF TBC | On Track | Week 05 | Midweek | W4 | 38m – 40m | MDL1/34 | OLE Setting Out | Morley/Cottingley | Tom Wilson |  | Tom Wilson |  |  |
|  | 2 | **Weds - Ravensthorpe to Copley (2350 - 0545) 38m28ch - 185m25ch** |  | 2020-05-07 | 2020-05-07 |  |  |  |  |  |  |  |  |  |  |  |  |  |  |  |  |  |  |  |  |  |  |
| A59450 |  | ABS | 1d | 2020-05-07 A | 2020-05-07 A | A72630 | 100% |  |  | start on or after 2020-05-07 | W46 | Bam Ritchies | NEW | AB5575 | On Track | Week 05 | Midweek | W4 | 39m50ch - 40m40ch | Morley to Cottingley | ABS | Cottingley | Jamie Hogg | TBC | Jamie Hogg |  | A |
| A59470 |  | ABS | 1d | 2020-05-07 A | 2020-05-07 A | A72630 | 100% |  |  | start on or after 2020-05-07 | W46 | Bam Ritchies | NEW | AB5577 | On Track | Week 05 | Midweek | W4 | 39m50ch - 40m40ch | Cottingley Station | ABS | Cottingley | Jamie Hogg | TBC | Jamie Hogg |  | A |
| A59530 |  | ABS - LOCATION ON HOLD | 1d | 2020-05-07 A | 2020-05-07 A | A72630 | 100% |  |  | start on or after 2020-05-07 | W46 | Bam Ritchies | 2m Scheduled Depth | AB5583 | On Track | Week 05 | Weekend | W4 | 40m11 | Cottingley to Copley Hill | ABS |  | Jamie Hogg |  |  |  |  |
| A59540 |  | ABS | 1d | 2020-05-07 A | 2020-05-07 A | A72630 | 100% |  |  | start on or after 2020-05-07 | W46 | Bam Ritchies | NEW | AB5584 | On Track | Week 05 | Weekend | W4 | 39m50ch - 41m60ch | Cottingley to Copley Hill | ABS | Cottingley | Jamie Hogg |  |  |  |  |
| A66520 |  | Topo/Trav/Level - CANCELLED | 1d | 2020-05-07 A | 2020-05-07 A | A72630 | 100% |  |  | start on or after 2020-05-07 |  | SEP | MDL1 |  | On Track | Week 05 | Midweek | W4 | 41m00ch - 42m20ch | Morley Tunnel (MDL1/36) | Topographical |  | Matt Levine |  |  |  |  |
| A66530 |  | Topo/Trav/Level - CANCELLED | 1d | 2020-05-07 A | 2020-05-07 A | A72630 | 100% |  |  | start on or after 2020-05-07 |  | SEP | MDL1 |  | On Track | Week 05 | Midweek | W4 | 41m00ch - 42m20ch | Morley Tunnel (MDL1/36) | Topographical |  | Matt Levine |  |  |  |  |
| A66540 |  | Gedo Rails - CANCELLED | 1d | 2020-05-07 A | 2020-05-07 A | A72630 | 100% |  |  | start on or after 2020-05-07 |  | SEP | MDL1 |  | On Track | Week 05 | Midweek | W4 | 41m00ch - 42m20ch | Morley Tunnel (MDL1/36) | Topographical |  | Matt Levine |  |  |  |  |
| A66550 |  | IMS - CANCELLED | 1d | 2020-05-07 A | 2020-05-07 A | A72630 | 100% |  |  | start on or after 2020-05-07 |  | SEP | DOL |  | On Track | Week 05 | Midweek | W4 | 184m18ch - 185m20ch | Morley Tunnel (MDL1/36) | Topographical |  | Matt Levine |  |  |  |  |
| A70740 |  | Topo & OLE - CANCELLED | 1d | 2020-05-07 A | 2020-05-07 A | A72630 | 100% |  |  | start on or after 2020-05-07 |  | SEP | DOL |  | On Track | Week 05 | Midweek | W4 | 184m18ch - 185m20ch | Morley Tunnel (MDL1/36) | Topographical |  | Matt Levine |  |  |  |  |
| A74500 |  | Prep For Safety - Scoping - CANCELLED | 1d | 2020-05-07 A | 2020-05-07 A |  | 100% |  |  | start on or after 2020-05-07 |  | Amey |  |  | On Track | Week 05 | Midweek | W3 | Full Mileage |  | Prep For Safety | Various | Gary Rhodes |  |  | On Track |  |
| A74690 |  | OLE Setting Out | 1d | 2020-05-07 A | 2020-05-07 A |  | 100% |  |  | start on or after 2020-05-07 |  | Keltbray |  | REF TBC | On Track | Week 05 | Midweek | W4 | 38m – 40m | MDL1/34 | OLE Setting Out | Morley/Cottingley | Tom Wilson |  | Tom Wilson |  |  |
| A74700 |  | OLE Setting Out | 1d | 2020-05-07 A | 2020-05-07 A |  | 100% |  |  | start on or after 2020-05-07 |  | Keltbray |  | REF TBC | On Track | Week 05 | Midweek | W4 | 38m – 40m | MDL1/34 | OLE Setting Out | Morley/Cottingley | Tom Wilson |  | Tom Wilson |  |  |
| A74710 |  | OLE Setting Out | 1d | 2020-05-07 A | 2020-05-07 A |  | 100% |  |  | start on or after 2020-05-07 |  | Keltbray |  | REF TBC | On Track | Week 05 | Midweek | W4 | 38m – 40m | MDL1/34 | OLE Setting Out | Morley/Cottingley | Tom Wilson |  | Tom Wilson |  |  |
| A75600 |  | Drainage Walkout/Site Familiarisation - CANCELLED | 1d | 2020-05-07 A | 2020-05-07 A |  | 100% |  |  | start on or after 2020-05-07 |  | Lanes4Drains |  |  | On Track | Week 05 | Midweek | W4 | 41m20ch - 41m40ch | Morley Tunnel (MDL1/36) | Walkout | Holbeck | Ben Cantrell |  |  |  |  |

Notes:
- A60040: General Comments: 23/03 - Cancelled by Jamie Hogg for midweek 52, resource prioritised to W5 / works. To be replanned
- A60060: General Comments: 23/03 - Cancelled by Jamie Hogg for midweek 52, resource prioritised to W5 / works. To be replanned
- A60080: General Comments: 23/03 - Cancelled by Jamie Hogg for midweek 52, resource prioritised to W5 / works. To be replanned
- A60180: General Comments: 17/02 - Trial pit team needed to work on W5 scope on same shift. Original / date of week 52 changed to accomodate priority works in its place.
- A60190: General Comments: 17/02 - Trial pit team needed to work on W5 scope on same shift. Original / date of week 52 changed to accomodate priority works in its place.
- A59470: General Comments: 17/04 - Works cancelled week 3 due to poor planning process

| ID | WBS | Activity | Duration | Start | Finish | Predecessors | Complete | Planned start | Planned finish | Constraint | Text 1 | Company Responsible | Location / ELR | GI Reference Number | On-Track Off-Track | Week Number | Weekend/Midweek | Project | Mileage | Location | Discipline | Access Point | Responsibility | Teams | On/Off Track | Comment | Machines Required | 03.1 Progress Note | 03.2 Progress Note |
| --- | --- | --- | --- | --- | --- | --- | --- | --- | --- | --- | --- | --- | --- | --- | --- | --- | --- | --- | --- | --- | --- | --- | --- | --- | --- | --- | --- | --- | --- |
|  | 3 | **Thurs - Ravensthorpe to Copley (2350 - 0545) 38m28ch - 185m25ch** |  | 2019-11-16 | 2020-05-08 |  |  |  |  |  |  |  |  |  |  |  |  |  |  |  |  |  |  |  |  |  |  |  |  |
| A58730 |  | Window Sample | 1d | 2019-11-16 A | 2019-11-16 A | A72630 | 100% | 2020-05-08 | 2020-05-08 | start on or after 2020-05-08 | W44 | Structural Soils | DONE - 34 | WS5421 | On Track | Week 05 | Midweek | W4 | 35m57 | Batley to Morley Tunnel | Window Sample |  |  |  |  |  |  |  |  |
| A59550 |  | ABS | 1d | 2020-05-08 A | 2020-05-08 A | A72630 | 100% |  |  | start on or after 2020-05-08 | W46 | Bam Ritchies | NEW | AB5585 | On Track | Week 05 | Midweek | W4 | 39m50ch - 41m60ch | Cottingley to Copley Hill | ABS | Gelderd Rd | Jamie Hogg |  |  |  |  |  |  |
| A59560 |  | ABS | 1d | 2020-05-08 A | 2020-05-08 A | A72630 | 100% |  |  | start on or after 2020-05-08 | W46 | Bam Ritchies | 1m Scheduled Depth | AB5586 | On Track | Week 05 | Midweek | W4 | 40m17 | Cottingley to Copley Hill | ABS |  | Jamie Hogg |  |  |  |  |  |  |
| A59990 |  | ABS | 1d | 2020-05-08 A | 2020-05-08 A | A72630 | 100% |  |  | start on or after 2020-05-08 |  | Bam Ritchies | NEW | AB5621 | On Track | Week 05 | Midweek | W4 | 41m10ch - 41m70ch | Cottingley to Copley Hill | ABS | Copley Hill | Jamie Hogg |  |  |  |  |  |  |
| A60000 |  | ABS | 1d | 2020-05-08 A | 2020-05-08 A | A72630 | 100% |  |  | start on or after 2020-05-08 |  | Bam Ritchies | NEW | AB5622 | On Track | Week 05 | Midweek | W4 | 41m10ch - 41m70ch | Cottingley to Copley Hill | ABS | Copley Hill | Jamie Hogg |  |  |  |  |  |  |
| A60020 |  | ABS | 1d | 2020-05-08 A | 2020-05-08 A | A72630 | 100% |  |  | start on or after 2020-05-08 |  | Bam Ritchies | NEW | AB5623 | On Track | Week 05 | Midweek | W4 | 41m10ch - 41m70ch | Cottingley to Copley Hill | ABS | Copley Hill | Jamie Hogg |  |  |  |  |  |  |
| A60030 |  | ABS | 1d | 2020-05-08 A | 2020-05-08 A | A72630 | 100% |  |  | start on or after 2020-05-08 |  | Bam Ritchies | NEW | AB5624 | On Track | Week 05 | Midweek | W4 | 41m10ch - 41m70ch | Cottingley to Copley Hill | ABS | Copley Hill | Jamie Hogg |  |  |  |  |  |  |
| A66560 |  | Topo/Trav/Level - CANCELLED | 1d | 2020-05-08 A | 2020-05-08 A | A72630 | 100% |  |  | start on or after 2020-05-08 |  | SEP | MDL1 |  | On Track | Week 05 | Midweek | W4 | 41m00ch - 42m20ch | Morley Tunnel (MDL1/36) | Topographical |  | Matt Levine |  |  |  |  |  |  |
| A66570 |  | Topo/Trav/Level - CANCELLED | 1d | 2020-05-08 A | 2020-05-08 A | A72630 | 100% |  |  | start on or after 2020-05-08 |  | SEP | MDL1 |  | On Track | Week 05 | Midweek | W4 | 41m00ch - 42m20ch | Morley Tunnel (MDL1/36) | Topographical |  | Matt Levine |  |  |  |  |  |  |
| A66580 |  | Gedo Rails - CANCELLED | 1d | 2020-05-08 A | 2020-05-08 A | A72630 | 100% |  |  | start on or after 2020-05-08 |  | SEP | MDL1 |  | On Track | Week 05 | Midweek | W4 | 41m00ch - 42m20ch | Morley Tunnel (MDL1/36) | Topographical |  | Matt Levine |  |  |  |  |  |  |
| A66590 |  | IMS - CANCELLED | 1d | 2020-05-08 A | 2020-05-08 A | A72630 | 100% |  |  | start on or after 2020-05-08 |  | SEP | MDL1 |  | On Track | Week 05 | Midweek | W4 | 41m00ch - 42m20ch | Morley Tunnel (MDL1/36) | Topographical |  | Matt Levine |  |  |  |  |  |  |
| A67710 |  | Trial Pit | 1d | 2020-05-08 A | 2020-05-08 A | A72630 | 100% |  |  | start on or after 2020-05-08 |  | Structural Soils | MDL1/41/B1 Retaining Wall | MDL1/41/B1/TH/01 | On Track | Week 05 | Midweek | W4 | 41m10ch - 41m20ch | OB MDL1/47 - Whitehall Road Dragon Bridge | Trial Pit | Dragon Bridge | Olly Phillips | A |  |  |  |  |  |
| A67720 |  | Trial Pit | 1d | 2020-05-08 A | 2020-05-08 A | A72630 | 100% |  |  | start on or after 2020-05-08 |  | Structural Soils | MDL1/41/B1 Retaining Wall | MDL1/41/B1/TH/02 | On Track | Week 05 | Midweek | W4 | 41m10ch - 41m20ch | OB MDL1/47 - Whitehall Road Dragon Bridge | Trial Pit | Dragon Bridge | Olly Phillips | A |  |  |  |  |  |
| A67730 |  | Trial Pit | 1d | 2020-05-08 A | 2020-05-08 A | A72630 | 100% |  |  | start on or after 2020-05-08 |  | Structural Soils | MDL1/41/B1 Retaining Wall | MDL1/41/B1/TH/03 | On Track | Week 05 | Midweek | W4 | 41m10ch - 41m20ch | OB MDL1/47 - Whitehall Road Dragon Bridge | Trial Pit | Dragon Bridge | Olly Phillips | A |  |  |  |  |  |
| A67740 |  | Trial Pit | 1d | 2020-05-08 A | 2020-05-08 A | A72630 | 100% |  |  | start on or after 2020-05-08 |  | Structural Soils | MDL1/41/B1 Retaining Wall | MDL1/41/B1/TH/04 | On Track | Week 05 | Midweek | W4 | 41m10ch - 41m20ch | OB MDL1/47 - Whitehall Road Dragon Bridge | Trial Pit | Dragon Bridge | Olly Phillips | A |  |  |  |  |  |
| A70750 |  | Site Mop up - CANCELLED | 1d | 2020-05-08 A | 2020-05-08 A | A72630 | 100% |  |  | start on or after 2020-05-08 |  | SEP | MDL1/DOL |  | On Track | Week 05 | Midweek | W4 | 41m00ch - 185m20ch | Morley Tunnel (MDL1/36) | Topographical | TBC | Matt Levine |  |  |  |  |  |  |
| A74510 |  | Prep For Safety - Scoping | 1d | 2020-05-08 A | 2020-05-08 A |  | 100% |  |  | start on or after 2020-05-08 |  | Amey |  |  | On Track | Week 05 | Midweek | W3 | Full Mileage |  | Prep For Safety | Various | Gary Rhodes |  | On Track |  |  |  |  |
| A74750 |  | OLE Setting Out | 1d | 2020-05-08 A | 2020-05-08 A |  | 100% |  |  | start on or after 2020-05-08 |  | Keltbray |  | REF TBC | On Track | Week 05 | Midweek | W4 | 38m – 40m | MDL1/34 | OLE Setting Out | Morley/Cottingley | Tom Wilson |  |  | Tom Wilson |  |  |  |
| A74760 |  | OLE Setting Out | 1d | 2020-05-08 A | 2020-05-08 A |  | 100% |  |  | start on or after 2020-05-08 |  | Keltbray |  | REF TBC | On Track | Week 05 | Midweek | W4 | 38m – 40m | MDL1/34 | OLE Setting Out | Morley/Cottingley | Tom Wilson |  |  | Tom Wilson |  |  |  |
| A74770 |  | OLE Setting Out | 1d | 2020-05-08 A | 2020-05-08 A |  | 100% |  |  | start on or after 2020-05-08 |  | Keltbray |  | REF TBC | On Track | Week 05 | Midweek | W4 | 38m – 40m | MDL1/34 | OLE Setting Out | Morley/Cottingley | Tom Wilson |  |  | Tom Wilson |  |  |  |
| A75610 |  | Drainage Walkout/Site Familiarisation - CANCELLED | 1d | 2020-05-08 A | 2020-05-08 A |  | 100% |  |  | start on or after 2020-05-08 |  | Lanes4Drains |  |  | On Track | Week 05 | Midweek | W4 | Full Mileage | Morley Tunnel (MDL1/36) | Walkout | Various | Isaac Derry |  |  |  |  |  |  |
|  | 40 | **Week 07** |  | 2020-05-16 | 2020-05-16 |  |  |  |  |  |  |  |  |  |  |  |  |  |  |  |  |  |  |  |  |  |  |  |  |
|  | 8 | **Weekend Works** |  | 2020-05-16 | 2020-05-16 |  |  |  |  |  |  |  |  |  |  |  |  |  |  |  |  |  |  |  |  |  |  |  |  |
|  | 5 | **Ravensthorpe to Copley Hill East (0040 Sat - 0510 Sat) 32m20ch - 42m02ch** |  | 2020-05-16 | 2020-05-16 |  |  |  |  |  |  |  |  |  |  |  |  |  |  |  |  |  |  |  |  |  |  |  |  |
| A59570 |  | ABS | 1d | 2020-05-16 A | 2020-05-16 A | A72630 | 100% | 2020-06-27 | 2020-06-27 | start on or after 2020-06-27 | W46 | Bam Ritchies | 1m Scheduled Depth | AB5587 | On Track | Week 07 | Weekend | W4 | 40m19 | Cottingley to Copley Hill | ABS |  |  |  |  |  |  |  |  |
| A59580 |  | ABS - LOCATION ON HOLD | 1d | 2020-05-16 A | 2020-05-16 A | A72630 | 100% | 2020-07-28 | 2020-07-28 | start on or after 2020-07-28 | W46 | Bam Ritchies | 2m Scheduled Depth | AB5588 | On Track | Week 07 | Weekend | W4 | 40m21 | Cottingley to Copley Hill | ABS |  | Jamie Hogg |  |  |  |  |  |  |
| A59590 |  | ABS | 1d | 2020-05-16 A | 2020-05-16 A | A72630 | 100% | 2020-06-18 | 2020-06-18 | start on or after 2020-06-18 | W46 | Bam Ritchies | 1m Scheduled Depth | AB5589 | On Track | Week 07 | Weekend | W4 | 40m23 | Cottingley to Copley Hill | ABS | Morley | Jamie Hogg |  |  |  |  |  |  |
| A62270 |  | Trial Pit | 1d | 2020-05-16 A | 2020-05-16 A | A72630 | 100% |  |  | start on or after 2020-05-16 | W46 | Structural Soils |  | MT-TP-A:60050 UP | On Track | Week 07 | Weekend | W4 | 37m25 | Morley Tunnel (MDL1/36) | Trial Pit | Morley | Olly Phillips |  |  |  | PLAN |  |  |
| A62280 |  | Trial Pit | 1d | 2020-05-16 A | 2020-05-16 A | A72630 | 100% |  |  | start on or after 2020-05-16 | W46 | Structural Soils |  | MT-TP-A:60050 DN | On Track | Week 07 | Weekend | W4 | 35m1254yds - 38m618yds | Morley Tunnel (MDL1/36) | Trial Pit | Morley | Olly Phillips |  |  |  |  |  |  |
| A62290 |  | Trial Pit | 1d | 2020-05-16 A | 2020-05-16 A | A72630 | 100% |  |  | start on or after 2020-05-16 | W46 | Structural Soils |  | MT-TP-A:60400 UP | On Track | Week 07 | Weekend | W4 | 37m42 | Morley Tunnel (MDL1/36) | Trial Pit | Morley | Olly Phillips |  |  |  | PLAN |  |  |
| A62300 |  | Trial Pit | 1d | 2020-05-16 A | 2020-05-16 A | A72630 | 100% |  |  | start on or after 2020-05-16 | W46 | Structural Soils |  | MT-TP-A:60400 DN | On Track | Week 07 | Weekend | W4 | 37m42 | Morley Tunnel (MDL1/36) | Trial Pit | Morley | Olly Phillips |  |  |  | PLAN |  |  |
| A67240 |  | Coring | 1d | 2020-05-16 A | 2020-05-16 A | A72630 | 100% |  |  | start on or after 2020-05-16 |  | Bam Ritchies | MDL1/33 Disused Abutment | MDL1/33/SC/04 | On Track | Week 07 | Weekend | W4 | 35m40ch - 35m70ch | OB MDL1/47 - Whitehall Road Dragon Bridge | Coring | Batley | Jamie Hogg |  |  |  | ON HOLD |  |  |
| A67250 |  | Coring | 1d | 2020-05-16 A | 2020-05-16 A | A72630 | 100% |  |  | start on or after 2020-05-16 |  | Bam Ritchies | MDL1/33 Disused Abutment | MDL1/33/SC/05 | On Track | Week 07 | Weekend | W4 | 35m40ch - 35m70ch | OB MDL1/47 - Whitehall Road Dragon Bridge | Coring | Batley | Jamie Hogg |  |  |  | ON HOLD |  |  |
| A67470 |  | Coring | 1d | 2020-05-16 A | 2020-05-16 A | A72630 | 100% |  |  | start on or after 2020-05-16 |  | Structural Soils | MDL1/41/B1 Retaining Wall | MDL1/41/B1/SC/09 | On Track | Week 07 | Weekend | W4 | 41m10ch - 41m20ch | OB MDL1/47 - Whitehall Road Dragon Bridge | Coring | Dragon Bridge | Olly Phillips |  |  |  |  |  |  |
| A67490 |  | Coring | 1d | 2020-05-16 A | 2020-05-16 A | A72630 | 100% |  |  | start on or after 2020-05-16 |  | Structural Soils | MDL1/41/B1 Retaining Wall | MDL1/41/B1/SC/11 | On Track | Week 07 | Weekend | W4 | 41m10ch - 41m20ch | OB MDL1/47 - Whitehall Road Dragon Bridge | Coring | Dragon Bridge | Olly Phillips |  |  |  |  |  |  |
| A67510 |  | Coring | 1d | 2020-05-16 A | 2020-05-16 A | A72630 | 100% |  |  | start on or after 2020-05-16 |  | Structural Soils | MDL1/41/B1 Retaining Wall | MDL1/41/B1/SC/13 | On Track | Week 07 | Weekend | W4 | 41m10ch - 41m20ch | OB MDL1/47 - Whitehall Road Dragon Bridge | Coring | Dragon Bridge | Olly Phillips |  |  |  |  |  |  |
| A67520 |  | Coring - REPLAN | 1d | 2020-05-16 A | 2020-05-16 A | A72630 | 100% |  |  | start on or after 2020-05-16 |  | Structural Soils | MDL1/41/B1 Retaining Wall | MDL1/41/B1/SC/14 - REPLAN | On Track | Week 07 | Weekend | W4 | 41m10ch - 41m20ch | OB MDL1/47 - Whitehall Road Dragon Bridge | Coring | Dragon Bridge | Olly Phillips |  |  |  | ON HOLD |  |  |
| A67530 |  | Coring | 1d | 2020-05-16 A | 2020-05-16 A | A72630 | 100% |  |  | start on or after 2020-05-16 |  | Structural Soils | MDL1/41/B1 Retaining Wall | MDL1/41/B1/SC/15 | On Track | Week 07 | Weekend | W4 | 41m10ch - 41m20ch | OB MDL1/47 - Whitehall Road Dragon Bridge | Coring | Dragon Bridge | Olly Phillips |  |  |  |  |  |  |
| A67540 |  | Coring - REPLAN | 1d | 2020-05-16 A | 2020-05-16 A | A72630 | 100% |  |  | start on or after 2020-05-16 |  | Structural Soils | MDL1/41/B1 Retaining Wall | MDL1/41/B1/SC/16 - REPLAN | On Track | Week 07 | Weekend | W4 | 41m10ch - 41m20ch | OB MDL1/47 - Whitehall Road Dragon Bridge | Coring | Dragon Bridge | Olly Phillips |  |  |  | ON HOLD |  |  |
| A70670 |  | Designers Station Survey | 1d | 2020-05-16 A | 2020-05-16 A | A72630 | 100% |  |  | start on or after 2020-05-16 |  | Design | Batley & Dewsbury Station |  | On Track | Week 07 | Weekend | W2B |  |  | Walkout | Batley/Dewsbury | Janine Bootland |  |  |  |  | 200601 CV - John Kelly Dilapida | * |
| A72710 |  | Control Install & coordination | 1d | 2020-05-16 A | 2020-05-16 A | A72630 | 100% |  |  | start on or after 2020-05-16 |  | Severn Partnership |  |  | On Track | Week 07 | Weekend | W3 | 32m28ch - 35m20ch |  | Topographical | Dewsbury Stn | John Woods |  | On Track |  |  |  |  |
| A72740 |  | Control Install & coordination | 1d | 2020-05-16 A | 2020-05-16 A | A72630 | 100% |  |  | start on or after 2020-05-16 |  | Severn Partnership |  |  | On Track | Week 07 | Weekend | W3 | 32m28ch - 35m20ch |  | Topographical | Dewsbury Stn | John Woods |  | On Track |  |  |  |  |
| A73720 |  | Surveying Trial Holes | 1d | 2020-05-16 A | 2020-05-16 A |  | 100% |  |  | start on or after 2020-05-16 |  | Structural Soils |  |  | On Track | Week 07 | Weekend | W4 | 35m1254yds - 38m618yds | Morley Tunnel (MDL1/36) | Walkout | Morley Stn | Olly Phillips |  |  |  |  |  |  |
| A74810 |  | OLE Trial Holes | 1d | 2020-05-16 A | 2020-05-16 A |  | 100% |  |  | start on or after 2020-05-16 |  | Keltbray |  | MDL1/62328/U | On Track | Week 07 | Weekend | W4 | 38m – 40m | MDL1/34 | OLE Trial Hole | Morley/Cottingley | Tom Wilson |  |  | Tom Wilson |  |  |  |
| A74820 |  | OLE Trial Holes | 1d | 2020-05-16 A | 2020-05-16 A |  | 100% |  |  | start on or after 2020-05-16 |  | Keltbray |  | MDL1/62372/D | On Track | Week 07 | Weekend | W4 | 38m – 40m | MDL1/34 | OLE Trial Hole | Morley/Cottingley | Tom Wilson |  |  | Tom Wilson |  |  |  |
| A74830 |  | OLE Trial Holes | 1d | 2020-05-16 A | 2020-05-16 A |  | 100% |  |  | start on or after 2020-05-16 |  | Keltbray |  | MDL1/62372/U | On Track | Week 07 | Weekend | W4 | 38m – 40m | MDL1/34 | OLE Trial Hole | Morley/Cottingley | Tom Wilson |  |  | Tom Wilson |  |  |  |
| A75370 |  | Prep For Safety - Handrail Installation Bridge 6 | 1d | 2020-05-16 A | 2020-05-16 A |  | 100% |  |  | start on or after 2020-05-16 |  | Bam Nuttall | MDL1/6 - Calder Hebble Canal |  | On Track | Week 07 | Weekend | W3 | 32m 49ch |  | Prep For Safety | 32m 0928y | Phil Henry |  | On Track |  |  |  |  |
| A75630 |  | Prep For Safety | 1d | 2020-05-16 A | 2020-05-16 A |  | 100% |  |  | start on or after 2020-05-16 |  | Amey |  |  | On Track | Week 07 | Weekend | W3 | Full Mileage |  | Prep For Safety | Various | Gary Rhodes |  | On Track |  |  |  |  |
| A75660 |  | Drainage Walkout/Site Familiarisation | 1d | 2020-05-16 A | 2020-05-16 A |  | 100% |  |  | start on or after 2020-05-16 |  | Lanes4Drains |  |  | On Track | Week 07 | Weekend | W4 | 35m57ch - 38m25ch | Morley Tunnel (MDL1/36) | Walkout |  | Isaac Derry |  |  |  |  |  |  |
| A75750 |  | Topographical Survey - Infill Control | 1d | 2020-05-16 A | 2020-05-16 A |  | 100% |  |  | start on or after 2020-05-16 |  | SEP | MDL1 |  | On Track | Week 07 | Weekend | W4 | 40m20ch - 41m20ch | Morley Tunnel (MDL1/36) | Topographical |  | Dom Keegans |  |  |  |  |  |  |
| A75760 |  | Topographical Survey - Chain Out | 1d | 2020-05-16 A | 2020-05-16 A |  | 100% |  |  | start on or after 2020-05-16 |  | SEP | MDL1 |  | On Track | Week 07 | Weekend | W4 | 39m40ch - 41m20ch | Morley Tunnel (MDL1/36) | Topographical |  | Dom Keegans |  |  |  |  |  |  |
| A76140 |  | Topographical Survey - DM Plate Install | 1d | 2020-05-16 A | 2020-05-16 A |  | 100% |  |  | start on or after 2020-05-16 |  | Bridgeway | Batley Station |  | On Track | Week 07 | Weekend | W4 | 34m60ch to 35m 10ch | Dewsbury Station | Topographical | Batley Station | Darren Walsh |  |  |  |  |  |  |
| A76150 |  | Topographical Survey - Track Survey | 1d | 2020-05-16 A | 2020-05-16 A |  | 100% |  |  | start on or after 2020-05-16 |  | Bridgeway | Batley Station |  | On Track | Week 07 | Weekend | W4 | 34m60ch to 35m 10ch | Dewsbury Station | Topographical | Batley Station | Darren Walsh |  |  |  |  |  |  |
| A76260 |  | GPR | 1d | 2020-05-16 A | 2020-05-16 A |  | 100% |  |  | start on or after 2020-05-16 |  | RSK | Batley Station |  | On Track | Week 07 | Weekend | W4 | 35m09ch | OB MDL1/47 - Whitehall Road Dragon Bridge | GPR | Batley Station | Olly Phillips |  |  |  |  |  |  |
| A76980 |  | OLE Trial Holes | 1d | 2020-05-16 A | 2020-05-16 A |  | 100% |  |  | start on or after 2020-05-16 |  | Keltbray |  | MDL1/62294/D | On Track | Week 07 | Weekend | W4 | 38m – 40m | MDL1/34 | OLE Trial Hole | Morley/Cottingley | Tom Wilson |  |  | Tom Wilson |  |  |  |
| A76990 |  | OLE Trial Holes | 1d | 2020-05-16 A | 2020-05-16 A |  | 100% |  |  | start on or after 2020-05-16 |  | Keltbray |  | MDL1/62294/U | On Track | Week 07 | Weekend | W4 | 38m – 40m | MDL1/34 | OLE Trial Hole | Morley/Cottingley | Tom Wilson |  |  | Tom Wilson |  |  |  |
| A77000 |  | OLE Trial Holes | 1d | 2020-05-16 A | 2020-05-16 A |  | 100% |  |  | start on or after 2020-05-16 |  | Keltbray |  | MDL1/62410/D | On Track | Week 07 | Weekend | W4 | 38m – 40m | MDL1/34 | OLE Trial Hole | Morley/Cottingley | Tom Wilson |  |  | Tom Wilson |  |  |  |
| A77010 |  | OLE Trial Holes | 1d | 2020-05-16 A | 2020-05-16 A |  | 100% |  |  | start on or after 2020-05-16 |  | Keltbray |  | MDL1/62410/U | On Track | Week 07 | Weekend | W4 | 38m – 40m | MDL1/34 | OLE Trial Hole | Morley/Cottingley | Tom Wilson |  |  | Tom Wilson |  |  |  |
| A77020 |  | OLE Trial Holes | 1d | 2020-05-16 A | 2020-05-16 A |  | 100% |  |  | start on or after 2020-05-16 |  | Keltbray |  | MDL1/62328/D | On Track | Week 07 | Weekend | W4 | 38m – 40m | MDL1/34 | OLE Trial Hole | Morley/Cottingley | Tom Wilson |  |  | Tom Wilson |  |  |  |
| A77030 |  | OLE Trial Holes | 1d | 2020-05-16 A | 2020-05-16 A |  | 100% |  |  | start on or after 2020-05-16 |  | Keltbray |  | MDL1/62449/D | On Track | Week 07 | Weekend | W4 | 38m – 40m | MDL1/34 | OLE Trial Hole | Morley/Cottingley | Tom Wilson |  |  | Tom Wilson |  |  |  |

Notes:
- A59990: General Comments: 23/03 - Cancelled by Jamie Hogg for midweek 52, resource prioritised to W5 / works. To be replanned
- A60020: General Comments: 23/03 - Cancelled by Jamie Hogg for midweek 52, resource prioritised to W5 / works. To be replanned
- A67520: General Comments: 07/05 - Works conflicting with NR re-railing on week 5 midweek / shift
- A67540: General Comments: 07/05 - Works conflicting with NR re-railing on week 5 midweek / shift
- A73720: General Comments: 23/03 - No tools on site
- A76260: General Comments: 20/04 - Slippage of 2 weeks due to scope requiring more than 1x shift as / originally anticipated

| ID | WBS | Activity | Duration | Start | Finish | Predecessors | Complete | Planned start | Planned finish | Total float | Free float | Constraint | Company Responsible | Location / ELR | GI Reference Number | On-Track Off-Track | Week Number | Weekend/Midweek | Project | Mileage | Location | Discipline | Text 1 | Access Point | Responsibility | 03.1 Progress Note | 03.2 Progress Note | Comment | Text | Machines Required | On/Off Track |
| --- | --- | --- | --- | --- | --- | --- | --- | --- | --- | --- | --- | --- | --- | --- | --- | --- | --- | --- | --- | --- | --- | --- | --- | --- | --- | --- | --- | --- | --- | --- | --- |
|  | 59 | **Week 08** |  | 2020-05-08 | 2020-06-22 |  |  |  |  |  |  |  |  |  |  |  |  |  |  |  |  |  |  |  |  |  |  |  |  |  |  |
|  | 1 | **Weekend** |  | 2020-05-08 | 2020-06-22 |  |  |  |  |  |  |  |  |  |  |  |  |  |  |  |  |  |  |  |  |  |  |  |  |  |  |
|  | 1 | **Heaton Lodge South Junc to Thornhill Junc (2350 Sat - 0820 Sun) 29m50ch - 35m00ch** |  | 2020-05-08 | 2020-05-24 |  |  |  |  |  |  |  |  |  |  |  |  |  |  |  |  |  |  |  |  |  |  |  |  |  |  |
| A60900 |  | 75mm Horizontal Core - DESCOPED | 1d | 2020-05-08 A | 2020-05-08 A | A72630 | 100% | 2020-05-24 | 2020-05-24 |  |  | start on or after 2020-05-24 | Structural Soils | MDL1/29 Soothil Lane | MDL1/29/SC/04 | On Track | Week 08 | Weekend | W4 | 35m19 | OB MDL1/29 - Soothill Lane | Coring |  |  |  |  |  |  |  |  |  |
| A60910 |  | 75mm Inclined Core - DESCOPED | 1d | 2020-05-08 A | 2020-05-08 A | A72630 | 100% | 2020-05-24 | 2020-05-24 |  |  | start on or after 2020-05-24 | Structural Soils | MDL1/29 Soothil Lane | MDL1/29/SC/05 | On Track | Week 08 | Weekend | W4 | 35m19 | OB MDL1/29 - Soothill Lane | Coring | W46 |  |  |  |  |  |  |  |  |
| A60920 |  | 75mm Inclined Core - DESCOPED | 1d | 2020-05-08 A | 2020-05-08 A | A72630 | 100% | 2020-05-24 | 2020-05-24 |  |  | start on or after 2020-05-24 | Structural Soils | MDL1/29 Soothil Lane | MDL1/29/SC/06 | On Track | Week 08 | Weekend | W4 | 35m19 | OB MDL1/29 - Soothill Lane | Coring | W46 |  |  |  |  |  |  |  |  |
| A70680 |  | Designers Station Survey - NO REPORT | 1d | 2020-05-24 A | 2020-05-24 A | A72630 | 100% |  |  |  |  | start on or after 2020-05-24 | Design | Dewsbury Station | no report | On Track | Week 08 | Weekend | W2B |  |  | Walkout |  | Dewsbury Station | Janine Bootland | 200601 CV - John Kelly Dilapida | * |  |  |  |  |
|  | 2 | **Batley to Copley Hill (0050 Sun - 0730 Sun) 36m10ch - 185m25ch & 185m57ch - 185m25ch** |  | 2020-05-24 | 2020-06-22 |  |  |  |  |  |  |  |  |  |  |  |  |  |  |  |  |  |  |  |  |  |  |  |  |  |  |
| A76080 |  | Telecoms - Cable Route Survey | 1d | 2020-05-24 A | 2020-05-24 A |  | 100% |  |  |  |  | start on or after 2020-05-24 | Amey | MDL1/DOL |  | On Track | Week 08 | Weekend | W4 | 41m60ch - 185m25ch | Morley Tunnel (MDL1/36) | Telecoms |  | Copley Hill JN | Mark Radnage |  |  |  |  |  |  |
| A76090 |  | OLE Setting Out | 1d | 2020-05-24 A | 2020-05-24 A |  | 100% |  |  |  |  | start on or after 2020-05-24 | Keltbray |  |  | On Track | Week 08 | Weekend | W4 | 38m00ch - 40m00ch | MDL1/34 | OLE Setting Out |  | Morley | Tom Wilson |  |  | Tom Wilson |  |  |  |
| A76100 |  | OLE Setting Out | 1d | 2020-05-24 A | 2020-05-24 A |  | 100% |  |  |  |  | start on or after 2020-05-24 | Keltbray |  |  | On Track | Week 08 | Weekend | W4 | 38m00ch - 40m00ch | MDL1/34 | OLE Setting Out |  | Morley | Tom Wilson |  |  | Tom Wilson |  |  |  |
| A76110 |  | Ecology | 1d | 2020-05-24 A | 2020-05-24 A |  | 100% |  |  |  |  | start on or after 2020-05-24 | Keltbray |  |  | On Track | Week 08 | Weekend | W4 | 40m00ch - 185m25ch & 185m57ch - 185m25ch | MDL1/34 | OLE Setting Out |  | Copley Hill | Tom Wilson |  |  | Tom Wilson |  |  |  |
| A76270 |  | Drainage Walkout/Site Familiarisation | 1d | 2020-05-24 A | 2020-05-24 A |  | 100% |  |  |  |  | start on or after 2020-05-24 | Lanes4Drains | Copley Jn | W4-DR-238 | On Track | Week 08 | Weekend | W4 | 41m60ch - 42m02ch & 185m02ch - 185m25ch | Morley Tunnel (MDL1/36) | Walkout |  |  | Isaac Derry |  |  |  | keep |  |  |
| A77150 |  | Ecology | 1d | 2020-05-24 A | 2020-05-24 A |  | 100% |  |  |  |  | start on or after 2020-05-24 | Keltbray |  |  | On Track | Week 08 | Weekend | W4 | 40m00ch - 185m25ch & 185m57ch - 185m25ch | MDL1/34 | OLE Setting Out |  | Copley Hill | Tom Wilson |  |  | Tom Wilson |  |  |  |
| A78010 |  | Topographical Survey - Gedo | 1d | 2020-05-24 A | 2020-05-24 A |  | 100% |  |  |  |  | start on or after 2020-05-24 | SEP | MDL1 |  | On Track | Week 08 | Weekend | W4 | 41m04ch - 41m36ch | Morley Tunnel (MDL1/36) | Topographical |  | Copley Yard/Cottingley | Dom Keegans |  |  |  |  |  |  |
| A75770 |  | Topographical Survey - Gedo - 70% | 1d | 2020-06-22 A | 2020-06-22 A |  | 100% |  |  |  |  | start on or after 2020-05-24 | SEP | MDL1 | 30% LEFT TO COMPLETE | On Track | Week 08 | Weekend | W4 | 39m40ch - 40m24ch | Morley Tunnel (MDL1/36) | Topographical |  | Copley Yard/Cottingley | Dom Keegans |  |  |  |  |  |  |
|  | 41 | **Week 09** |  | 2019-04-20 | 2020-07-05 |  |  |  |  |  |  |  |  |  |  |  |  |  |  |  |  |  |  |  |  |  |  |  |  |  |  |
|  | 8 | **Weekend Works** |  | 2019-04-20 | 2020-07-05 |  |  |  |  |  |  |  |  |  |  |  |  |  |  |  |  |  |  |  |  |  |  |  |  |  |  |
|  | 5 | **Ravensthorpe to Copley Hill East (0040 Sat - 0510 Sat) 32m28ch - 42m02ch** |  | 2019-04-20 | 2020-07-05 |  |  |  |  |  |  |  |  |  |  |  |  |  |  |  |  |  |  |  |  |  |  |  |  |  |  |
| A67950 |  | ABS | 1d | 2019-04-20 A | 2019-04-20 A | A72630 | 100% | 2020-05-30 | 2020-05-30 |  |  | start on or after 2020-05-30 | Bam Ritchies | 2m Scheduled Depth | AB5569 | On Track | Week 09 | Weekend | W4 | 38m04ch | OB MDL1/29 - Soothill Lane | ABS |  | Batley |  |  |  |  |  |  |  |
| A67760 |  | Coring | 1d | 2020-03-12 A | 2020-03-12 A | A72630 | 100% | 2020-05-30 | 2020-05-30 |  |  | start on or after 2020-05-30 | Structural Soils | MDL1/29 Soothill Lane | MDL1/29/SC/04 | On Track | Week 09 | Weekend | W4 | DESCOPED 12/03/2020 | OB MDL1/29 - Soothill Lane | Coring |  | Batley |  |  |  |  |  | PLAN |  |
| A67770 |  | Coring | 1d | 2020-03-12 A | 2020-03-12 A | A72630 | 100% | 2020-05-30 | 2020-05-30 |  |  | start on or after 2020-05-30 | Structural Soils | MDL1/29 Soothill Lane | MDL1/29/SC/05 | On Track | Week 09 | Weekend | W4 | DESCOPED 12/03/2020 | OB MDL1/29 - Soothill Lane | Coring |  | Batley |  |  |  |  |  | PLAN |  |
| A67780 |  | Coring | 1d | 2020-03-12 A | 2020-03-12 A | A72630 | 100% | 2020-05-30 | 2020-05-30 |  |  | start on or after 2020-05-30 | Structural Soils | MDL1/29 Soothill Lane | MDL1/29/SC/06 | On Track | Week 09 | Weekend | W4 | DESCOPED 12/03/2020 | OB MDL1/29 - Soothill Lane | Coring |  | Batley |  |  |  |  |  | PLAN |  |
| A59610 |  | ABS | 1d | 2020-05-30 A | 2020-05-30 A | A72630 | 100% |  |  |  |  | start on or after 2020-05-30 | Bam Ritchies | 1m Scheduled Depth | AB5591 | On Track | Week 09 | Weekend | W4 | 40m40ch - 42m02ch | Cottingley to Copley Hill | ABS | W46 | Gelderd Rd/Dragon | Jamie Hogg |  |  |  |  | Y |  |
| A59620 |  | ABS | 1d | 2020-05-30 A | 2020-05-30 A | A72630 | 100% |  |  |  |  | start on or after 2020-05-30 | Bam Ritchies | 1m Scheduled Depth | AB5592 | On Track | Week 09 | Weekend | W4 | 40m40ch - 42m02ch | Cottingley to Copley Hill | ABS | W46 | Gelderd Rd/Dragon | Jamie Hogg |  |  |  |  | Y |  |
| A62310 |  | Trial Pit | 1d | 2020-05-30 A | 2020-05-30 A | A72630 | 100% |  |  |  |  | start on or after 2020-05-30 | Structural Soils |  | MT-TP-A:60800 UP | On Track | Week 09 | Weekend | W4 | 37m1384yds to 38m0628yds | Morley Tunnel (MDL1/36) | Trial Pit | W46 | Morley Station | Olly Phillips |  |  | Olly Phillips | keep | Y |  |
| A62330 |  | Trial Pit | 1d | 2020-05-30 A | 2020-05-30 A | A72630 | 100% |  |  |  |  | start on or after 2020-05-30 | Structural Soils |  | MT-TP-A:60900 UP | On Track | Week 09 | Weekend | W4 | 37m1384yds to 38m0628yds | Morley Tunnel (MDL1/36) | Trial Pit | W46 | Morley Station | Olly Phillips |  |  | Olly Phillips | keep | Y |  |
| A66820 |  | GPR | 1d | 2020-05-30 A | 2020-05-30 A | A72630 | 100% |  |  |  |  | start on or after 2020-05-30 | RSK | Batley Station |  | On Track | Week 09 | Weekend | W4 | 35m30yds - 35m360yds | OB MDL1/47 - Whitehall Road Dragon Bridge | GPR |  | Batley Station | Olly Phillips |  |  |  |  |  |  |
| A67620 |  | Trial Pit | 1d | 2020-05-30 A | 2020-05-30 A | A72630 | 100% |  |  |  |  | start on or after 2020-05-30 | Bam Ritchies | MDL1/33 Disused Abutment | MDL1/33/TH/02 | On Track | Week 09 | Weekend | W4 | 35m40ch - 35m70ch | Cottingley to Copley Hill | Trial Pit |  | Batley | Jamie Hogg |  |  |  |  | Y |  |
| A67630 |  | Trial Pit | 1d | 2020-05-30 A | 2020-05-30 A | A72630 | 100% |  |  |  |  | start on or after 2020-05-30 | Bam Ritchies | MDL1/33 Disused Abutment | MDL1/33/TH/03 | On Track | Week 09 | Weekend | W4 | 35m40ch - 35m70ch | Cottingley to Copley Hill | Trial Pit |  | Copley Hill Way | Jamie Hogg |  |  |  |  | Y |  |
| A73730 |  | Surveying Trial Holes | 1d | 2020-05-30 A | 2020-05-30 A |  | 100% |  |  |  |  | start on or after 2020-05-30 | Structural Soils |  |  | On Track | Week 09 | Weekend | W4 | 35m1254yds - 38m618yds | Morley Tunnel (MDL1/36) | Walkout |  | Morley Stn/ Batley | Olly Phillips |  |  |  | keep | Y |  |
| A74840 |  | OLE Setting Out/Trial Holes - 11/15 - 73% | 1d | 2020-05-30 A | 2020-05-30 A |  | 100% |  |  |  |  | start on or after 2020-05-30 | Keltbray / Lundys |  |  | On Track | Week 09 | Weekend | W4 | 38m – 40m | MDL1/34 | OLE Setting Out |  | Morley | Tom Wilson |  |  | Tom Wilson |  |  |  |
| A74850 |  | OLE Setting Out/Trial Holes - 11/15 - 73% | 1d | 2020-05-30 A | 2020-05-30 A |  | 100% |  |  |  |  | start on or after 2020-05-30 | Keltbray / Lundys |  |  | On Track | Week 09 | Weekend | W4 | 38m – 40m | MDL1/34 | OLE Setting Out |  | Morley | Tom Wilson |  |  | Tom Wilson |  |  |  |
| A74860 |  | Ecology | 1d | 2020-05-30 A | 2020-05-30 A |  | 100% |  |  |  |  | start on or after 2020-05-30 | Keltbray / Lundys |  |  | On Track | Week 09 | Weekend | W4 | 38m – 40m | MDL1/34 | OLE Setting Out |  | Morley | Tom Wilson |  |  | Tom Wilson |  |  |  |
| A75050 |  | Topographical Survey - Control Coordination S105A - S016 to DP1 | 1d | 2020-05-30 A | 2020-05-30 A | A72630 | 100% |  |  |  |  | start on or after 2020-05-30 | Bridgeway | Batley Station |  | On Track | Week 09 | Weekend | W4 | 35m 56ch To 38m 29ch | Dewsbury Station | Topographical |  | Batley LX | Darren Walsh |  |  |  |  |  |  |
| A75180 |  | Control Install & coordination | 1d | 2020-05-30 A | 2020-05-30 A |  | 100% |  |  |  |  | start on or after 2020-05-30 | Severn Partnership |  |  | On Track | Week 09 | Weekend | W3 | 32m 28ch to 35m 40ch |  | Topographical |  | Dewsbury Stn | John Woods |  |  |  |  |  | On Track |
| A75190 |  | Control Install & coordination | 1d | 2020-05-30 A | 2020-05-30 A |  | 100% |  |  |  |  | start on or after 2020-05-30 | Severn Partnership |  |  | On Track | Week 09 | Weekend | W3 | 32m 28ch to 35m 40ch |  | Topographical |  | Dewsbury Stn | John Woods |  |  |  |  |  | On Track |
| A75540 |  | Borehole Enabling Works | 1d | 2020-05-30 A | 2020-05-30 A |  | 100% |  |  |  |  | start on or after 2020-05-30 | Bam Nuttall | Ravensthorpe Triangle |  | On Track | Week 09 | Weekend | W3 | Full Mileage |  | Enabling Works |  | Ravensthorpe Station | Justin Sena |  |  |  |  | JM | On Track |
| A75950 |  | Designers Station Survey | 1d | 2020-05-30 A | 2020-05-30 A |  | 100% |  |  |  |  | start on or after 2020-05-30 | Design | Morley Station |  | On Track | Week 09 | Weekend | W2B |  |  | Walkout |  | Morley Station | Janine Bootland | 200601 CV - John Kelly Dilapida | * |  |  |  |  |
| A76030 |  | Surveying | 1d | 2020-05-30 A | 2020-05-30 A |  | 100% |  |  |  |  | start on or after 2020-05-30 | Bam Ritchies |  |  | On Track | Week 09 | Weekend | W4 | 35m40ch - 38m30ch | Cottingley to Copley Hill | Walkout |  | Batley | Jamie Hogg |  |  |  |  | Y |  |
| A76050 |  | Drainage Survey - Asset Location & Asset Data | 1d | 2020-05-30 A | 2020-05-30 A |  | 100% |  |  |  |  | start on or after 2020-05-30 | Aaron Rail |  | W5 | On Track | Week 09 | Weekend | W4 | 37m 79ch - 38m 65ch | Morley Tunnel (MDL1/36) | Drainage |  | Morley | Mark Bingham |  |  |  |  |  |  |
| A76280 |  | Drainage Walkout/Site Familiarisation | 1d | 2020-05-30 A | 2020-05-30 A |  | 100% |  |  |  |  | start on or after 2020-05-30 | Lanes4Drains | Holbeck | W4-DR-237 | On Track | Week 09 | Weekend | W4 | 41m20ch - 41m60ch | Morley Tunnel (MDL1/36) | Walkout |  | Copley Hill | Isaac Derry |  |  |  | keep |  |  |
| A67590 |  | Window Sample | 1d | 2020-07-05 | 2020-07-05 | A72630 |  |  |  | 301d | 0d | start on or after 2020-05-30 | Bam Ritchies | MDL1/33 Disused Abutment | MDL1/33/WS/01 - REPLAN | On Track |  | Weekend | W4 | 35m40ch - 35m70ch | Cottingley to Copley Hill | Window Sample |  | Batley | Jamie Hogg |  |  |  |  | EH |  |
| A67600 |  | Window Sample | 1d | 2020-07-05 | 2020-07-05 | A72630 |  |  |  | 301d | 0d | start on or after 2020-05-30 | Bam Ritchies | MDL1/33 Disused Abutment | MDL1/33/WS/02 - REPLAN | On Track |  | Weekend | W4 | 35m40ch - 35m70ch | Cottingley to Copley Hill | Window Sample |  | Batley | Jamie Hogg |  |  |  |  | EH |  |

Notes:
- A60900: General Comments: 17/02 - descoped, refer to email Emma Hedges sent 14/02/2020
- A60910: General Comments: 17/02 - descoped, refer to email Emma Hedges sent 14/02/2020
- A60920: General Comments: 17/02 - descoped, refer to email Emma Hedges sent 14/02/2020
- A75770: General Comments: 24/05 - Late start left insufficient time
- A62310: General Comments: 06/04 - SWL's weren't adhering to social distancing rules, therefore were / asked to leave site and works were cancelled / 17/04 - Moved to week 09 when resource is available
- A62330: General Comments: 06/04 - SWL's weren't adhering to social distancing rules, therefore were / asked to leave site and works were cancelled / 17/04 - Moved to week 09 when resource is available
- A66820: General Comments: 20/04 - Slippage of 2 weeks due to scope requiring more than 1x shift as / originally anticipated
- A73730: General Comments: 23/03 - No tools on site
- A67590: General Comments: 01/06 - Attempted but unable to complete due to scaring / horses
- A67600: General Comments: 01/06 - Attempted but unable to complete due to scaring / horses

| ID | WBS | Activity | Duration | Start | Finish | Predecessors | Complete | Planned start | Planned finish | Constraint | Company Responsible | Location / ELR | GI Reference Number | On-Track Off-Track | Week Number | Weekend/Midweek | Project | Mileage | Access Point | Location | Discipline | Machines Required | Responsibility | Text | Text 1 | Comment | On/Off Track | 03.1 Progress Note | 03.2 Progress Note |
| --- | --- | --- | --- | --- | --- | --- | --- | --- | --- | --- | --- | --- | --- | --- | --- | --- | --- | --- | --- | --- | --- | --- | --- | --- | --- | --- | --- | --- | --- |
|  | 42 | **Week 11-1** |  | 2019-04-20 | 2020-07-05 |  |  |  |  |  |  |  |  |  |  |  |  |  |  |  |  |  |  |  |  |  |  |  |  |
|  | 8 | **Weekend Works** |  | 2019-04-20 | 2020-06-13 |  |  |  |  |  |  |  |  |  |  |  |  |  |  |  |  |  |  |  |  |  |  |  |  |
|  | 5 | **Ravensthorpe to Copley Hill East (0040 Sat - 0510 Sat) 32m28ch - 42m02ch** |  | 2019-04-20 | 2020-06-13 |  |  |  |  |  |  |  |  |  |  |  |  |  |  |  |  |  |  |  |  |  |  |  |  |
| A67930 |  | ABS | 1d | 2019-04-20 A | 2019-04-20 A | A72630 | 100% | 2020-06-13 | 2020-06-13 | start on or after 2020-06-13 | Bam Ritchies | Done? | AB5567 | On Track | Week 11 | Weekend | W4 | 38m00ch | Batley | OB MDL1/29 - Soothill Lane | ABS |  |  |  |  |  |  |  |  |
| A67940 |  | ABS | 1d | 2019-04-20 A | 2019-04-20 A | A72630 | 100% | 2020-06-13 | 2020-06-13 | start on or after 2020-06-13 | Bam Ritchies | Done? | AB5568 | On Track | Week 11 | Weekend | W4 | 38m02ch | Batley | OB MDL1/29 - Soothill Lane | ABS |  |  |  |  |  |  |  |  |
| A59930 |  | ABS | 1d | 2020-06-13 A | 2020-06-13 A | A72630 | 100% |  |  | start on or after 2020-06-13 | Bam Ritchies | 1m Scheduled Depth | AB5615 | On Track | Week 11 | Weekend | W4 | 40m 40ch - 42m02ch | Copley Hill Way | Cottingley to Copley Hill | ABS | Y | Jamie Hogg |  |  |  |  |  |  |
| A59940 |  | ABS | 1d | 2020-06-13 A | 2020-06-13 A | A72630 | 100% |  |  | start on or after 2020-06-13 | Bam Ritchies | 1m Scheduled Depth | AB5616 | On Track | Week 11 | Weekend | W4 | 40m 40ch - 42m02ch | Copley Hill Way | Cottingley to Copley Hill | ABS | Y | Jamie Hogg |  |  |  |  |  |  |
| A59950 |  | ABS | 1d | 2020-06-13 A | 2020-06-13 A | A72630 | 100% |  |  | start on or after 2020-06-13 | Bam Ritchies | 1m Scheduled Depth | AB5617 | On Track | Week 11 | Weekend | W4 | 40m 40ch - 42m02ch | Copley Hill Way | Cottingley to Copley Hill | ABS | Y | Jamie Hogg |  |  |  |  |  |  |
| A62250 |  | Trial Pit | 1d | 2020-06-13 A | 2020-06-13 A | A72630 | 100% |  |  | start on or after 2020-06-13 | Structural Soils |  | MT-TP-A:59750 UP | On Track | Week 11 | Weekend | W4 | 35m1254yds - 38m618yds | Morley | Morley Tunnel (MDL1/36) | Trial Pit |  | Olly Phillips | keep | W44 |  |  |  |  |
| A62260 |  | Trial Pit | 1d | 2020-06-13 A | 2020-06-13 A | A72630 | 100% |  |  | start on or after 2020-06-13 | Structural Soils |  | MT-TP-A:59750 DN | On Track | Week 11 | Weekend | W4 | 35m1254yds - 38m618yds | Morley | Morley Tunnel (MDL1/36) | Trial Pit |  | Olly Phillips | keep | W44 |  |  |  |  |
| A62350 |  | Trial Pit | 1d | 2020-06-13 A | 2020-06-13 A | A72630 | 100% |  |  | start on or after 2020-06-13 | Structural Soils |  | MT-TP-A:61000 UP | On Track | Week 11 | Weekend | W4 | 37m1384yds to 38m0628yds | Morley | Morley Tunnel (MDL1/36) | Trial Pit | ON | Olly Phillips | keep | W46 | Olly Phillips |  |  |  |
| A62360 |  | Trial Pit | 1d | 2020-06-13 A | 2020-06-13 A | A72630 | 100% |  |  | start on or after 2020-06-13 | Structural Soils |  | MT-TP-A:61000 DN | On Track | Week 11 | Weekend | W4 | 37m1384yds to 38m0628yds | Morley | Morley Tunnel (MDL1/36) | Trial Pit | ON | Olly Phillips | keep | W46 | Olly Phillips |  |  |  |
| A62370 |  | Trial Pit | 1d | 2020-06-13 A | 2020-06-13 A | A72630 | 100% |  |  | start on or after 2020-06-13 | Structural Soils |  | MT-TP-A:61200 UP | On Track | Week 11 | Weekend | W4 | 37m1384yds to 38m0628yds | Morley | Morley Tunnel (MDL1/36) | Trial Pit | ON | Olly Phillips | keep | W46 | Olly Phillips |  |  |  |
| A62380 |  | Trial Pit | 1d | 2020-06-13 A | 2020-06-13 A | A72630 | 100% |  |  | start on or after 2020-06-13 | Structural Soils |  | MT-TP-A:61200 DN | On Track | Week 11 | Weekend | W4 | 37m1384yds to 38m0628yds | Morley | Morley Tunnel (MDL1/36) | Trial Pit | ON | Olly Phillips | keep | W46 | Olly Phillips |  |  |  |
| A65650 |  | E&P Survey | 1d | 2020-06-13 A | 2020-06-13 A | A72630 | 100% |  |  | start on or after 2020-06-13 | Amey |  | FSP19 | On Track | Week 11 | Weekend | W4 | 32m28ch - 33m50ch | Ravensthorpe | Cottingley to Copley Hill | E&P |  | Iain Taylor |  |  |  |  |  |  |
| A65660 |  | E&P Survey | 1d | 2020-06-13 A | 2020-06-13 A | A72630 | 100% |  |  | start on or after 2020-06-13 | Amey |  | FSP 33/12 | On Track | Week 11 | Weekend | W4 | 32m28ch - 33m50ch | Ravensthorpe | Cottingley to Copley Hill | E&P |  | Iain Taylor |  |  |  |  |  |  |
| A65670 |  | E&P Survey | 1d | 2020-06-13 A | 2020-06-13 A | A72630 | 100% |  |  | start on or after 2020-06-13 | Amey |  | FSP 33/20 | On Track | Week 11 | Weekend | W4 | 32m28ch - 33m50ch | Ravensthorpe | Cottingley to Copley Hill | E&P |  | Iain Taylor |  |  |  |  |  |  |
| A65680 |  | E&P Survey | 1d | 2020-06-13 A | 2020-06-13 A | A72630 | 100% |  |  | start on or after 2020-06-13 | Amey |  | FSP 32/32 | On Track | Week 11 | Weekend | W4 | 32m28ch - 33m50ch | Ravensthorpe | Cottingley to Copley Hill | E&P |  | Iain Taylor |  |  |  |  |  |  |
| A67610 |  | Trial Pit | 1d | 2020-06-13 A | 2020-06-13 A | A72630 | 100% |  |  | start on or after 2020-06-13 | Bam Ritchies | MDL1/33 Disused Abutment | MDL1/33/TH/01 | On Track | Week 11 | Weekend | W4 | 35m40ch - 35m70ch | Batley | Cottingley to Copley Hill | Trial Pit | Y | Jamie Hogg |  |  |  |  |  |  |
| A67640 |  | Trial Pit | 1d | 2020-06-13 A | 2020-06-13 A | A72630 | 100% |  |  | start on or after 2020-06-13 | Bam Ritchies | MDL1/33 Disused Abutment | MDL1/33/TH/04 | On Track | Week 11 | Weekend | W4 | 35m40ch - 35m70ch | Batley | Cottingley to Copley Hill | Trial Pit | Y | Jamie Hogg |  |  |  |  |  |  |
| A74900 |  | Ecology | 1d | 2020-06-13 A | 2020-06-13 A |  | 100% |  |  | start on or after 2020-06-13 | Keltbray / Lundys |  |  | On Track | Week 11 | Weekend | W4 | 36m00ch - 38m20ch | Morley/Batley | MDL1/34 | Ecology |  | Tom Wilson |  |  | Tom Wilson |  |  |  |
| A74910 |  | OLE Trial Holes | 1d | 2020-06-13 A | 2020-06-13 A |  | 100% |  |  | start on or after 2020-06-13 | Keltbray / Lundys |  | MDL1-62848-U | On Track | Week 11 | Weekend | W4 | 38m – 40m | Morley | MDL1/34 | OLE Trial Hole |  | Tom Wilson |  |  | Tom Wilson |  |  |  |
| A74920 |  | OLE Trial Holes | 1d | 2020-06-13 A | 2020-06-13 A |  | 100% |  |  | start on or after 2020-06-13 | Keltbray / Lundys |  | MDL1-62886-U | On Track | Week 11 | Weekend | W4 | 38m – 40m | Morley | MDL1/34 | OLE Trial Hole |  | Tom Wilson |  |  | Tom Wilson |  |  |  |
| A75060 |  | Topographical Survey - Control Coordination | 1d | 2020-06-13 A | 2020-06-13 A | A72630 | 100% |  |  | start on or after 2020-06-13 | Bridgeway |  |  | On Track | Week 11 | Weekend | W4 | 35m 56ch To 37m 20ch | Batley SB | Dewsbury Station | Topographical |  | Darren Walsh |  |  |  |  |  |  |
| A75200 |  | Track Alignment | 1d | 2020-06-13 A | 2020-06-13 A |  | 100% |  |  | start on or after 2020-06-13 | Severn Partnership |  |  | On Track | Week 11 | Weekend | W3 | 32m 28ch to 35m 40ch | Dewsbury Stn |  | Topographical |  | John Woods |  |  |  | On Track |  |  |
| A75210 |  | Track Alignment | 1d | 2020-06-13 A | 2020-06-13 A |  | 100% |  |  | start on or after 2020-06-13 | Severn Partnership |  |  | On Track | Week 11 | Weekend | W3 | 32m 28ch to 35m 40ch | Dewsbury Stn |  | Topographical |  | John Woods |  |  |  | On Track |  |  |
| A75320 |  | Temporary Works Walkouts | 1d | 2020-06-13 A | 2020-06-13 A |  | 100% |  |  | start on or after 2020-06-13 | Amey |  |  | On Track | Week 11 | Weekend |  | 38m 20ch to 35m00ch | Morley Station |  | Walkout |  | Gary Rhodes |  |  |  |  |  |  |
| A75550 |  | Rig Demobilisation | 1d | 2020-06-13 A | 2020-06-13 A |  | 100% |  |  | start on or after 2020-06-13 | Bam Nuttall | Ravensthorpe Triangle |  | On Track | Week 11 | Weekend | W3 | 32M28CH - 32M50CH | Ravensthorpe Station |  | Enabling Works | Y | Justin Sena |  |  |  | On Track |  |  |
| A75960 |  | Designers Station Survey | 1d | 2020-06-13 A | 2020-06-13 A |  | 100% |  |  | start on or after 2020-06-13 | Design | Morley Station |  | On Track | Week 11 | Weekend | W2B |  | Morley Station |  | Walkout |  | Janine Bootland |  |  |  |  | 200601 CV - John Kelly Dilapida | * |
| A76060 |  | Drainage Survey - Asset Location & Asset Data | 1d | 2020-06-13 A | 2020-06-13 A |  | 100% |  |  | start on or after 2020-06-13 | Aaron Rail |  | W5 | On Track | Week 11 | Weekend | W4 | 37m 79ch - 38m 65ch | Morley | Morley Tunnel (MDL1/36) | Drainage |  | Mark Bingham |  |  |  |  |  |  |
| A77040 |  | Surveying | 1d | 2020-06-13 A | 2020-06-13 A |  | 100% |  |  | start on or after 2020-06-13 | Bam Ritchies |  |  | On Track | Week 11 | Weekend | W4 | 35m40ch - 38m30ch | Batley / Morley | OB MDL1/29 - Soothill Lane | Walkout | Y | Jamie Hogg |  |  |  |  |  |  |
| A77050 |  | Topographical Survey - Install & Infill Control | 1d | 2020-06-13 A | 2020-06-13 A |  | 100% |  |  | start on or after 2020-06-13 | SEP | MDL1 |  | On Track | Week 11 | Weekend | W4 | 39m34ch - 41m36ch | Dragons Bridge | Morley Tunnel (MDL1/36) | Topographical |  | Dom Keegans |  |  |  |  |  |  |
| A77060 |  | Topographical Survey - Traverse Control | 1d | 2020-06-13 A | 2020-06-13 A |  | 100% |  |  | start on or after 2020-06-13 | SEP | MDL1 |  | On Track | Week 11 | Weekend | W4 | 39m34ch - 41m36ch | Dragons Bridge | Morley Tunnel (MDL1/36) | Topographical |  | Dom Keegans |  |  |  |  |  |  |
| A77130 |  | Surveying | 1d | 2020-06-13 A | 2020-06-13 A |  | 100% |  |  | start on or after 2020-06-13 | Structural Soils |  |  | On Track | Week 11 | Weekend | W4 | 33m54ch - 36m25ch | Batley/Dewsbury/Batley SB | Morley Tunnel (MDL1/36) | Walkout | ON | Olly Phillips | keep | W46 | Olly Phillips |  |  |  |
| A77170 |  | Drainage Walkout/Site Familiarisation | 1d | 2020-06-13 A | 2020-06-13 A |  | 100% |  |  | start on or after 2020-06-13 | Lanes4Drains | Morley West Portal | W4-DR-039, 42, 43, 44-46, 47, 48-50 | On Track | Week 11 | Weekend | W4 | 35m57ch - 38m25ch | Morley | Morley Tunnel (MDL1/36) | Walkout |  | Isaac Derry | keep |  |  |  |  |  |
| A78020 |  | OLE Trial Holes | 1d | 2020-06-13 A | 2020-06-13 A |  | 100% |  |  | start on or after 2020-06-13 | Keltbray / Lundys |  | MDL1-62925-U | On Track | Week 11 | Weekend | W4 | 38m – 40m | Morley | MDL1/34 | OLE Trial Hole |  | Tom Wilson |  |  | Tom Wilson |  |  |  |
| A80890 |  | OLE Trial Holes | 1d | 2020-06-13 A | 2020-06-13 A |  | 100% |  |  | start on or after 2020-06-13 | Keltbray / Lundys |  | MDL1-62966-U | On Track | Week 11 | Weekend | W4 | 38m – 40m | Morley | MDL1/34 | OLE Trial Hole |  | Tom Wilson |  |  | Tom Wilson |  |  |  |
| A80900 |  | OLE Trial Holes | 1d | 2020-06-13 A | 2020-06-13 A |  | 100% |  |  | start on or after 2020-06-13 | Keltbray / Lundys |  | MDL1-63006-U | On Track | Week 11 | Weekend | W4 | 38m – 40m | Morley | MDL1/34 | OLE Trial Hole |  | Tom Wilson |  |  | Tom Wilson |  |  |  |
| A80910 |  | OLE Trial Holes | 1d | 2020-06-13 A | 2020-06-13 A |  | 100% |  |  | start on or after 2020-06-13 | Keltbray / Lundys |  | MDL1-63044-D | On Track | Week 11 | Weekend | W4 | 38m – 40m | Morley | MDL1/34 | OLE Trial Hole |  | Tom Wilson |  |  | Tom Wilson |  |  |  |
| A80920 |  | OLE Trial Holes | 1d | 2020-06-13 A | 2020-06-13 A |  | 100% |  |  | start on or after 2020-06-13 | Keltbray / Lundys |  | MDL1-63044-U | On Track | Week 11 | Weekend | W4 | 38m – 40m | Morley | MDL1/34 | OLE Trial Hole |  | Tom Wilson |  |  | Tom Wilson |  |  |  |
| A80930 |  | OLE Trial Holes | 1d | 2020-06-13 A | 2020-06-13 A |  | 100% |  |  | start on or after 2020-06-13 | Keltbray / Lundys |  | MDL1-63069-U | On Track | Week 11 | Weekend | W4 | 38m – 40m | Morley | MDL1/34 | OLE Trial Hole |  | Tom Wilson |  |  | Tom Wilson |  |  |  |
| A80940 |  | OLE Trial Holes | 1d | 2020-06-13 A | 2020-06-13 A |  | 100% |  |  | start on or after 2020-06-13 | Keltbray / Lundys |  | MDL1-63080-U | On Track | Week 11 | Weekend | W4 | 38m – 40m | Morley | MDL1/34 | OLE Trial Hole |  | Tom Wilson |  |  | Tom Wilson |  |  |  |

Notes:
- A59930: General Comments: 23/03 - Cancelled by Jamie Hogg for midweek 52, resource prioritised to W5 / works. To be replanned
- A59940: General Comments: 24/05 - Scrap rail in 4ft week 08
- A59950: General Comments: 23/03 - Cancelled by Jamie Hogg for midweek 52, resource prioritised to W5 / works. To be replanned / 28/05 - Conflict with NR maintianence all week midweek 11
- A62350: General Comments: 06/04 - SWL's weren't adhering to social distancing rules, therefore were / asked to leave site and works were cancelled / 17/04 - Moved to week 09 when resource is available
- A62360: General Comments: 06/04 - SWL's weren't adhering to social distancing rules, therefore were / asked to leave site and works were cancelled / 17/04 - Moved to week 09 when resource is available
- A62370: General Comments: 06/04 - SWL's weren't adhering to social distancing rules, therefore were / asked to leave site and works were cancelled / 17/04 - Moved to week 09 when resource is available
- A62380: General Comments: 06/04 - SWL's weren't adhering to social distancing rules, therefore were / asked to leave site and works were cancelled / 17/04 - Moved to week 09 when resource is available
- A77130: General Comments: 06/04 - SWL's weren't adhering to social distancing rules, therefore were / asked to leave site and works were cancelled / 17/04 - Moved to week 09 when resource is available

| ID | WBS | Activity | Duration | Start | Finish | Predecessors | Complete | Planned start | Planned finish | Constraint | Calendar | Text 1 | Company Responsible | Location / ELR | GI Reference Number | On-Track Off-Track | Week Number | Weekend/Midweek | Project | Mileage | Location | Discipline | Machines Required | Access Point | Responsibility | On/Off Track | 03.1 Progress Note | 03.2 Progress Note | Comment | Text |
| --- | --- | --- | --- | --- | --- | --- | --- | --- | --- | --- | --- | --- | --- | --- | --- | --- | --- | --- | --- | --- | --- | --- | --- | --- | --- | --- | --- | --- | --- | --- |
|  | 1 | **Mirfield East to Copley Hill (2350 Sat - 0820 Sun) 32m16ch - 38m15ch** |  |  |  |  |  |  |  |  |  |  |  |  |  |  |  |  |  |  |  |  |  |  |  |  |  |  |  |  |
|  | 1 | **Midweek Works** |  | 2019-04-20 | 2020-07-05 |  |  |  |  |  |  |  |  |  |  |  |  |  |  |  |  |  |  |  |  |  |  |  |  |  |
|  | 7 | **Mon - Ravensthorpe to Copley Hill East Jct (2350 - 0545) 32m26ch to 41m68ch** |  | 2019-04-25 | 2020-06-22 |  |  |  |  |  |  |  |  |  |  |  |  |  |  |  |  |  |  |  |  |  |  |  |  |  |
| A59140 |  | ABS | 1d | 2019-04-25 A | 2019-04-25 A | A72630 | 100% | 2020-06-16 | 2020-06-16 | start on or after 2020-06-16 |  | W46 | Bam Ritchies | Done? | AB5513 | On Track | Week 11 | Midweek | W4 | 36m55 | Morley Tunnel | ABS |  |  |  |  |  |  |  |  |
| A59150 |  | ABS | 1d | 2019-04-25 A | 2019-04-25 A | A72630 | 100% | 2020-06-16 | 2020-06-16 | start on or after 2020-06-16 |  | W46 | Bam Ritchies | 2m Scheduled Depth | AB5514 | On Track | Week 11 | Midweek | W4 | 36m57 | Morley Tunnel | ABS |  |  |  |  |  |  |  |  |
| A59170 |  | ABS | 1d | 2019-04-25 A | 2019-04-25 A | A72630 | 100% | 2020-06-16 | 2020-06-16 | start on or after 2020-06-16 |  | W44 | Bam Ritchies | Done? | AB5516 | On Track | Week 11 | Midweek | W4 | 36m61 | Morley Tunnel | ABS |  |  |  |  |  |  |  |  |
| A67650 |  | Trial Pit | 1d | 2020-01-20 A | 2020-01-20 A | A72630 | 100% | 2020-06-16 | 2020-06-16 | start on or after 2020-06-16 |  |  | Structural Soils | MDL1/36P2 Valley Road OBR | MDL1/36P2/TH/01 | On Track | Week 43 | Midweek | W4 | 38m19ch - 38m30ch | OB MDL1/47 - Whitehall Road Dragon Bridge | Trial Pit | PLAN | Dragon Bridge |  |  |  |  |  |  |
| A67660 |  | Trial Pit | 1d | 2020-01-20 A | 2020-01-20 A | A72630 | 100% | 2020-06-16 | 2020-06-16 | start on or after 2020-06-16 |  |  | Structural Soils | MDL1/36P2 Valley Road OBR | MDL1/36P2/TH/02 | On Track | Week 43 | Midweek | W4 | 38m19ch - 38m30ch | OB MDL1/47 - Whitehall Road Dragon Bridge | Trial Pit | PLAN | Dragon Bridge |  |  |  |  |  |  |
| A61880 |  | 5 - Inclined Core - SCOPE INFO REQUIRED | 1d | 2020-06-16 A | 2020-06-16 A | A72630 | 100% |  |  | start on or after 2020-06-16 |  |  | Bam Ritchies | Batley Station | IC5 | On Track | Week 11 | Midweek | W4 | 35m9 | Batley Station Subway | Coring | Y | Batley Station | Jamie Hogg |  |  |  |  |  |
| A61900 |  | 7 - Inclined Core | 1d | 2020-06-16 A | 2020-06-16 A | A72630 | 100% |  |  | start on or after 2020-06-16 |  |  | Bam Ritchies | Batley Station | IC7 | On Track | Week 11 | Midweek | W4 | 35m9 | Batley Station Subway | Coring | Y | Batley Station | Jamie Hogg |  |  |  |  |  |
| A61910 |  | 8 - Inclined Core | 1d | 2020-06-16 A | 2020-06-16 A | A72630 | 100% |  |  | start on or after 2020-06-16 |  |  | Bam Ritchies | Batley Station | IC8 | On Track | Week 11 | Midweek | W4 | 35m9 | Batley Station Subway | Coring | Y | Batley Station | Jamie Hogg |  |  |  |  |  |
| A62070 |  | P4S Scoping / Closing Out | 1d | 2020-06-16 A | 2020-06-16 A |  | 100% |  |  | start on or after 2020-06-16 | A03 5 Day Workweek (BH & Xmas as Work) |  | Amey |  |  | On Track | Week 11 | Midweek |  | 38m 19ch - 41m 09ch |  | Walkout |  | Dragon Bridge/Morley | Kyle Spence |  |  |  |  |  |
| A75240 |  | Control Install & coordination | 1d | 2020-06-16 A | 2020-06-16 A |  | 100% |  |  | start on or after 2020-06-16 |  |  | Severn Partnership |  |  | On Track | Week 11 | Midweek | W3 | 33m 50ch - 35m 40ch |  | Topographical |  | Dewsbury Stn | John Woods | On Track |  |  |  |  |
| A75250 |  | Control Install & coordination | 1d | 2020-06-16 A | 2020-06-16 A |  | 100% |  |  | start on or after 2020-06-16 |  |  | Severn Partnership |  |  | On Track | Week 11 | Midweek | W3 | 33m 50ch - 35m 40ch |  | Topographical |  | Dewsbury Stn | John Woods | On Track |  |  |  |  |
| A75790 |  | Topographical Survey - Densify Control | 1d | 2020-06-16 A | 2020-06-16 A |  | 100% |  |  | start on or after 2020-06-16 |  |  | SEP | MDL1 |  | On Track | Week 11 | Midweek | W4 | 41m36ch - 41m56ch | Morley Tunnel (MDL1/36) | Topographical |  | Industrial Yard | Dom Keegans |  |  |  |  |  |
| A75810 |  | Topographical Survey - Static Scanning | 1d | 2020-06-16 A | 2020-06-16 A |  | 100% |  |  | start on or after 2020-06-16 |  |  | SEP | MDL1/49 & MDL1/50 |  | On Track | Week 11 | Midweek | W4 | 41m42ch - 41m48ch | Morley Tunnel (MDL1/36) | Topographical |  | Industrial Yard | Dom Keegans |  |  |  |  |  |
| A75970 |  | Designers Station Survey | 1d | 2020-06-16 A | 2020-06-16 A |  | 100% |  |  | start on or after 2020-06-16 |  |  | Design | Batley Station |  | On Track | Week 11 | Midweek | W2B | 35m09ch |  | Walkout |  | Batley | Janine Bootland |  | 200601 CV - John Kelly Dilapida | * |  |  |
| A76120 |  | Topographical Survey - Track Survey | 1d | 2020-06-16 A | 2020-06-16 A |  | 100% |  |  | start on or after 2020-06-16 |  |  | Bridgeway |  |  | On Track | Week 11 | Midweek | W4 | 35m 56ch To 36m25ch | Dewsbury Station | Topographical |  | Batley SB | Darren Walsh |  |  |  |  |  |
| A76160 |  | E&P Survey | 1d | 2020-06-16 A | 2020-06-16 A |  | 100% |  |  | start on or after 2020-06-16 |  |  | Design |  | FSP 38/15 | On Track | Week 11 | Midweek | W4 | 38m10ch - 39m00ch | Cottingley to Copley Hill | E&P |  | Morley | Iain Taylor |  |  |  |  |  |
| A76170 |  | E&P Survey | 1d | 2020-06-16 A | 2020-06-16 A |  | 100% |  |  | start on or after 2020-06-16 |  |  | Design |  | FSP 38/21 | On Track | Week 11 | Midweek | W4 | 38m10ch - 39m00ch | Cottingley to Copley Hill | E&P |  | Morley | Iain Taylor |  |  |  |  |  |
| A76180 |  | E&P Survey | 1d | 2020-06-16 A | 2020-06-16 A |  | 100% |  |  | start on or after 2020-06-16 |  |  | Design |  | FSP 38/33 | On Track | Week 11 | Midweek | W4 | 38m10ch - 39m00ch | Cottingley to Copley Hill | E&P |  | Morley | Iain Taylor |  |  |  |  |  |
| A76290 |  | Prep For Safety - Bridge 6 & 7 Handrail Installation | 1d | 2020-06-16 A | 2020-06-16 A |  | 100% |  |  | start on or after 2020-06-16 |  |  | Bam Nuttall |  |  | On Track | Week 11 | Midweek | W4 | MDL1 32m 49ch - 32m 60ch | Cottingley to Copley Hill | Prep For Safety |  | MDL1 32m 0928y | Mark Cooper |  |  |  |  |  |
| A77160 |  | Ecology | 1d | 2020-06-16 A | 2020-06-16 A |  | 100% |  |  | start on or after 2020-06-16 |  |  | Keltbray / Lundys |  |  | On Track | Week 11 | Midweek | W4 | 35m09ch - 36m00ch | MDL1/34 | Ecology |  | Batley | Tom Wilson |  |  |  | Tom Wilson |  |
| A77180 |  | Drainage Walkout/Site Familiarisation | 1d | 2020-06-16 A | 2020-06-16 A |  | 100% |  |  | start on or after 2020-06-16 |  |  | Lanes4Drains | Morley West Portal | DR-051 - 190,W4-DR-191 - 195,W4-DR-196,W4-DR-060 & 197 | On Track | Week 11 | Midweek | W4 | 35m57ch - 36m25ch | Morley Tunnel (MDL1/36) | Walkout |  | Batley | Isaac Derry |  |  |  |  | keep |
| A78360 |  | OLE Trial Holes | 1d | 2020-06-16 A | 2020-06-16 A |  | 100% |  |  | start on or after 2020-06-16 |  |  | Keltbray / Lundys |  | MDL1 62807 UP | On Track | Week 11 | Midweek | W4 | 38m – 40m | MDL1/34 | OLE Trial Holes |  | Cottingley | Tom Wilson |  |  |  | Tom Wilson |  |
| A78370 |  | OLE Trial Holes | 1d | 2020-06-16 A | 2020-06-16 A |  | 100% |  |  | start on or after 2020-06-16 |  |  | Keltbray / Lundys |  | MDL1 62766 UP | On Track | Week 11 | Midweek | W4 | 38m – 40m | MDL1/34 | OLE Trial Holes |  | Cottingley | Tom Wilson |  |  |  | Tom Wilson |  |
| A80950 |  | OLE Trial Holes | 1d | 2020-06-16 A | 2020-06-16 A |  | 100% |  |  | start on or after 2020-06-16 |  |  | Keltbray / Lundys |  | MDL1 62766 DN | On Track | Week 11 | Midweek | W4 | 38m – 40m | MDL1/34 | OLE Trial Holes |  | Cottingley | Tom Wilson |  |  |  | Tom Wilson |  |
| A80960 |  | OLE Trial Holes | 1d | 2020-06-16 A | 2020-06-16 A |  | 100% |  |  | start on or after 2020-06-16 |  |  | Keltbray / Lundys |  | MDL1 62726 UP | On Track | Week 11 | Midweek | W4 | 38m – 40m | MDL1/34 | OLE Trial Holes |  | Cottingley | Tom Wilson |  |  |  | Tom Wilson |  |
| A80970 |  | OLE Trial Holes | 1d | 2020-06-16 A | 2020-06-16 A |  | 100% |  |  | start on or after 2020-06-16 |  |  | Keltbray / Lundys |  | MDL1 62687 UP | On Track | Week 11 | Midweek | W4 | 38m – 40m | MDL1/34 | OLE Trial Holes |  | Cottingley | Tom Wilson |  |  |  | Tom Wilson |  |
| A80980 |  | OLE Trial Holes | 1d | 2020-06-16 A | 2020-06-16 A |  | 100% |  |  | start on or after 2020-06-16 |  |  | Keltbray / Lundys |  | MDL1 62648 UP | On Track | Week 11 | Midweek | W4 | 38m – 40m | MDL1/34 | OLE Trial Holes |  | Cottingley | Tom Wilson |  |  |  | Tom Wilson |  |
| A75780 |  | Topographical Survey - Transfer Off Track Control | 1d | 2020-06-22 A | 2020-06-22 A |  | 100% |  |  | start on or after 2020-06-16 |  |  | SEP | MDL1/41 | 0% | On Track | Week 11 | Midweek | W4 | 39m65ch | Morley Tunnel (MDL1/36) | Topographical |  | Cottingley | Dom Keegans |  |  |  |  |  |
| A75800 |  | Topographical Survey - Infill Control | 1d | 2020-06-22 A | 2020-06-22 A |  | 100% |  |  | start on or after 2020-06-16 |  |  | SEP | MDL1 | 90% | On Track | Week 11 | Midweek | W4 | 39m34ch to 40m56ch | Morley Tunnel (MDL1/36) | Topographical |  | Gelderd/Cottingley | Dom Keegans |  |  |  |  |  |
| A77070 |  | Topographical Survey - Desify Control & Topo | 1d | 2020-06-22 A | 2020-06-22 A |  | 100% |  |  | start on or after 2020-06-16 |  |  | SEP | MDL1 | 0% | On Track | Week 11 | Midweek | W4 | 39m34ch to 39m48ch | Morley Tunnel (MDL1/36) | Topographical |  | Cottingley | Dom Keegans |  |  |  |  |  |

Notes:
- A61880: General Comments: 28/05 - Heavily congested worksite midweek 11 meant works could not be / completed. Supplier also believes these works do not require a possession to / complete. Have been provisionally moved ti week 15 & 16, with the aim / to improve upon these dates
- A61900: General Comments: 28/05 - Heavily congested worksite midweek 11 meant works could not be / completed. Supplier also believes these works do not require a possession to / complete. Have been provisionally moved ti week 15 & 16, with the aim / to improve upon these dates
- A61910: General Comments: 28/05 - Heavily congested worksite midweek 11 meant works could not be / completed. Supplier also believes these works do not require a possession to / complete. Have been provisionally moved ti week 15 & 16, with the aim / to improve upon these dates
- A75780: General Comments: 16/06 - Unable to complete due to Bridgeway staff working for NWR ASPRO / using same control points.
- A75800: General Comments: 16/06 - Unable to complete due to Bridgeway staff working for NWR ASPRO / using same control points.
- A77070: General Comments: ? / 16/06 - Unable to / complete due to Bridgeway staff working for NWR ASPRO using same control points.

| ID | WBS | Activity | Duration | Start | Finish | Predecessors | Complete | Planned start | Planned finish | Constraint | Calendar | Company Responsible | Location / ELR | GI Reference Number | On-Track Off-Track | Week Number | Weekend/Midweek | Project | Mileage | Location | Discipline | Text 1 | Machines Required | Access Point | Responsibility | Comment | On/Off Track | Text |
| --- | --- | --- | --- | --- | --- | --- | --- | --- | --- | --- | --- | --- | --- | --- | --- | --- | --- | --- | --- | --- | --- | --- | --- | --- | --- | --- | --- | --- |
|  | 1 | **Tues - Ravensthorpe to Copley Hill East Jct (2350 - 0545) 32m26ch to 41m75ch** |  | 2019-04-22 | 2020-06-17 |  |  |  |  |  |  |  |  |  |  |  |  |  |  |  |  |  |  |  |  |  |  |  |
| A67870 |  | ABS | 1d | 2019-04-22 A | 2019-04-22 A | A72630 | 100% | 2020-06-17 | 2020-06-17 | start on or after 2020-06-17 |  | Bam Ritchies | Done? | AB5503 | On Track | Week 11 | Midweek | W4 | 36m33ch | OB MDL1/29 - Soothill Lane | ABS |  |  |  |  |  |  |  |
| A59100 |  | ABS | 1d | 2019-04-25 A | 2019-04-25 A | A72630 | 100% | 2020-06-17 | 2020-06-17 | start on or after 2020-06-17 |  | Bam Ritchies | 2m Scheduled Depth | AB5509 | On Track | Week 11 | Midweek | W4 | 36m47 | Morley Tunnel | ABS | W44 |  |  |  |  |  |  |
| A61110 |  | Trial Hole - PART 2 | 1d | 2020-03-12 A | 2020-03-12 A | A72630 | 100% | 2020-06-17 | 2020-06-17 | start on or after 2020-06-17 |  | Structural Soils | PART 2 Ashworth Rd | MDL1/17/TH/01 - DESCOPED | On Track | Week 50 | Midweek | W4 | DESCOPED 12/03/2020 | OB MDL1/17 - Ashworth Road | Trial Pit |  | PLAN | Dewsbury |  |  |  |  |
| A67790 |  | Trial Pit | 1d | 2020-03-12 A | 2020-03-12 A | A72630 | 100% | 2020-06-17 | 2020-06-17 | start on or after 2020-06-17 |  | Structural Soils | MDL1/29 Soothill Lane | MDL1/29/TH/01 - DESCOPED | On Track | Week 50 | Midweek | W4 | DESCOPED 12/03/2020 | OB MDL1/29 - Soothill Lane | Trial Pit |  | PLAN | Batley |  |  |  |  |
| A67800 |  | Trial Pit | 1d | 2020-03-12 A | 2020-03-12 A | A72630 | 100% | 2020-06-17 | 2020-06-17 | start on or after 2020-06-17 |  | Structural Soils | MDL1/29 Soothill Lane | MDL1/29/TH/02 | On Track | Week 50 | Midweek | W4 | DESCOPED 12/03/2020 | OB MDL1/29 - Soothill Lane | Trial Pit |  | PLAN | Batley |  |  |  |  |
| A67810 |  | Trial Pit | 1d | 2020-03-12 A | 2020-03-12 A | A72630 | 100% | 2020-06-17 | 2020-06-17 | start on or after 2020-06-17 |  | Structural Soils | MDL1/29 Soothill Lane | MDL1/29/TH/05 | On Track | Week 50 | Midweek | W4 | DESCOPED 12/03/2020 | OB MDL1/29 - Soothill Lane | Trial Pit |  | PLAN | Batley |  |  |  |  |
| A67820 |  | Trial Pit | 1d | 2020-03-12 A | 2020-03-12 A | A72630 | 100% | 2020-06-17 | 2020-06-17 | start on or after 2020-06-17 |  | Structural Soils | MDL1/29 Soothill Lane | MDL1/29/TH/06 | On Track | Week 50 | Midweek | W4 | DESCOPED 12/03/2020 | OB MDL1/29 - Soothill Lane | Trial Pit |  | PLAN | Batley |  |  |  |  |
| A61780 |  | 9 - Horizontal Core - SCOPE INFO REQUIRED | 1d | 2020-06-17 A | 2020-06-17 A | A72630 | 100% |  |  | start on or after 2020-06-17 |  | Bam Ritchies | Batley Station | HC9 | On Track | Week 11 | Midweek | W4 | 35m9 | Batley Station Subway | Coring |  | Y | Batley Station | Jamie Hogg |  |  |  |
| A61800 |  | 11 - Horizontal Core - SCOPE INFO REQUIRED | 1d | 2020-06-17 A | 2020-06-17 A | A72630 | 100% |  |  | start on or after 2020-06-17 |  | Bam Ritchies | Batley Station | HC11 | On Track | Week 11 | Midweek | W4 | 35m9 | Batley Station Subway | Coring |  | Y | Batley Station | Jamie Hogg |  |  |  |
| A61890 |  | 6 - Inclined Core - SCOPE INFO REQUIRED | 1d | 2020-06-17 A | 2020-06-17 A | A72630 | 100% |  |  | start on or after 2020-06-17 |  | Bam Ritchies | Batley Station | IC6 | On Track | Week 11 | Midweek | W4 | 35m9 | Batley Station Subway | Coring |  | Y | Batley Station | Jamie Hogg |  |  |  |
| A74960 |  | OLE Setting Out/Trial Holes | 1d | 2020-06-17 A | 2020-06-17 A |  | 100% |  |  | start on or after 2020-06-17 |  | Keltbray / Lundys |  | MDL1 62608 UP | On Track | Week 11 | Midweek | W4 | 38m – 40m | MDL1/34 | OLE Setting Out |  |  | Cottingley | Tom Wilson | Tom Wilson |  |  |
| A75070 |  | Topographical Survey - Track Survey | 1d | 2020-06-17 A | 2020-06-17 A | A72630 | 100% |  |  | start on or after 2020-06-17 |  | Bridgeway |  |  | On Track | Week 11 | Midweek | W4 | 35m 56ch To 36m 25ch | Dewsbury Station | Topographical |  |  | Batley SB | Darren Walsh |  |  |  |
| A75260 |  | Control Install & coordination | 1d | 2020-06-17 A | 2020-06-17 A |  | 100% |  |  | start on or after 2020-06-17 |  | Severn Partnership |  |  | On Track | Week 11 | Midweek | W3 | 32m 28ch - 35m 40ch |  | Topographical |  |  | Dewsbury Stn | John Woods |  | On Track |  |
| A75270 |  | Control Install & coordination | 1d | 2020-06-17 A | 2020-06-17 A |  | 100% |  |  | start on or after 2020-06-17 |  | Severn Partnership |  |  | On Track | Week 11 | Midweek | W3 | 32m 28ch - 35m 40ch |  | Topographical |  |  | Dewsbury Stn | John Woods |  | On Track |  |
| A75820 |  | Topographical Survey - Transfer Off Track Control | 1d | 2020-06-17 A | 2020-06-17 A |  | 100% |  |  | start on or after 2020-06-17 |  | SEP | MDL1/41a |  | On Track | Week 11 | Midweek | W4 | 39m79ch | Morley Tunnel (MDL1/36) | Topographical |  |  | Cottingley | Dom Keegans |  |  |  |
| A75830 |  | Topographical Survey - Densify Control | 1d | 2020-06-17 A | 2020-06-17 A |  | 100% |  |  | start on or after 2020-06-17 |  | SEP | MDL1 |  | On Track | Week 11 | Midweek | W4 | 41m56ch to 41m74ch | Morley Tunnel (MDL1/36) | Topographical |  |  | Copley Yard | Dom Keegans |  |  |  |
| A75840 |  | Topographical Survey - Desify Control & Topo | 1d | 2020-06-17 A | 2020-06-17 A |  | 100% |  |  | start on or after 2020-06-17 |  | SEP | MDL1 |  | On Track | Week 11 | Midweek | W4 | 40m56ch to 40m42ch | Morley Tunnel (MDL1/36) | Topographical |  |  | Gelderd | Dom Keegans |  |  |  |
| A75850 |  | Topographical Survey - Static Scanning | 1d | 2020-06-17 A | 2020-06-17 A |  | 100% |  |  | start on or after 2020-06-17 |  | SEP | MDL1/50 and MDL1/52 |  | On Track | Week 11 | Midweek | W4 | 41m42ch - 41m66ch | Morley Tunnel (MDL1/36) | Topographical |  |  | Copley | Dom Keegans |  |  |  |
| A76190 |  | E&P Survey | 1d | 2020-06-17 A | 2020-06-17 A |  | 100% |  |  | start on or after 2020-06-17 |  | Design |  | FSP 39/00 | On Track | Week 11 | Midweek | W4 | 39m00ch - 40m10ch | Cottingley to Copley Hill | E&P |  |  | White Rose | Iain Taylor |  |  |  |
| A76200 |  | E&P Survey | 1d | 2020-06-17 A | 2020-06-17 A |  | 100% |  |  | start on or after 2020-06-17 |  | Design |  | FSP 39/14 | On Track | Week 11 | Midweek | W4 | 39m00ch - 40m10ch | Cottingley to Copley Hill | E&P |  |  | White Rose | Iain Taylor |  |  |  |
| A76210 |  | E&P Survey | 1d | 2020-06-17 A | 2020-06-17 A |  | 100% |  |  | start on or after 2020-06-17 |  | Design |  | FSP 39/35 | On Track | Week 11 | Midweek | W4 | 39m00ch - 40m10ch | Cottingley to Copley Hill | E&P |  |  | White Rose | Iain Taylor |  |  |  |
| A76300 |  | Prep For Safety - Bridge 6 & 7 Handrail Installation | 1d | 2020-06-17 A | 2020-06-17 A |  | 100% |  |  | start on or after 2020-06-17 |  | Bam Nuttall |  |  | On Track | Week 11 | Midweek | W4 | MDL1 32m 49ch - 32m 60ch | Cottingley to Copley Hill | Prep For Safety |  |  | MDL1 32m 0928y | Mark Cooper |  |  |  |
| A77080 |  | Topographical Survey - Desify Control & Topo | 1d | 2020-06-17 A | 2020-06-17 A |  | 100% |  |  | start on or after 2020-06-17 |  | SEP | MDL1 |  | On Track | Week 11 | Midweek | W4 | 39m48ch to 39m61ch | Morley Tunnel (MDL1/36) | Topographical |  |  | Cottingley | Dom Keegans |  |  |  |
| A77190 |  | Drainage Walkout/Site Familiarisation | 1d | 2020-06-17 A | 2020-06-17 A |  | 100% |  |  | start on or after 2020-06-17 |  | Lanes4Drains | Morley Tunnel | DR-051 - 190,W4-DR-191 - 195,W4-DR-196,W4-DR-060 & 197 | On Track | Week 11 | Midweek | W4 | 35m57ch - 36m25ch | Morley Tunnel (MDL1/36) | Walkout |  |  | TBC | Isaac Derry |  |  | keep |
| A77260 |  | P4S Scoping / Closing Out | 1d | 2020-06-17 A | 2020-06-17 A |  | 100% |  |  | start on or after 2020-06-17 | A03 5 Day Workweek (BH & Xmas as Work) | Amey |  |  | On Track | Week 11 | Midweek |  | 33m10ch - 36m 25ch |  | Walkout |  |  | Toad Holes/Batley | Kyle Spence |  |  |  |
| A78320 |  | Ecology | 1d | 2020-06-17 A | 2020-06-17 A |  | 100% |  |  | start on or after 2020-06-17 |  | Keltbray / Lundys |  |  | On Track | Week 11 | Midweek | W4 | 33m40ch - 35m09ch | MDL1/34 | Ecology |  |  | Dewsbury | Tom Wilson | Tom Wilson |  |  |
| A78380 |  | OLE Setting Out/Trial Holes | 1d | 2020-06-17 A | 2020-06-17 A |  | 100% |  |  | start on or after 2020-06-17 |  | Keltbray / Lundys |  | MDL1 62570 UP | On Track | Week 11 | Midweek | W4 | 38m – 40m | MDL1/34 | OLE Setting Out |  |  | Cottingley | Tom Wilson | Tom Wilson |  |  |
| A78390 |  | OLE Setting Out/Trial Holes | 1d | 2020-06-17 A | 2020-06-17 A |  | 100% |  |  | start on or after 2020-06-17 |  | Keltbray / Lundys |  | MDL1 62570 DN | On Track | Week 11 | Midweek | W4 | 38m – 40m | MDL1/34 | OLE Setting Out |  |  | Cottingley | Tom Wilson | Tom Wilson |  |  |
| A80990 |  | OLE Setting Out/Trial Holes | 1d | 2020-06-17 A | 2020-06-17 A |  | 100% |  |  | start on or after 2020-06-17 |  | Keltbray / Lundys |  | MDL1 62531 UP | On Track | Week 11 | Midweek | W4 | 38m – 40m | MDL1/34 | OLE Setting Out |  |  | Cottingley | Tom Wilson | Tom Wilson |  |  |
| A81000 |  | OLE Setting Out/Trial Holes | 1d | 2020-06-17 A | 2020-06-17 A |  | 100% |  |  | start on or after 2020-06-17 |  | Keltbray / Lundys |  | MDL1 62490 UP | On Track | Week 11 | Midweek | W4 | 38m – 40m | MDL1/34 | OLE Setting Out |  |  | Cottingley | Tom Wilson | Tom Wilson |  |  |
| A81010 |  | OLE Setting Out/Trial Holes | 1d | 2020-06-17 A | 2020-06-17 A |  | 100% |  |  | start on or after 2020-06-17 |  | Keltbray / Lundys |  | MDL1 62490 DN | On Track | Week 11 | Midweek | W4 | 38m – 40m | MDL1/34 | OLE Setting Out |  |  | Cottingley | Tom Wilson | Tom Wilson |  |  |

Notes:
- A61780: General Comments: 28/05 - Heavily congested worksite midweek 11 meant works could not be / completed. Supplier also believes these works do not require a possession to / complete. Have been provisionally moved ti week 15 & 16, with the aim / to improve upon these dates
- A61800: General Comments: 28/05 - Heavily congested worksite midweek 11 meant works could not be / completed. Supplier also believes these works do not require a possession to / complete. Have been provisionally moved ti week 15 & 16, with the aim / to improve upon these dates
- A61890: General Comments: 28/05 - Heavily congested worksite midweek 11 meant works could not be / completed. Supplier also believes these works do not require a possession to / complete. Have been provisionally moved ti week 15 & 16, with the aim / to improve upon these dates

| ID | WBS | Activity | Duration | Start | Finish | Predecessors | Complete | Planned start | Planned finish | Constraint | Calendar | Company Responsible | Location / ELR | GI Reference Number | On-Track Off-Track | Week Number | Weekend/Midweek | Project | Mileage | Location | Discipline | Text 1 | Access Point | Responsibility | Machines Required | Comment | On/Off Track | Text |
| --- | --- | --- | --- | --- | --- | --- | --- | --- | --- | --- | --- | --- | --- | --- | --- | --- | --- | --- | --- | --- | --- | --- | --- | --- | --- | --- | --- | --- |
|  | 2 | **Weds - Ravensthorpe to Copley Hill East Jct (2350 - 0545) 32m26ch to 41m75ch** |  | 2019-04-22 | 2020-06-18 |  |  |  |  |  |  |  |  |  |  |  |  |  |  |  |  |  |  |  |  |  |  |  |
| A59000 |  | ABS | 1d | 2019-04-22 A | 2019-04-22 A | A72630 | 100% | 2020-06-18 | 2020-06-18 | start on or after 2020-06-18 |  | Bam Ritchies | 2m Scheduled Depth | AB5499 | On Track | Week 11 | Midweek | W4 | 36m27 | Morley Tunnel | ABS |  |  |  |  |  |  |  |
| A59120 |  | ABS | 1d | 2019-04-25 A | 2019-04-25 A | A72630 | 100% | 2020-06-18 | 2020-06-18 | start on or after 2020-06-18 |  | Bam Ritchies | Done? | AB5511 | On Track | Week 11 | Midweek | W4 | 36m51 | Morley Tunnel | ABS | W46 |  |  |  |  |  |  |
| A68020 |  | Trial Pit - DESCOPED | 1d | 2020-05-11 A | 2020-05-11 A | A72630 | 100% | 2020-06-18 | 2020-06-18 | start on or after 2020-06-18 |  | Structural Soils |  | TP5500 | On Track | Week 11 | Midweek | W4 | 38m30ch | OB MDL1/29 - Soothill Lane | Trial Pit |  | Morley | Olly Phillips |  |  |  |  |
| A68030 |  | Trial Pit - DESCOPED | 1d | 2020-05-11 A | 2020-05-11 A | A72630 | 100% | 2020-06-18 | 2020-06-18 | start on or after 2020-06-18 |  | Structural Soils |  | TP5501 | On Track | Week 11 | Midweek | W4 | 38m31ch | OB MDL1/29 - Soothill Lane | Trial Pit |  | Morley | Olly Phillips |  |  |  |  |
| A68040 |  | Trial Pit - DESCOPED | 1d | 2020-05-11 A | 2020-05-11 A | A72630 | 100% | 2020-06-18 | 2020-06-18 | start on or after 2020-06-18 |  | Structural Soils |  | TP5502 | On Track | Week 11 | Midweek | W4 | 38m33ch | OB MDL1/29 - Soothill Lane | Trial Pit |  | Morley | Olly Phillips |  |  |  |  |
| A68050 |  | Trial Pit - DESCOPED | 1d | 2020-05-11 A | 2020-05-11 A | A72630 | 100% | 2020-06-18 | 2020-06-18 | start on or after 2020-06-18 |  | Structural Soils |  | TP5503 | On Track | Week 11 | Midweek | W4 | 38m34ch | OB MDL1/29 - Soothill Lane | Trial Pit |  | Morley | Olly Phillips |  |  |  |  |
| A68060 |  | Trial Pit - DESCOPED | 1d | 2020-05-11 A | 2020-05-11 A | A72630 | 100% | 2020-06-18 | 2020-06-18 | start on or after 2020-06-18 |  | Structural Soils |  | TP5504 | On Track | Week 11 | Midweek | W4 | 38m36ch | OB MDL1/29 - Soothill Lane | Trial Pit |  | Morley | Olly Phillips |  |  |  |  |
| A68070 |  | Trial Pit - DESCOPED | 1d | 2020-05-11 A | 2020-05-11 A | A72630 | 100% | 2020-06-18 | 2020-06-18 | start on or after 2020-06-18 |  | Structural Soils |  | TP5505 | On Track | Week 11 | Midweek | W4 | 38m37ch | OB MDL1/29 - Soothill Lane | Trial Pit |  | Morley | Olly Phillips |  |  |  |  |
| A68080 |  | Trial Pit - DESCOPED | 1d | 2020-05-11 A | 2020-05-11 A | A72630 | 100% | 2020-06-18 | 2020-06-18 | start on or after 2020-06-18 |  | Structural Soils |  | TP5506 | On Track | Week 11 | Midweek | W4 | 38m40ch | OB MDL1/29 - Soothill Lane | Trial Pit |  | Morley | Olly Phillips |  |  |  |  |
| A68090 |  | Trial Pit - DESCOPED | 1d | 2020-05-11 A | 2020-05-11 A | A72630 | 100% | 2020-06-18 | 2020-06-18 | start on or after 2020-06-18 |  | Structural Soils |  | TP5508 | On Track | Week 11 | Midweek | W4 | 38m45ch | OB MDL1/29 - Soothill Lane | Trial Pit |  | Morley | Olly Phillips |  |  |  |  |
| A61790 |  | 10 - Horizontal Core - SCOPE INFO REQUIRED | 1d | 2020-06-18 A | 2020-06-18 A | A72630 | 100% |  |  | start on or after 2020-06-18 |  | Bam Ritchies | Batley Station | HC10 | On Track | Week 11 | Midweek | W4 | 35m9 | Batley Station Subway | Coring |  |  | Jamie Hogg |  |  |  |  |
| A61810 |  | 12 - Horizontal Core - SCOPE INFO REQUIRED | 1d | 2020-06-18 A | 2020-06-18 A | A72630 | 100% |  |  | start on or after 2020-06-18 |  | Bam Ritchies | Batley Station | HC12 | On Track | Week 11 | Midweek | W4 | 35m9 | Batley Station Subway | Coring |  | Batley Station | Jamie Hogg | Y |  |  |  |
| A74990 |  | OLE Trial Holes | 1d | 2020-06-18 A | 2020-06-18 A |  | 100% |  |  | start on or after 2020-06-18 |  | Keltbray / Lundys |  | MDL1 62449 UP | On Track | Week 11 | Midweek | W4 | 38m – 40m | MDL1/34 | OLE Trial Hole |  | Cottingley | Tom Wilson |  | Tom Wilson |  |  |
| A75090 |  | Topographical Survey - Track Survey | 1d | 2020-06-18 A | 2020-06-18 A | A72630 | 100% |  |  | start on or after 2020-06-18 |  | Bridgeway |  |  | On Track | Week 11 | Midweek | W4 | 35m 56ch To 36m 25ch | Dewsbury Station | Topographical |  | Batley SB | Darren Walsh |  |  |  |  |
| A75280 |  | Control Install & coordination | 1d | 2020-06-18 A | 2020-06-18 A |  | 100% |  |  | start on or after 2020-06-18 |  | Severn Partnership |  |  | On Track | Week 11 | Midweek | W3 | 32m 28ch - 35m 40ch |  | Topographical |  | Dewsbury Stn | John Woods |  |  | On Track |  |
| A75290 |  | Control Install & coordination | 1d | 2020-06-18 A | 2020-06-18 A |  | 100% |  |  | start on or after 2020-06-18 |  | Severn Partnership |  |  | On Track | Week 11 | Midweek | W3 | 32m 28ch - 35m 40ch |  | Topographical |  | Dewsbury Stn | John Woods |  |  | On Track |  |
| A75860 |  | Topographical Survey - Transfer Off Track Control | 1d | 2020-06-18 A | 2020-06-18 A |  | 100% |  |  | start on or after 2020-06-18 |  | SEP | MDL1/43 |  | On Track | Week 11 | Midweek | W4 | 40m30ch | Morley Tunnel (MDL1/36) | Topographical |  | Gelderd | Dom Keegans |  |  |  |  |
| A75870 |  | Topographical Survey - Desify Control & Topo | 1d | 2020-06-18 A | 2020-06-18 A |  | 100% |  |  | start on or after 2020-06-18 |  | SEP | MDL1 |  | On Track | Week 11 | Midweek | W4 | 39m61ch to 39m75ch | Morley Tunnel (MDL1/36) | Topographical |  | Cottingley | Dom Keegans |  |  |  |  |
| A75880 |  | Topographical Survey - Desify Control & Topo | 1d | 2020-06-18 A | 2020-06-18 A |  | 100% |  |  | start on or after 2020-06-18 |  | SEP | MDL1 |  | On Track | Week 11 | Midweek | W4 | 40m42ch to 40m33ch | Morley Tunnel (MDL1/36) | Topographical |  | Gelderd | Dom Keegans |  |  |  |  |
| A75890 |  | Topographical Survey - Gedo Survey | 1d | 2020-06-18 A | 2020-06-18 A |  | 100% |  |  | start on or after 2020-06-18 |  | SEP | MDL1 |  | On Track | Week 11 | Midweek | W4 | 39m34ch to 40m25ch | Morley Tunnel (MDL1/36) | Topographical |  | Cottingley | Dom Keegans |  |  |  |  |
| A76220 |  | E&P Survey | 1d | 2020-06-18 A | 2020-06-18 A |  | 100% |  |  | start on or after 2020-06-18 |  | Design |  |  | On Track | Week 11 | Midweek | W4 | 40m02ch - 41m10ch | Cottingley to Copley Hill | E&P |  | Dragon Bridge/Copley | Iain Taylor |  |  |  |  |
| A76310 |  | Prep For Safety - Bridge 6 & 7 Handrail Installation | 1d | 2020-06-18 A | 2020-06-18 A |  | 100% |  |  | start on or after 2020-06-18 |  | Bam Nuttall |  |  | On Track | Week 11 | Midweek | W4 | MDL1 32m 49ch - 32m 60ch | Cottingley to Copley Hill | Prep For Safety |  | MDL1 32m 0928y | Mark Cooper |  |  |  |  |
| A77090 |  | Topographical Survey - IMS Survey | 1d | 2020-06-18 A | 2020-06-18 A |  | 100% |  |  | start on or after 2020-06-18 |  | SEP | MDL1 |  | On Track | Week 11 | Midweek | W4 | 41m36ch to 41m74ch | Morley Tunnel (MDL1/36) | Topographical |  | Copley | Dom Keegans |  |  |  |  |
| A77200 |  | Drainage Walkout/Site Familiarisation | 1d | 2020-06-18 A | 2020-06-18 A |  | 100% |  |  | start on or after 2020-06-18 |  | Lanes4Drains | Cottingley | W4-DR-198,W4-DR-199 - 235,W4-DR-236 | On Track | Week 11 | Midweek | W4 | 40m00ch - 41m00ch | Morley Tunnel (MDL1/36) | Walkout |  | Cottingley | Isaac Derry |  |  |  | keep |
| A77270 |  | P4S Scoping / Closing Out | 1d | 2020-06-18 A | 2020-06-18 A |  | 100% |  |  | start on or after 2020-06-18 | A03 5 Day Workweek (BH & Xmas as Work) | Amey |  |  | On Track | Week 11 | Midweek |  | 33m10ch - 36m 25ch |  | Walkout |  | Toad Holes/Batley | Kyle Spence |  |  |  |  |
| A78280 |  | Borehole Enabling Works - NO REPORT | 1d | 2020-06-18 A | 2020-06-18 A |  | 100% |  |  | start on or after 2020-06-18 |  | Bam Ritchies |  |  | On Track | Week 11 | Midweek | W4 | 38m00ch - 38m60ch | Batley Station Subway | Enabling Works |  | Morley | Jamie Hogg | Y |  |  |  |
| A78330 |  | Ecology | 1d | 2020-06-18 A | 2020-06-18 A |  | 100% |  |  | start on or after 2020-06-18 |  | Keltbray / Lundys |  |  | On Track | Week 11 | Midweek | W4 | 35m09ch - 36m00ch | MDL1/34 | Ecology |  |  | Tom Wilson |  | Tom Wilson |  |  |
| A78400 |  | OLE Setting Out/Trial Holes | 1d | 2020-06-18 A | 2020-06-18 A |  | 100% |  |  | start on or after 2020-06-18 |  | Keltbray / Lundys |  |  | On Track | Week 11 | Midweek | W4 | 38m – 40m | MDL1/34 | OLE Initiatives |  | Cottingley | Tom Wilson |  | Tom Wilson |  |  |
| A78410 |  | OLE Setting Out/Trial Holes | 1d | 2020-06-18 A | 2020-06-18 A |  | 100% |  |  | start on or after 2020-06-18 |  | Keltbray / Lundys |  |  | On Track | Week 11 | Midweek | W4 | 38m – 40m | MDL1/34 | OLE Initiatives |  | Cottingley | Tom Wilson |  | Tom Wilson |  |  |

Notes:
- A61790: General Comments: 28/05 - Heavily congested worksite midweek 11 meant works could not be / completed. Supplier also believes these works do not require a possession to / complete. Have been provisionally moved ti week 15 & 16, with the aim / to improve upon these dates
- A61810: General Comments: 28/05 - Heavily congested worksite midweek 11 meant works could not be / completed. Supplier also believes these works do not require a possession to / complete. Have been provisionally moved ti week 15 & 16, with the aim / to improve upon these dates

| ID | WBS | Activity | Duration | Start | Finish | Predecessors | Complete | Planned start | Planned finish | Total float | Free float | Constraint | Calendar | Text 1 | Company Responsible | Location / ELR | GI Reference Number | On-Track Off-Track | Week Number | Weekend/Midweek | Project | Mileage | Location | Discipline | Machines Required | Access Point | Responsibility | Comment | On/Off Track | Text |
| --- | --- | --- | --- | --- | --- | --- | --- | --- | --- | --- | --- | --- | --- | --- | --- | --- | --- | --- | --- | --- | --- | --- | --- | --- | --- | --- | --- | --- | --- | --- |
|  | 3 | **Thurs - Ravensthorpe to Copley Hill East Jct (2350 - 0545) 32m26ch to 41m75ch** |  | 2019-04-20 | 2020-07-05 |  |  |  |  |  |  |  |  |  |  |  |  |  |  |  |  |  |  |  |  |  |  |  |  |  |
| A59400 |  | ABS | 1d | 2019-04-20 A | 2019-04-20 A | A72630 | 100% | 2020-06-19 | 2020-06-19 |  |  | start on or after 2020-06-19 |  | W46 | Bam Ritchies | Done? | AB5563 | On Track | Week 11 | Midweek | W4 | 37m74 | Morley Tunnel | ABS |  |  |  |  |  |  |
| A59410 |  | ABS | 1d | 2019-04-20 A | 2019-04-20 A | A72630 | 100% | 2020-06-19 | 2020-06-19 |  |  | start on or after 2020-06-19 |  | W46 | Bam Ritchies | 2m Scheduled Depth | AB5564 | On Track | Week 11 | Midweek | W4 | 37m76 | Morley Tunnel | ABS |  |  |  |  |  |  |
| A59420 |  | ABS | 1d | 2019-04-20 A | 2019-04-20 A | A72630 | 100% | 2020-06-19 | 2020-06-19 |  |  | start on or after 2020-06-19 |  | W46 | Bam Ritchies | Done? | AB5566 | On Track | Week 11 | Midweek | W4 | 38m0 | Morley Tunnel | ABS |  |  |  |  |  |  |
| A59080 |  | ABS | 1d | 2019-04-22 A | 2019-04-22 A | A72630 | 100% | 2020-06-19 | 2020-06-19 |  |  | start on or after 2020-06-19 |  | W44 | Bam Ritchies | Done? | AB5507 | On Track | Week 11 | Midweek | W4 | 36m43 | Morley Tunnel | ABS |  |  |  |  |  |  |
| A59090 |  | ABS | 1d | 2019-04-25 A | 2019-04-25 A | A72630 | 100% | 2020-06-19 | 2020-06-19 |  |  | start on or after 2020-06-19 |  | W44 | Bam Ritchies | Done? | AB5508 | On Track | Week 11 | Midweek | W4 | 36m45 | Morley Tunnel | ABS |  |  |  |  |  |  |
| A67830 |  | ABS | 1d | 2019-10-10 A | 2019-10-10 A | A72630 | 100% | 2020-06-19 | 2020-06-19 |  |  | start on or after 2020-06-19 |  |  | Bam Ritchies | 1m Scheduled Depth | AB5441 | On Track | Week 11 | Midweek | W4 | 34m60ch | OB MDL1/29 - Soothill Lane | ABS |  |  |  |  |  |  |
| A61830 |  | 14 - Horizontal Core - SCOPE INFO REQUIRED | 1d | 2020-06-19 A | 2020-06-19 A | A72630 | 100% |  |  |  |  | start on or after 2020-06-19 |  |  | Bam Ritchies | Batley Station | HC14 | On Track | Week 11 | Midweek | W4 | 35m9 | Batley Station Subway | Coring | Y | Batley Station | Jamie Hogg |  |  |  |
| A75020 |  | OLE Setting Out/Trial Holes - WORKS COMPLETED EARLIER IN WEEK | 1d | 2020-06-19 A | 2020-06-19 A |  | 100% |  |  |  |  | start on or after 2020-06-19 |  |  | Keltbray / Lundys |  |  | On Track | Week 11 | Midweek | W4 | 38m – 40m | MDL1/34 | OLE Setting Out |  | Cottingley | Tom Wilson | Tom Wilson |  |  |
| A75110 |  | Topographical Survey - Track Survey | 1d | 2020-06-19 A | 2020-06-19 A | A72630 | 100% |  |  |  |  | start on or after 2020-06-19 |  |  | Bridgeway |  |  | On Track | Week 11 | Midweek | W4 | 35m 56ch To 36m 25ch | Dewsbury Station | Topographical |  | Batley SB | Darren Walsh |  |  |  |
| A75300 |  | Control Install & coordination | 1d | 2020-06-19 A | 2020-06-19 A |  | 100% |  |  |  |  | start on or after 2020-06-19 |  |  | Severn Partnership |  |  | On Track | Week 11 | Midweek | W3 | 32m 28ch - 35m 40ch |  | Topographical |  | Dewsbury Stn | John Woods |  | On Track |  |
| A75310 |  | Control Install & coordination | 1d | 2020-06-19 A | 2020-06-19 A |  | 100% |  |  |  |  | start on or after 2020-06-19 |  |  | Severn Partnership |  |  | On Track | Week 11 | Midweek | W3 | 32m 28ch - 35m 40ch |  | Topographical |  | Dewsbury Stn | John Woods |  | On Track |  |
| A75900 |  | Topographical Survey - Transfer Off Track Control | 1d | 2020-06-19 A | 2020-06-19 A |  | 100% |  |  |  |  | start on or after 2020-06-19 |  |  | SEP | MDL1/52 |  | On Track | Week 11 | Midweek | W4 | 41m66ch | Morley Tunnel (MDL1/36) | Topographical |  | Copley Yard | Dom Keegans |  |  |  |
| A75910 |  | Topographical Survey - Desify Control & Topo | 1d | 2020-06-19 A | 2020-06-19 A |  | 100% |  |  |  |  | start on or after 2020-06-19 |  |  | SEP | MDL1 |  | On Track | Week 11 | Midweek | W4 | 40m07ch to 40m19ch | Morley Tunnel (MDL1/36) | Topographical |  | Cottingley | Dom Keegans |  |  |  |
| A75920 |  | Topographical Survey - Desify Control & Topo | 1d | 2020-06-19 A | 2020-06-19 A |  | 100% |  |  |  |  | start on or after 2020-06-19 |  |  | SEP | MDL1 |  | On Track | Week 11 | Midweek | W4 | 40m33ch to 40m19ch | Morley Tunnel (MDL1/36) | Topographical |  | Gelderd | Dom Keegans |  |  |  |
| A75930 |  | Topographical Survey - Desify Control & Topo | 1d | 2020-06-19 A | 2020-06-19 A |  | 100% |  |  |  |  | start on or after 2020-06-19 |  |  | SEP | MDL1 |  | On Track | Week 11 | Midweek | W4 | 39m75ch to 40m07ch | Morley Tunnel (MDL1/36) | Topographical |  | Cottingley | Dom Keegans |  |  |  |
| A76230 |  | E&P Survey | 2d | 2020-06-19 A | 2020-06-20 A |  | 100% |  |  |  |  | start on or after 2020-06-19 |  |  | Design |  |  | On Track | Week 11 | Midweek | W4 | 41m00ch - 41m75ch | Cottingley to Copley Hill | E&P |  | Copley | Iain Taylor |  |  |  |
| A76320 |  | Prep For Safety - Bridge 6 & 7 Handrail Installation | 1d | 2020-06-19 A | 2020-06-19 A |  | 100% |  |  |  |  | start on or after 2020-06-19 |  |  | Bam Nuttall |  |  | On Track | Week 11 | Midweek | W4 | MDL1 32m 49ch - 32m 60ch | Cottingley to Copley Hill | Prep For Safety |  | MDL1 32m 0928y | Mark Cooper |  |  |  |
| A77100 |  | Topographical Survey - IMS Survey | 1d | 2020-06-19 A | 2020-06-19 A |  | 100% |  |  |  |  | start on or after 2020-06-19 |  |  | SEP | MDL1 |  | On Track | Week 11 | Midweek | W4 | 39m34ch to 40m56ch | Morley Tunnel (MDL1/36) | Topographical |  | Gelderd/Cottingley | Dom Keegans |  |  |  |
| A77280 |  | P4S Scoping / Closing Out | 1d | 2020-06-19 A | 2020-06-19 A |  | 100% |  |  |  |  | start on or after 2020-06-19 | A03 5 Day Workweek (BH & Xmas as Work) |  | Amey |  |  | On Track | Week 11 | Midweek |  | 33m10ch - 36m 25ch |  | Walkout |  | Toad Holes/Batley | Kyle Spence |  |  |  |
| A78290 |  | Borehole Enabling Works | 1d | 2020-06-19 A | 2020-06-19 A |  | 100% |  |  |  |  | start on or after 2020-06-19 |  |  | Bam Ritchies |  |  | On Track | Week 11 | Midweek | W4 | 38m00ch - 38m60ch | Batley Station Subway | Enabling Works | Y | Morley | Jamie Hogg |  |  |  |
| A78610 |  | Drainage Walkout/Site Familiarisation - COMPLETE PREVIOUS | 1d | 2020-06-19 A | 2020-06-19 A |  | 100% |  |  |  |  | start on or after 2020-06-19 |  |  | Lanes4Drains | Morley Tunnel | DR-051 - 190,W4-DR-191 - 195,W4-DR-196,W4-DR-060 & 197 | On Track | Week 11 | Midweek | W4 | 35m57ch - 36m25ch | Morley Tunnel (MDL1/36) | Walkout |  | TBC | Isaac Derry |  |  | keep |
| A61340 |  | Paint Sample - CREATE REPORT | 1d | 2020-07-05 | 2020-07-05 | A72630 |  |  |  | 341d |  | start on or after 2020-06-19 |  | W46 | Structural Soils | PART 2 | MDL1/29/PS/01 | On Track |  | Midweek | W4 | 35m19 | OB MDL1/29 - Soothill Lane | Paint Sample | EH | Batley | Olly Phillips |  |  |  |
| A61350 |  | Paint Sample | 1d | 2020-07-05 | 2020-07-05 | A72630 |  |  |  | 341d | 35d | start on or after 2020-06-19 |  |  | Bam Ritchies | PART 2 | MDL1/41a/PS/01 | On Track |  | Midweek | W4 | 39m79 | OB MDL1/41A - Cottingley Footbridge | Paint Sample | EH | Dragon Bridge | Jamie Hogg |  |  |  |

Notes:
- A61830: General Comments: 28/05 - Heavily congested worksite midweek 11 meant works could not be / completed. Supplier also believes these works do not require a possession to / complete. Have been provisionally moved ti week 15 & 16, with the aim / to improve upon these dates
- A61350: General Comments: 07/04 - Confirmed at construction meeting that paint sample will not be / going ahead. Contractor in the process of risk assessing all works. Pushed back / intially 6 weeks.

| ID | WBS | Activity | Duration | Start | Finish | Predecessors | Complete | Planned start | Planned finish | Constraint | Company Responsible | Location / ELR | GI Reference Number | On-Track Off-Track | Week Number | Weekend/Midweek | Project | Mileage | Access Point | Location | Discipline | Text 1 | Machines Required | Responsibility | Text | User Text 4 | On/Off Track | Comment | Text 3 | Text 4 |
| --- | --- | --- | --- | --- | --- | --- | --- | --- | --- | --- | --- | --- | --- | --- | --- | --- | --- | --- | --- | --- | --- | --- | --- | --- | --- | --- | --- | --- | --- | --- |
|  | 9 | **Week 12-1** |  |  |  |  |  |  |  |  |  |  |  |  |  |  |  |  |  |  |  |  |  |  |  |  |  |  |  |  |
|  | 1 | **Weekend Works** |  |  |  |  |  |  |  |  |  |  |  |  |  |  |  |  |  |  |  |  |  |  |  |  |  |  |  |  |
|  | 1 | **Ravensthorpe to Copley Hill East (0040 Sat - 0510 Sat) 32m28ch - 41m40ch** |  |  |  |  |  |  |  |  |  |  |  |  |  |  |  |  |  |  |  |  |  |  |  |  |  |  |  |  |
|  | 43 | **Week 13-1** |  | 2019-04-20 | 2020-06-27 |  |  |  |  |  |  |  |  |  |  |  |  |  |  |  |  |  |  |  |  |  |  |  |  |  |
|  | 8 | **Weekend Works** |  | 2019-04-20 | 2020-06-27 |  |  |  |  |  |  |  |  |  |  |  |  |  |  |  |  |  |  |  |  |  |  |  |  |  |
|  | 5 | **Ravensthorpe to Copley Hill East (0040 Sat - 0510 Sat) 32m28ch - 42m02ch** |  | 2019-04-20 | 2020-06-27 |  |  |  |  |  |  |  |  |  |  |  |  |  |  |  |  |  |  |  |  |  |  |  |  |  |
| A67920 |  | ABS | 1d | 2019-04-20 A | 2019-04-20 A | A72630 | 100% | 2020-06-27 | 2020-06-27 | start on or after 2020-06-27 | Bam Ritchies | Done? | AB5565 | On Track | Week 13 | Weekend | W4 | 37m75ch | Batley | OB MDL1/29 - Soothill Lane | ABS |  |  |  |  |  |  |  |  |  |
| A59130 |  | ABS | 1d | 2019-04-25 A | 2019-04-25 A | A72630 | 100% | 2020-06-27 | 2020-06-27 | start on or after 2020-06-27 | Bam Ritchies | Done? | AB5512 | On Track | Week 13 | Weekend | W4 | 36m53 | MOVE POST 5 | Morley Tunnel | ABS | W46 |  |  |  |  |  |  |  |  |
| A67890 |  | ABS | 1d | 2019-04-25 A | 2019-04-25 A | A72630 | 100% | 2020-06-27 | 2020-06-27 | start on or after 2020-06-27 | Bam Ritchies | Done? | AB5510 | On Track | Week 13 | Weekend | W4 | 36m47ch | Batley | OB MDL1/29 - Soothill Lane | ABS |  |  |  |  |  |  |  |  |  |
| A67900 |  | ABS | 1d | 2019-04-25 A | 2019-04-25 A | A72630 | 100% | 2020-06-27 | 2020-06-27 | start on or after 2020-06-27 | Bam Ritchies | Done? | AB5515 | On Track | Week 13 | Weekend | W4 | 36m57ch | Batley | OB MDL1/29 - Soothill Lane | ABS |  |  |  |  |  |  |  |  |  |
| A67910 |  | ABS | 1d | 2019-08-27 A | 2019-08-27 A | A72630 | 100% | 2020-06-27 | 2020-06-27 | start on or after 2020-06-27 | Bam Ritchies |  | AB5558 | On Track | Week 13 | Weekend | W4 | 37m62ch | Batley | OB MDL1/29 - Soothill Lane | ABS |  |  |  |  |  |  |  |  |  |
| A67690 |  | Slit Trench | 1d | 2020-01-22 A | 2020-01-22 A | A72630 | 100% | 2020-06-27 | 2020-06-27 | start on or after 2020-06-27 | Structural Soils | MDL1/36P2 Valley Road OBR | MDL1/36P2/ST/01 | On Track | Week 43 | Weekend | W4 | 38m19ch - 38m30ch | Dragon Bridge | OB MDL1/47 - Whitehall Road Dragon Bridge | Slit Trench |  |  |  |  |  |  |  |  |  |
| A67700 |  | Slit Trench | 1d | 2020-01-22 A | 2020-01-22 A | A72630 | 100% | 2020-06-27 | 2020-06-27 | start on or after 2020-06-27 | Structural Soils | MDL1/36P2 Valley Road OBR | MDL1/36P2/ST/02 | On Track | Week 43 | Weekend | W4 | 38m19ch - 38m30ch | Dragon Bridge | OB MDL1/47 - Whitehall Road Dragon Bridge | Slit Trench |  |  |  |  |  |  |  |  |  |
| A59630 |  | ABS | 1d | 2020-06-27 A | 2020-06-27 A | A72630 | 100% |  |  | start on or after 2020-06-27 | Bam Ritchies | 2m Scheduled Depth | AB5593 | On Track | Week 13 | Weekend | W4 | 40m40ch - 42m02ch | Copley Hill | Cottingley to Copley Hill | ABS | W46 | Y | Jamie Hogg |  |  |  |  |  |  |
| A59650 |  | ABS | 1d | 2020-06-27 A | 2020-06-27 A | A72630 | 100% |  |  | start on or after 2020-06-27 | Bam Ritchies | 1m Scheduled Depth | AB5595 | On Track | Week 13 | Weekend | W4 | 40m40ch - 42m02ch | Gelderd Road | Cottingley to Copley Hill | ABS | W46 | Y | Jamie Hogg |  |  |  |  |  |  |
| A59660 |  | ABS | 1d | 2020-06-27 A | 2020-06-27 A | A72630 | 100% |  |  | start on or after 2020-06-27 | Bam Ritchies | 1m Scheduled Depth | AB5596 | On Track | Week 13 | Weekend | W4 | 40m40ch - 42m02ch | Gelderd Road | Cottingley to Copley Hill | ABS | W46 | Y | Jamie Hogg |  |  |  |  |  |  |
| A59680 |  | ABS | 1d | 2020-06-27 A | 2020-06-27 A | A72630 | 100% |  |  | start on or after 2020-06-27 | Bam Ritchies | 2m Scheduled Depth | AB5598 | On Track | Week 13 | Weekend | W4 | 40m41 | Copley Hill | Cottingley to Copley Hill | ABS |  | Y | Jamie Hogg |  |  |  |  |  |  |
| A65900 |  | Drainage Survey - Asset Location, Asset Data & Dye Trace | 1d | 2020-06-27 A | 2020-06-27 A | A72630 | 100% |  |  | start on or after 2020-06-27 | Lanes4Drains | Dewsbury | W4-DR-009 | On Track | Week 13 | Weekend | W4 | 33m50ch - 34m40ch | Dewsbury | Morley Tunnel (MDL1/36) | Drainage |  |  | Isaac Derry |  |  |  |  |  |  |
| A66240 |  | Drainage Survey - Asset Location, Asset Data & Dye Trace | 1d | 2020-06-27 A | 2020-06-27 A | A72630 | 100% |  |  | start on or after 2020-06-27 | Lanes4Drains | Dewsbury | W4-DR-010 - 020 | On Track | Week 13 | Weekend | W4 | 33m50ch - 34m20ch | Dewsbury | Morley Tunnel (MDL1/36) | Drainage |  |  | Isaac Derry |  |  |  |  |  |  |
| A67390 |  | Coring | 1d | 2020-06-27 A | 2020-06-27 A | A72630 | 100% |  |  | start on or after 2020-06-27 | Structural Soils | MDL1/41/B1 Retaining Wall | MDL1/41/B1/SC/01 | On Track | Week 13 | Weekend | W4 | 41m10ch - 41m20ch | Dragon Bridge | OB MDL1/47 - Whitehall Road Dragon Bridge | Coring |  | 15.06 | Olly Phillips | keep |  |  |  |  |  |
| A67410 |  | Coring | 1d | 2020-06-27 A | 2020-06-27 A | A72630 | 100% |  |  | start on or after 2020-06-27 | Structural Soils | MDL1/41/B1 Retaining Wall | MDL1/41/B1/SC/03 | On Track | Week 13 | Weekend | W4 | 41m10ch - 41m20ch | Dragon Bridge | OB MDL1/47 - Whitehall Road Dragon Bridge | Coring |  | 15.06 | Olly Phillips | keep |  |  |  |  |  |
| A67430 |  | Coring | 1d | 2020-06-27 A | 2020-06-27 A | A72630 | 100% |  |  | start on or after 2020-06-27 | Structural Soils | MDL1/41/B1 Retaining Wall | MDL1/41/B1/SC/05 | On Track | Week 13 | Weekend | W4 | 41m10ch - 41m20ch | Dragon Bridge | OB MDL1/47 - Whitehall Road Dragon Bridge | Coring |  | 15.06 | Olly Phillips | keep |  |  |  |  |  |
| A67450 |  | Coring | 1d | 2020-06-27 A | 2020-06-27 A | A72630 | 100% |  |  | start on or after 2020-06-27 | Structural Soils | MDL1/41/B1 Retaining Wall | MDL1/41/B1/SC/07 | On Track | Week 13 | Weekend | W4 | 41m10ch - 41m20ch | Dragon Bridge | OB MDL1/47 - Whitehall Road Dragon Bridge | Coring |  | 15.06 | Olly Phillips | keep |  |  |  |  |  |
| A67480 |  | Coring | 1d | 2020-06-27 A | 2020-06-27 A | A72630 | 100% |  |  | start on or after 2020-06-27 | Structural Soils | MDL1/41/B1 Retaining Wall | MDL1/41/B1/SC/10 | On Track | Week 13 | Weekend | W4 | 41m10ch - 41m20ch | Dragon Bridge | OB MDL1/47 - Whitehall Road Dragon Bridge | Coring |  | 15.06 | Olly Phillips | keep |  |  |  |  |  |
| A70690 |  | Visual Survey | 1d | 2020-06-27 A | 2020-06-27 A | A72630 | 100% |  |  | start on or after 2020-06-27 | Bam Nuttall | River Calder |  | On Track | Week 13 | Weekend | W4 | 32m653yds - 33m459yds | Ravensthorpe | OB MDL1/47 - Whitehall Road Dragon Bridge | Walkout |  |  | Leon Garrett |  | A |  |  |  |  |
| A75150 |  | Team 1 - Track Survey | 1d | 2020-06-27 A | 2020-06-27 A | A72630 | 100% |  |  | start on or after 2020-06-27 | Bridgeway | MDL13577 |  | On Track | Week 13 | Weekend | W4 | 35m 56ch To 36m 25ch | Batley SB | Dewsbury Station | Topographical |  |  | Darren Walsh |  |  |  |  |  |  |
| A75160 |  | Team 2 - Track Survey | 1d | 2020-06-27 A | 2020-06-27 A | A72630 | 100% |  |  | start on or after 2020-06-27 | Bridgeway |  |  | On Track | Week 13 | Weekend | W4 | 35m 56ch To 36m 25ch | Batley SB | Dewsbury Station | Topographical |  |  | Darren Walsh |  |  |  |  |  |  |
| A75230 |  | Laser Scanning | 1d | 2020-06-27 A | 2020-06-27 A |  | 100% |  |  | start on or after 2020-06-27 | Severn Partnership |  |  | On Track | Week 13 | Weekend | W3 | 32m 28ch to 35m 40ch | Dewsbury Stn |  | Topographical |  |  | John Woods |  |  | On Track |  |  |  |
| A76070 |  | Drainage Survey - Asset Location & Asset Data | 1d | 2020-06-27 A | 2020-06-27 A |  | 100% |  |  | start on or after 2020-06-27 | Aaron Rail |  | W5 | On Track | Week 13 | Weekend | W4 | 37m 79ch - 38m 65ch | Morley | Morley Tunnel (MDL1/36) | Drainage |  |  | Mark Bingham |  |  |  |  |  |  |
| A77140 |  | Surveying | 1d | 2020-06-27 A | 2020-06-27 A |  | 100% |  |  | start on or after 2020-06-27 | Structural Soils |  |  | On Track | Week 13 | Weekend | W4 | 35m1254yds - 38m618yds | Batley/Morley | Morley Tunnel (MDL1/36) | Walkout | W46 | 15.06 | Olly Phillips | keep |  |  | Olly Phillips |  |  |
| A78070 |  | OLE Trial Holes | 1d | 2020-06-27 A | 2020-06-27 A |  | 100% |  |  | start on or after 2020-06-27 | Keltbray / Lundys |  | MDL1-63109-D | On Track | Week 13 | Weekend | W1B | 38m - 40m | Morley/White Rose/Cottingley |  | OLE Trial Holes |  |  | Tom Wilson |  |  |  | Tom Wilson | Remaining Scope | Coring |
| A78080 |  | OLE Trial Holes | 1d | 2020-06-27 A | 2020-06-27 A |  | 100% |  |  | start on or after 2020-06-27 | Keltbray / Lundys |  | MDL1-63109-U | On Track | Week 13 | Weekend | W1B | 38m - 40m | Morley/White Rose/Cottingley |  | OLE Trial Holes |  |  | Tom Wilson |  |  |  | Tom Wilson | Remaining Scope | Coring |
| A78090 |  | OLE Surveying / Setting Out | 1d | 2020-06-27 A | 2020-06-27 A |  | 100% |  |  | start on or after 2020-06-27 | Keltbray / Lundys |  |  | On Track | Week 13 | Weekend | W1B | 38m - 40m | Morley/White Rose/Cottingley |  | OLE Initiatives |  |  | Tom Wilson |  |  |  | Tom Wilson | Remaining Scope | Coring |
| A78110 |  | Topographical Survey - Static Scanning | 1d | 2020-06-27 A | 2020-06-27 A |  | 100% |  |  | start on or after 2020-06-27 | SEP | MDL1 |  | On Track | Week 13 | Weekend | W4 | 39m34ch to 42m02ch | Dragon Bridge | Morley Tunnel (MDL1/36) | Topographical |  |  | Dom Keegans |  |  |  |  |  |  |
| A78120 |  | Topographical Survey - Topo Survey | 1d | 2020-06-27 A | 2020-06-27 A |  | 100% |  |  | start on or after 2020-06-27 | SEP | MDL1 |  | On Track | Week 13 | Weekend | W4 | 39m34ch to 42m02ch | Dragon Bridge | Morley Tunnel (MDL1/36) | Topographical |  |  | Dom Keegans |  |  |  |  |  |  |
| A78300 |  | TP/ABS Contingency | 1d | 2020-06-27 A | 2020-06-27 A |  | 100% |  |  | start on or after 2020-06-27 | Bam Ritchies |  |  | On Track | Week 13 | Weekend | W4 | 35m40ch - 35m70ch | Batley | Cottingley to Copley Hill | Contingency | W46 | Y | Jamie Hogg |  |  |  |  |  |  |
| A78310 |  | Surveying - CANCELLED | 1d | 2020-06-27 A | 2020-06-27 A |  | 100% |  |  | start on or after 2020-06-27 | Bam Ritchies |  |  | On Track | Week 13 | Weekend | W4 | 35m40ch - 38m30ch | Batley / Morley | OB MDL1/29 - Soothill Lane | Walkout |  | Y | Jamie Hogg |  |  |  |  |  |  |
| A81240 |  | OLE Trial Holes | 1d | 2020-06-27 A | 2020-06-27 A |  | 100% |  |  | start on or after 2020-06-27 | Keltbray / Lundys |  | MDL1-63149-D | On Track | Week 13 | Weekend | W1B | 38m - 40m | Morley/White Rose/Cottingley |  | OLE Trial Holes |  |  | Tom Wilson |  |  |  | Tom Wilson | Remaining Scope | Coring |
| A81250 |  | OLE Trial Holes | 1d | 2020-06-27 A | 2020-06-27 A |  | 100% |  |  | start on or after 2020-06-27 | Keltbray / Lundys |  | MDL1-63149-U | On Track | Week 13 | Weekend | W1B | 38m - 40m | Morley/White Rose/Cottingley |  | OLE Trial Holes |  |  | Tom Wilson |  |  |  | Tom Wilson | Remaining Scope | Coring |
| A81260 |  | OLE Trial Holes | 1d | 2020-06-27 A | 2020-06-27 A |  | 100% |  |  | start on or after 2020-06-27 | Keltbray / Lundys |  | MDL1-63192-D | On Track | Week 13 | Weekend | W1B | 38m - 40m | Morley/White Rose/Cottingley |  | OLE Trial Holes |  |  | Tom Wilson |  |  |  | Tom Wilson | Remaining Scope | Coring |
| A81270 |  | OLE Trial Holes | 1d | 2020-06-27 A | 2020-06-27 A |  | 100% |  |  | start on or after 2020-06-27 | Keltbray / Lundys |  | MDL1-63192-U | On Track | Week 13 | Weekend | W1B | 38m - 40m | Morley/White Rose/Cottingley |  | OLE Trial Holes |  |  | Tom Wilson |  |  |  | Tom Wilson | Remaining Scope | Coring |

Notes:
- A67480: General Comments: 07/05 - Works conflicting with NR re-railing on week 5 midweek / shift
- A77140: General Comments: 06/04 - SWL's weren't adhering to social distancing rules, therefore were / asked to leave site and works were cancelled / 17/04 - Moved to week 09 when resource is available

| ID | WBS | Activity | Duration | Start | Finish | Predecessors | Complete | Total float | Free float | Constraint | Company Responsible | Location / ELR | On-Track Off-Track | Week Number | Weekend/Midweek | Project | Mileage | Access Point | Responsibility | Location | Discipline | Machines Required | GI Reference Number | Teams | On/Off Track | 03.1 Progress Note | Text | Text 3 | Text 4 | Comment |
| --- | --- | --- | --- | --- | --- | --- | --- | --- | --- | --- | --- | --- | --- | --- | --- | --- | --- | --- | --- | --- | --- | --- | --- | --- | --- | --- | --- | --- | --- | --- |
|  | 11 | **Week 14-1** |  | 2020-07-05 | 2020-07-05 |  |  |  |  |  |  |  |  |  |  |  |  |  |  |  |  |  |  |  |  |  |  |  |  |  |
|  | 2 | **Weekend Works** |  | 2020-07-05 | 2020-07-05 |  |  |  |  |  |  |  |  |  |  |  |  |  |  |  |  |  |  |  |  |  |  |  |  |  |
|  | 1 | **Ardsley Tunnel to Holbeck Junc (0025 Sun to 0755 Sun) 183m60ch - 184m60ch DOL** |  | 2020-07-05 | 2020-07-05 |  |  |  |  |  |  |  |  |  |  |  |  |  |  |  |  |  |  |  |  |  |  |  |  |  |
| A79250 |  | Topographical Survey - static scan footbridge & GEDO - 70% | 1d | 2020-07-05 A | 2020-07-05 A |  | 100% |  |  | start on or after 2020-07-05 | SEP | MDL1 | On Track | Week 14 | Weekend | W4 | 184m00ch to 184m60ch | Gelderd Road | Dom Keegans | Morley Tunnel (MDL1/36) | Topographical |  |  |  |  |  |  |  |  |  |
| A79260 |  | Topographical Survey - transfer off track control, traverse & topo - 70% | 1d | 2020-07-05 A | 2020-07-05 A |  | 100% |  |  | start on or after 2020-07-05 | SEP | MDL1 | On Track | Week 14 | Weekend | W4 | 184m00ch to 184m60ch | Gelderd Road | Dom Keegans | Morley Tunnel (MDL1/36) | Topographical |  |  |  |  |  |  |  |  |  |
| A79270 |  | Topographical Survey - transfer off track control, traverse & topo - 100% | 1d | 2020-07-05 A | 2020-07-05 A |  | 100% |  |  | start on or after 2020-07-05 | SEP | MDL1 | On Track | Week 14 | Weekend | W4 | 184m00ch to 184m60ch | Gelderd Road | Dom Keegans | Morley Tunnel (MDL1/36) | Topographical |  |  |  |  |  |  |  |  |  |
| A79280 |  | Topographical Survey - transfer off track control, traverse & topo - 70% | 1d | 2020-07-05 A | 2020-07-05 A |  | 100% |  |  | start on or after 2020-07-05 | SEP | MDL1 | On Track | Week 14 | Weekend | W4 | 184m00ch to 184m60ch | Gelderd Road | Dom Keegans | Morley Tunnel (MDL1/36) | Topographical |  |  |  |  |  |  |  |  |  |
| A79290 |  | Topographical Survey - IMS & level DOL limits - 70% | 1d | 2020-07-05 A | 2020-07-05 A |  | 100% |  |  | start on or after 2020-07-05 | SEP | MDL1 | On Track | Week 14 | Weekend | W4 | 184m00ch to 184m60ch | Gelderd Road | Dom Keegans | Morley Tunnel (MDL1/36) | Topographical |  |  |  |  |  |  |  |  |  |
|  | 44 | **Week 15-1** |  | 2020-07-11 | 2020-07-11 |  |  |  |  |  |  |  |  |  |  |  |  |  |  |  |  |  |  |  |  |  |  |  |  |  |
|  | 8 | **Weekend Works** |  | 2020-07-11 | 2020-07-11 |  |  |  |  |  |  |  |  |  |  |  |  |  |  |  |  |  |  |  |  |  |  |  |  |  |
|  | 5 | **Ravensthorpe to Copley Hill East (0040 Sat - 0510 Sat) 32m28ch - 42m02ch** |  | 2020-07-11 | 2020-07-11 |  |  |  |  |  |  |  |  |  |  |  |  |  |  |  |  |  |  |  |  |  |  |  |  |  |
| A55830 |  | ABS | 1d | 2020-07-11 A | 2020-07-11 A | A72630 | 100% |  |  | start on or after 2020-07-11 | Bam Ritchies |  | On Track | Week 15 | Weekend |  | 35m30ch - 36m40ch | Batley SB | Jamie Hogg |  | ABS | 18.06 | AB5467 | TBC | On Track |  |  |  |  |  |
| A56130 |  | ABS | 1d | 2020-07-11 A | 2020-07-11 A | A72630 | 100% |  |  | start on or after 2020-07-11 | Bam Ritchies |  | On Track | Week 15 | Weekend |  | 35m30ch - 36m40ch | Batley SB | Jamie Hogg |  | ABS | 18.06 | AB5477 | TBC | On Track |  |  |  |  |  |
| A58800 |  | ABS | 1d | 2020-07-11 A | 2020-07-11 A | A72630 | 100% |  |  | start on or after 2020-07-11 | Bam Ritchies |  | On Track | Week 15 | Weekend | W4 | 35m30ch - 36m40ch | Batley SB | Jamie Hogg | Batley to Morley Tunnel | ABS | 18.06 | AB5481 |  |  | 200530 CV - Survey Critical |  |  |  |  |
| A58840 |  | ABS | 1d | 2020-07-11 A | 2020-07-11 A | A72630 | 100% |  |  | start on or after 2020-07-11 | Bam Ritchies |  | On Track | Week 15 | Weekend | W4 | 35m30ch - 36m40ch | Batley SB | Jamie Hogg | Batley to Morley Tunnel | ABS | 18.06 | AB5483 |  |  | 200530 CV - Survey Critical |  |  |  |  |
| A58900 |  | ABS | 1d | 2020-07-11 A | 2020-07-11 A | A72630 | 100% |  |  | start on or after 2020-07-11 | Bam Ritchies |  | On Track | Week 15 | Weekend | W4 | 35m30ch - 36m40ch | Batley SB | Jamie Hogg | Batley to Morley Tunnel | ABS | 18.06 | AB5489 |  |  |  |  |  |  |  |
| A59890 |  | ABS | 1d | 2020-07-11 A | 2020-07-11 A | A72630 | 100% |  |  | start on or after 2020-07-11 | Bam Ritchies |  | On Track | Week 15 | Weekend | W4 | 40m40ch - 42m00ch | Copley Hill | Jamie Hogg | Cottingley to Copley Hill | ABS | 18.06 | AB5611 |  |  |  |  |  |  |  |
| A59910 |  | ABS | 1d | 2020-07-11 A | 2020-07-11 A | A72630 | 100% |  |  | start on or after 2020-07-11 | Bam Ritchies |  | On Track | Week 15 | Weekend | W4 | 40m40ch - 42m00ch | Copley Hill | Jamie Hogg | Cottingley to Copley Hill | ABS | 18.06 | AB5613 |  |  |  |  |  |  |  |
| A62400 |  | Team 1 - Control Coordination | 1d | 2020-07-11 A | 2020-07-11 A |  | 100% |  |  | start on or after 2020-07-11 | Bridgeway | Morley Tunnel | On Track | Week 15 | Weekend |  | 35m 04ch To 37m 40ch | Batley LX | Darren Walsh |  | Topographical |  |  |  |  |  |  |  |  |  |
| A67500 |  | Coring | 1d | 2020-07-11 | 2020-07-11 | A72630 |  | 295d | 1d | start on or after 2020-07-11 | Structural Soils | MDL1/41/B1 Retaining Wall | On Track | Week 15 | Weekend | W4 | 41m03ch - 41m40ch | Dragon Bridge | Olly Phillips | OB MDL1/47 - Whitehall Road Dragon Bridge | Coring | 06.07 | MDL1/41/B1/SC/12 - REPLAN |  |  |  | keep |  |  |  |
| A67550 |  | Coring | 1d | 2020-07-11 | 2020-07-11 | A72630 |  | 295d | 1d | start on or after 2020-07-11 | Structural Soils | MDL1/41/B1 Retaining Wall | On Track | Week 15 | Weekend | W4 | 41m03ch - 41m40ch | Dragon Bridge | Olly Phillips | OB MDL1/47 - Whitehall Road Dragon Bridge | Coring | 06.07 | MDL1/41/B1/SC/17 - REPLAN |  |  |  | keep |  |  |  |
| A67560 |  | Coring | 1d | 2020-07-11 | 2020-07-11 | A72630 |  | 295d | 1d | start on or after 2020-07-11 | Structural Soils | MDL1/41/B1 Retaining Wall | On Track | Week 15 | Weekend | W4 | 41m03ch - 41m40ch | Dragon Bridge | Olly Phillips | OB MDL1/47 - Whitehall Road Dragon Bridge | Coring | 06.07 | MDL1/41/B1/SC/18 - REPLAN |  |  |  | keep |  |  |  |
| A67570 |  | Coring | 1d | 2020-07-11 | 2020-07-11 | A72630 |  | 295d | 1d | start on or after 2020-07-11 | Structural Soils | MDL1/41/B1 Retaining Wall | On Track | Week 15 | Weekend | W4 | 41m03ch - 41m40ch | Dragon Bridge | Olly Phillips | OB MDL1/47 - Whitehall Road Dragon Bridge | Coring | 06.07 | MDL1/41/B1/SC/19 - REPLAN |  |  |  | keep |  |  |  |
| A67580 |  | Coring | 1d | 2020-07-11 | 2020-07-11 | A72630 |  | 295d | 1d | start on or after 2020-07-11 | Structural Soils | MDL1/41/B1 Retaining Wall | On Track | Week 15 | Weekend | W4 | 41m03ch - 41m40ch | Dragon Bridge | Olly Phillips | OB MDL1/47 - Whitehall Road Dragon Bridge | Coring | 06.07 | MDL1/41/B1/SC/20 - REPLAN |  |  |  | keep |  |  |  |
| A78140 |  | Topographical Survey - IMS Survey | 1d | 2020-07-11 A | 2020-07-11 A |  | 100% |  |  | start on or after 2020-07-11 | SEP | MDL1 | On Track | Week 15 | Weekend | W4 | 38m15ch to 42m02ch | Dragon Bridge | Dom Keegans | Morley Tunnel (MDL1/36) | Topographical |  |  |  |  |  |  |  |  |  |
| A78150 |  | Topographical Survey - Topo Survey | 1d | 2020-07-11 A | 2020-07-11 A |  | 100% |  |  | start on or after 2020-07-11 | SEP | MDL1 | On Track | Week 15 | Weekend | W4 | 38m15ch to 42m02ch | Cottingley | Dom Keegans | Morley Tunnel (MDL1/36) | Topographical |  |  |  |  |  |  |  |  |  |
| A78160 |  | Topographical Survey - Traverse | 1d | 2020-07-11 A | 2020-07-11 A |  | 100% |  |  | start on or after 2020-07-11 | SEP | MDL1 | On Track | Week 15 | Weekend | W4 | 38m15ch to 42m02ch | Cottingley | Dom Keegans | Morley Tunnel (MDL1/36) | Topographical |  |  |  |  |  |  |  |  |  |
| A78170 |  | OLE Trial Holes | 1d | 2020-07-11 A | 2020-07-11 A |  | 100% |  |  | start on or after 2020-07-11 | Keltbray / Lundys |  | On Track | Week 15 | Weekend | W1B | 38m - 42m | Morley/White Rose/Cottingley | Tom Wilson |  | OLE Trial Hole |  | MDL1-63232-D |  |  |  |  | Remaining Scope | Coring | Tom Wilson |
| A78180 |  | Drainage Survey - Asset Location & Asset Data | 1d | 2020-07-11 A | 2020-07-11 A |  | 100% |  |  | start on or after 2020-07-11 | Aaron Rail |  | On Track | Week 15 | Weekend | W4 | 37m 79ch - 38m 65ch | Morley | Mark Bingham | Morley Tunnel (MDL1/36) | Drainage |  | W5 |  |  |  |  |  |  |  |
| A78660 |  | OLE Trial Holes | 1d | 2020-07-11 A | 2020-07-11 A |  | 100% |  |  | start on or after 2020-07-11 | Keltbray / Lundys |  | On Track | Week 15 | Weekend | W1B | 38m - 42m | Morley/White Rose/Cottingley | Tom Wilson |  | OLE Trial Hole |  | MDL1-63232-U |  |  |  |  | Remaining Scope | Coring | Tom Wilson |
| A78670 |  | OLE Trial Holes | 1d | 2020-07-11 A | 2020-07-11 A |  | 100% |  |  | start on or after 2020-07-11 | Keltbray / Lundys |  | On Track | Week 15 | Weekend | W1B | 38m - 42m | Morley/White Rose/Cottingley | Tom Wilson |  | OLE Trial Hole |  | MDL1-63273-D |  |  |  |  | Remaining Scope | Coring | Tom Wilson |
| A81030 |  | Team 2 - Platforms Scan - 90% - NO KEYS TO CAFE | 1d | 2020-07-11 A | 2020-07-11 A |  | 100% |  |  | start on or after 2020-07-11 | Bridgeway | Batley Station | On Track | Week 15 | Weekend |  | 35m 04ch To 37m 40ch | Batley Station | Darren Walsh |  | Topographical |  |  |  |  |  |  |  |  |  |
| A81160 |  | Walkout - CANCELLED | 1d | 2020-07-11 A | 2020-07-11 A |  | 100% |  |  | start on or after 2020-07-11 | Structural Soils |  | On Track | Week 15 | Weekend | W4 | 38m59ch to 39m37ch | White Rose | Olly Phillips | OB MDL1/47 - Whitehall Road Dragon Bridge | Walkout | 06.07 |  |  |  |  | keep |  |  |  |
| A82220 |  | OLE Trial Holes | 1d | 2020-07-11 A | 2020-07-11 A |  | 100% |  |  | start on or after 2020-07-11 | Keltbray / Lundys |  | On Track | Week 15 | Weekend | W1B | 38m - 42m | Morley/White Rose/Cottingley | Tom Wilson |  | OLE Trial Hole |  | MDL1-63273-U |  |  |  |  | Remaining Scope | Coring | Tom Wilson |
| A82230 |  | OLE Trial Holes | 1d | 2020-07-11 A | 2020-07-11 A |  | 100% |  |  | start on or after 2020-07-11 | Keltbray / Lundys |  | On Track | Week 15 | Weekend | W1B | 38m - 42m | Morley/White Rose/Cottingley | Tom Wilson |  | OLE Trial Hole |  | MDL1-63312-D |  |  |  |  | Remaining Scope | Coring | Tom Wilson |
| A82240 |  | OLE Trial Holes | 1d | 2020-07-11 A | 2020-07-11 A |  | 100% |  |  | start on or after 2020-07-11 | Keltbray / Lundys |  | On Track | Week 15 | Weekend | W1B | 38m - 42m | Morley/White Rose/Cottingley | Tom Wilson |  | OLE Trial Hole |  | MDL1-63312-U |  |  |  |  | Remaining Scope | Coring | Tom Wilson |

Notes:
- A58900: General Comments: 28/05 - Conflict with NR maintianence all week midweek 11
- A59890: General Comments: 23/03 - Cancelled by Jamie Hogg for midweek 52, resource prioritised to W5 / works. To be replanned / 28/05 - Conflict with NR maintianence all week midweek 11
- A59910: General Comments: 23/03 - Cancelled by Jamie Hogg for midweek 52, resource prioritised to W5 / works. To be replanned
- A67500: General Comments: 07/05 - Works conflicting with NR re-railing on week 5 midweek shift / 09/06 - Works clashing with NR re-railing week 11 / 11/07 - SSL works halted by Amey, email from Ben Cantrell 10/07: 'Following / on from the various conversations held this afternoon surrounding the release of / the instruction to work to Structural Soils. Note that all works due to be / undertaken by SSL this weekend, weather breaking ground or not, have now been / cancelled and are not to go ahead. This issue will be picked up on Monday (13th) / and further information will be briefed once a solution is in / place.'
- A67550: General Comments: 11/05 - NR teams over populated access point, trial pits given priority over / cores due to being less intrusive (less equipment, easier to access around / others) / 09/06 - Works clashing with NR re-railing week 11 / 11/07 - SSL works halted by Amey, email from Ben Cantrell 10/07: 'Following / on from the various conversations held this afternoon surrounding the release of / the instruction to work to Structural Soils. Note that all works due to be / undertaken by SSL this weekend, weather breaking ground or not, have now been / cancelled and are not to go ahead. This issue will be picked up on Monday (13th) / and further information will be briefed once a solution is in / place.'
- A67560: General Comments: 11/05 - NR teams over populated access point, trial pits given priority over / cores due to being less intrusive (less equipment, easier to access around / others) / 09/06 - Works clashing with NR re-railing week 11 / 11/07 - SSL works halted by Amey, email from Ben Cantrell 10/07: 'Following / on from the various conversations held this afternoon surrounding the release of / the instruction to work to Structural Soils. Note that all works due to be / undertaken by SSL this weekend, weather breaking ground or not, have now been / cancelled and are not to go ahead. This issue will be picked up on Monday (13th) / and further information will be briefed once a solution is in / place.'
- A67570: General Comments: 11/05 - NR teams over populated access point, trial pits given priority over / cores due to being less intrusive (less equipment, easier to access around / others) / 11/07 - SSL works halted by Amey, email from Ben Cantrell 10/07: 'Following / on from the various conversations held this afternoon surrounding the release of / the instruction to work to Structural Soils. Note that all works due to be / undertaken by SSL this weekend, weather breaking ground or not, have now been / cancelled and are not to go ahead. This issue will be picked up on Monday (13th) / and further information will be briefed once a solution is in / place.'
- A67580: General Comments: 11/05 - NR teams over populated access point, trial pits given priority over / cores due to being less intrusive (less equipment, easier to access around / others) / 11/07 - SSL works halted by Amey, email from Ben Cantrell 10/07: 'Following / on from the various conversations held this afternoon surrounding the release of / the instruction to work to Structural Soils. Note that all works due to be / undertaken by SSL this weekend, weather breaking ground or not, have now been / cancelled and are not to go ahead. This issue will be picked up on Monday (13th) / and further information will be briefed once a solution is in / place.'
- A81160: General Comments: 11/05 - NR teams over populated access point, trial pits given priority / over cores due to being less intrusive (less equipment, easier to access around / others)

| ID | WBS | Activity | Duration | Start | Finish | Predecessors | Total float | Free float | Constraint | Machines Required | Company Responsible | Location / ELR | GI Reference Number | On-Track Off-Track | Week Number | Weekend/Midweek | Project | Mileage | Access Point | Responsibility | Location | Discipline | Text 1 | Text 3 | Text 4 | Comment | On/Off Track |
| --- | --- | --- | --- | --- | --- | --- | --- | --- | --- | --- | --- | --- | --- | --- | --- | --- | --- | --- | --- | --- | --- | --- | --- | --- | --- | --- | --- |
|  | 1 | **Week 16-1** |  | 2020-07-19 | 2020-07-19 |  |  |  |  |  |  |  |  |  |  |  |  |  |  |  |  |  |  |  |  |  |  |
|  | 1 | **Weekend Works** |  | 2020-07-19 | 2020-07-19 |  |  |  |  |  |  |  |  |  |  |  |  |  |  |  |  |  |  |  |  |  |  |
|  | 1 | **Mirfield East to Copley Hill (2350 Sat - 0820 Sun) 32m16ch - 38m15ch** |  |  |  |  |  |  |  |  |  |  |  |  |  |  |  |  |  |  |  |  |  |  |  |  |  |
|  | 2 | **Copley Hill to Leeds East (23:50 Sat to 09:10 Sun ) 184m50ch to 20m26ch (DOL2/HUL4)** |  | 2020-07-19 | 2020-07-19 |  |  |  |  |  |  |  |  |  |  |  |  |  |  |  |  |  |  |  |  |  |  |
| A79060 |  | Site Walkout/Familiarisation | 1d | 2020-07-19 | 2020-07-19 |  | 327d |  | start on or after 2020-07-19 | 29.06 | Lanes4Drains | Copley Jn DOL2 | W4-DR-239 - 240 | On Track | Week 16 | Weekend | W4 | TBC | Copley Jn | Isaac Derry | Morley Tunnel (MDL1/36) | Drainage |  |  |  |  |  |
| A81180 |  | Traversing | 1d | 2020-07-19 | 2020-07-19 |  | 327d |  | start on or after 2020-07-19 |  | SEP |  |  | On Track | Week 16 | Weekend | W4 | 184m50ch - 185m20ch | Copley Jn | Dom Keegans | Morley Tunnel (MDL1/36) | Topographical |  |  |  |  |  |
| A81190 |  | Levelling | 1d | 2020-07-19 | 2020-07-19 |  | 327d |  | start on or after 2020-07-19 |  | SEP |  |  | On Track | Week 16 | Weekend | W4 | 184m50ch - 185m20ch | Copley Jn | Dom Keegans | Morley Tunnel (MDL1/36) | Topographical |  |  |  |  |  |
| A82380 |  | Walkout | 1d | 2020-07-19 | 2020-07-19 |  | 327d |  | start on or after 2020-07-19 | 29.06 | Amey | Full Mileage |  | On Track | Week 16 | Weekend | W4 | Full Mileage | Leeds Station | Gary Rhodes | Morley Tunnel (MDL1/36) | Walkout |  |  |  |  |  |
|  | 47 | **Week 17-1** |  | 2020-07-25 | 2020-08-31 |  |  |  |  |  |  |  |  |  |  |  |  |  |  |  |  |  |  |  |  |  |  |
|  | 8 | **Weekend Works** |  | 2020-07-25 | 2020-07-26 |  |  |  |  |  |  |  |  |  |  |  |  |  |  |  |  |  |  |  |  |  |  |
|  | 2 | **Line Block - Morley Tunnel** |  | 2020-07-26 | 2020-07-26 |  |  |  |  |  |  |  |  |  |  |  |  |  |  |  |  |  |  |  |  |  |  |
| A82300 |  | Traversing Tertiary Control | 1d | 2020-07-26 | 2020-07-26 |  | 320d |  | start on or after 2020-07-26 |  | SEP |  |  | On Track | Week 17 | Weekend | W4 | 35m20ch - 38m27ch | Morley / Batley LX | Dom Keegans | Morley Tunnel (MDL1/36) | Topographical |  |  |  |  |  |
| A82310 |  | Traversing Tertiary Control | 1d | 2020-07-26 | 2020-07-26 |  | 320d |  | start on or after 2020-07-26 |  | SEP |  |  | On Track | Week 17 | Weekend | W4 | 35m20ch - 38m27ch | Morley / Batley LX | Dom Keegans | Morley Tunnel (MDL1/36) | Topographical |  |  |  |  |  |
| A82320 |  | Traversing Tertiary Control | 1d | 2020-07-26 | 2020-07-26 |  | 320d |  | start on or after 2020-07-26 |  | SEP |  |  | On Track | Week 17 | Weekend | W4 | 35m20ch - 38m27ch | Morley / Batley LX | Dom Keegans | Morley Tunnel (MDL1/36) | Topographical |  |  |  |  |  |
| A82330 |  | Traversing Tertiary Control | 1d | 2020-07-26 | 2020-07-26 |  | 320d |  | start on or after 2020-07-26 |  | SEP |  |  | On Track | Week 17 | Weekend | W4 | 35m20ch - 38m27ch | Morley / Batley LX | Dom Keegans | Morley Tunnel (MDL1/36) | Topographical |  |  |  |  |  |
| A82340 |  | Traversing Tertiary Control | 1d | 2020-07-26 | 2020-07-26 |  | 320d |  | start on or after 2020-07-26 |  | SEP |  |  | On Track | Week 17 | Weekend | W4 | 35m20ch - 38m27ch | Morley / Batley LX | Dom Keegans | Morley Tunnel (MDL1/36) | Topographical |  |  |  |  |  |
|  | 5 | **Ravensthorpe to Copley Hill East (0040 Sat - 0510 Sat) 32m28ch - 42m02ch** |  | 2020-07-25 | 2020-07-25 |  |  |  |  |  |  |  |  |  |  |  |  |  |  |  |  |  |  |  |  |  |  |
| A59720 |  | ABS | 1d | 2020-07-25 | 2020-07-25 | A72630 | 87d | 43d | start on or after 2020-07-25 | 13.07 | Bam Ritchies | 1m Scheduled Depth | AB5601 | On Track | Week 17 | Weekend | W4 | 40m40ch - 42m00ch | Copley Hill | Jamie Hogg | Cottingley to Copley Hill | ABS |  |  |  |  |  |
| A59740 |  | ABS | 1d | 2020-07-25 | 2020-07-25 | A72630 | 87d | 43d | start on or after 2020-07-25 | 13.07 | Bam Ritchies | 2m Scheduled Depth | AB5603 | On Track | Week 17 | Weekend | W4 | 40m40ch - 42m00ch | Copley Hill | Jamie Hogg | Cottingley to Copley Hill | ABS |  |  |  |  |  |
| A59830 |  | ABS | 1d | 2020-07-25 | 2020-07-25 | A72630 | 87d | 43d | start on or after 2020-07-25 | 13.07 | Bam Ritchies | 1m Scheduled Depth | AB5605 | On Track | Week 17 | Weekend | W4 | 40m40ch - 42m00ch | Copley Hill | Jamie Hogg | Cottingley to Copley Hill | ABS |  |  |  |  |  |
| A60790 |  | 75mm Horizontal Core - HERITAGE APPROVAL RECIEVED | 1d | 2020-07-25 | 2020-07-25 | A72630 | 281d | 3d | start on or after 2020-07-25 | EH | Bam Ritchies |  | MDL1/23/SC/01 - MOVE POST 17 | On Track |  | Weekend | W4 | 34m21 |  | Jamie Hogg | OB MDL1/23 - Wood Lane | Coring |  |  |  |  |  |
| A60800 |  | 75mm Inclined Core - HERITAGE APPROVAL RECIEVED | 1d | 2020-07-25 | 2020-07-25 | A72630 | 281d | 3d | start on or after 2020-07-25 | EH | Bam Ritchies |  | MDL1/23/SC/02 - MOVE POST 17 | On Track |  | Weekend | W4 | 34m21 |  | Jamie Hogg | OB MDL1/23 - Wood Lane | Coring | W46 |  |  |  |  |
| A61070 |  | Trial Hole | 1d | 2020-07-25 | 2020-07-25 | A72630 | 281d | 1d | start on or after 2020-07-25 | EH | Structural Soils | MOVE POST 17 | MDL1/16/TH/01 | On Track |  | Weekend | W4 | 33m49 |  | Olly Phillips | UB MDL1/16 - George Street | Trial Pit |  |  |  |  |  |
| A61080 |  | Trial Hole | 1d | 2020-07-25 | 2020-07-25 | A72630 | 281d | 1d | start on or after 2020-07-25 | EH | Structural Soils | MOVE POST 17 | MDL1/16/TH/02 | On Track |  | Weekend | W4 | 33m49 |  | Olly Phillips | UB MDL1/16 - George Street | Trial Pit |  |  |  |  |  |
| A61090 |  | Trial Hole | 1d | 2020-07-25 | 2020-07-25 | A72630 | 281d | 1d | start on or after 2020-07-25 | EH | Structural Soils | MOVE POST 17 | MDL1/16/TH/03 | On Track |  | Weekend | W4 | 33m49 |  | Olly Phillips | UB MDL1/16 - George Street | Trial Pit |  |  |  |  |  |
| A61100 |  | Trial Hole | 1d | 2020-07-25 | 2020-07-25 | A72630 | 281d | 1d | start on or after 2020-07-25 | EH | Structural Soils | MOVE POST 17 | MDL1/16/TH/04 | On Track |  | Weekend | W4 | 33m49 |  | Olly Phillips | UB MDL1/16 - George Street | Trial Pit |  |  |  |  |  |
| A66160 |  | Drainage Survey - CCTV & Asset Location | 1d | 2020-07-25 | 2020-07-25 | A72630 | 83d | 71d | start on or after 2020-07-25 |  | Lanes4Drains | Morley West Portal | W4-DR-191 - 195 | On Track | Week 17 | Weekend | W4 | 35m57ch - 38m25ch | Morley West Portal | Isaac Derry | Morley Tunnel (MDL1/36) | Drainage |  |  |  |  |  |
| A66170 |  | Drainage Survey - CCTV & Asset Location | 1d | 2020-07-25 | 2020-07-25 | A72630 | 83d | 71d | start on or after 2020-07-25 |  | Lanes4Drains | Morley West Portal | W4-DR-060 & 197 | On Track | Week 17 | Weekend | W4 | 35m57ch - 38m25ch | Morley West Portal | Isaac Derry | Morley Tunnel (MDL1/36) | Drainage |  |  |  |  |  |
| A67260 |  | Coring | 1d | 2020-07-25 | 2020-07-25 | A72630 | 281d | 1d | start on or after 2020-07-25 | EH | Bam Ritchies | MDL1/33 Disused Abutment | MDL1/33/SC/06 - MOVE POST 17 | On Track |  | Weekend | W4 | 35m40ch - 35m70ch | Dragon Bridge | Jamie Hogg | OB MDL1/47 - Whitehall Road Dragon Bridge | Coring |  |  |  |  |  |
| A67270 |  | Coring | 1d | 2020-07-25 | 2020-07-25 | A72630 | 281d | 1d | start on or after 2020-07-25 | EH | Bam Ritchies | MDL1/33 Disused Abutment | MDL1/33/SC/07 - MOVE POST 17 | On Track |  | Weekend | W4 | 35m40ch - 35m70ch | Dragon Bridge | Jamie Hogg | OB MDL1/47 - Whitehall Road Dragon Bridge | Coring |  |  |  |  |  |
| A67280 |  | Coring | 1d | 2020-07-25 | 2020-07-25 | A72630 | 281d | 1d | start on or after 2020-07-25 | EH | Bam Ritchies | MDL1/33 Disused Abutment | MDL1/33/SC/08 - MOVE POST 17 | On Track |  | Weekend | W4 | 35m40ch - 35m70ch | Dragon Bridge | Jamie Hogg | OB MDL1/47 - Whitehall Road Dragon Bridge | Coring |  |  |  |  |  |
| A78200 |  | OLE Trial Holes | 1d | 2020-07-25 | 2020-07-25 |  | 321d |  | start on or after 2020-07-25 |  | Keltbray / Lundys |  |  | On Track | Week 17 | Weekend | W1B | 38m - 42m | Morley/White Rose/Cottingley | Tom Wilson |  | OLE Trial Hole |  | Remaining Scope | Coring | Tom Wilson |  |
| A78220 |  | OLE Trial Holes | 1d | 2020-07-25 | 2020-07-25 |  | 321d |  | start on or after 2020-07-25 |  | Keltbray / Lundys |  |  | On Track | Week 17 | Weekend | W1B | 38m - 42m | Morley/White Rose/Cottingley | Tom Wilson |  | OLE Trial Hole |  | Remaining Scope | Coring | Tom Wilson |  |
| A78230 |  | OLE Trial Holes | 1d | 2020-07-25 | 2020-07-25 |  | 321d |  | start on or after 2020-07-25 |  | Keltbray / Lundys |  |  | On Track | Week 17 | Weekend | W1B | 38m - 42m | Morley/White Rose/Cottingley | Tom Wilson |  | OLE Trial Hole |  | Remaining Scope | Coring | Tom Wilson |  |
| A80740 |  | Scanning | 1d | 2020-07-25 | 2020-07-25 |  | 321d |  | start on or after 2020-07-25 |  | Severn Partnership |  |  | On Track | Week 17 | Weekend | W3 | 33m 40ch to 35m 40ch | Dewsbury Stn | John Woods |  | Topographical |  |  |  |  | On Track |
| A80760 |  | Drainage Survey - Asset Location & Asset Data | 1d | 2020-07-25 | 2020-07-25 |  | 321d |  | start on or after 2020-07-25 |  | Aaron Rail |  | W5 | On Track | Week 17 | Weekend | W4 | 37m 79ch - 38m 65ch | Morley | Mark Bingham | Morley Tunnel (MDL1/36) | Drainage |  |  |  |  |  |
| A81200 |  | Walkout | 1d | 2020-07-25 | 2020-07-25 |  | 321d |  | start on or after 2020-07-25 | 13.07 | Structural Soils |  |  | On Track | Week 17 | Weekend | W4 | 33m00ch - 33m70ch | Dewsbury | Olly Phillips | UB MDL1/16 - George Street | Walkout |  |  |  |  |  |
| A81400 |  | Walkout | 1d | 2020-07-25 | 2020-07-25 |  | 321d |  | start on or after 2020-07-25 | 13.07 | Structural Soils |  |  | On Track | Week 17 | Weekend | W4 | 33m00ch - 33m70ch | Dewsbury | Olly Phillips | UB MDL1/16 - George Street | Walkout |  |  |  |  |  |
| A81410 |  | Walkout | 1d | 2020-07-25 | 2020-07-25 |  | 321d |  | start on or after 2020-07-25 | 13.07 | Structural Soils |  |  | On Track | Week 17 | Weekend | W4 | 33m00ch - 33m70ch | Dewsbury | Olly Phillips | UB MDL1/16 - George Street | Walkout |  |  |  |  |  |
| A81640 |  | Densify Control | 1d | 2020-07-25 | 2020-07-25 |  | 321d |  | start on or after 2020-07-25 |  | SEP |  |  | On Track | Week 17 | Weekend | W4 | 38m15ch to 42m02ch | Dragon Bridge | Dom Keegans | Morley Tunnel (MDL1/36) | Topographical |  |  |  |  |  |
| A81650 |  | Scanning | 1d | 2020-07-25 | 2020-07-25 |  | 321d |  | start on or after 2020-07-25 |  | SEP |  |  | On Track | Week 17 | Weekend | W4 | 38m15ch to 42m02ch | Dragon Bridge | Dom Keegans | Morley Tunnel (MDL1/36) | Topographical |  |  |  |  |  |
| A81660 |  | Traverse | 1d | 2020-07-25 | 2020-07-25 |  | 321d |  | start on or after 2020-07-25 |  | SEP |  |  | On Track | Week 17 | Weekend | W4 | 38m15ch to 42m02ch | Copley Yard | Dom Keegans | Morley Tunnel (MDL1/36) | Topographical |  |  |  |  |  |

Notes:
- A59720: General Comments: 28/05 - Conflict with NR maintianence all week midweek 11
- A61070: General Comments: 04/05 - 3rd party access won't be granted in time for week 08 / possession / 09/06 - due to midweek 11 loss of access, priority given to coring, these / works had subsequently moved
- A61080: General Comments: 04/05 - 3rd party access won't be granted in time for week 08 / possession / 09/06 - due to midweek 11 loss of access, priority given to coring, these / works had subsequently moved
- A61090: General Comments: 04/05 - 3rd party access won't be granted in time for week 08 / possession / 09/06 - due to midweek 11 loss of access, priority given to coring, these / works had subsequently moved
- A61100: General Comments: 04/05 - 3rd party access won't be granted in time for week 08 / possession / 09/06 - due to midweek 11 loss of access, priority given to coring, these / works had subsequently moved
- A81200: General Comments: 04/05 - 3rd party access won't be granted in time for week 08 / possession / 09/06 - due to midweek 11 loss of access, priority given to coring, these / works had subsequently moved
- A81400: General Comments: 04/05 - 3rd party access won't be granted in time for week 08 / possession / 09/06 - due to midweek 11 loss of access, priority given to coring, these / works had subsequently moved
- A81410: General Comments: 04/05 - 3rd party access won't be granted in time for week 08 / possession / 09/06 - due to midweek 11 loss of access, priority given to coring, these / works had subsequently moved

| ID | WBS | Activity | Duration | Start | Finish | Predecessors | Total float | Free float | Constraint | Calendar | Text 1 | Machines Required | Company Responsible | Location / ELR | GI Reference Number | On-Track Off-Track | Weekend/Midweek | Project | Mileage | Access Point | Responsibility | Location | Discipline | Week Number | Text 3 | Text 4 | Comment |
| --- | --- | --- | --- | --- | --- | --- | --- | --- | --- | --- | --- | --- | --- | --- | --- | --- | --- | --- | --- | --- | --- | --- | --- | --- | --- | --- | --- |
|  | 1 | **Mirfield East to Copley Hill (2350 Sat - 0820 Sun) 32m16ch - 38m15ch** |  |  |  |  |  |  |  |  |  |  |  |  |  |  |  |  |  |  |  |  |  |  |  |  |  |
|  | 1 | **Midweek Works** |  | 2020-07-28 | 2020-08-31 |  |  |  |  |  |  |  |  |  |  |  |  |  |  |  |  |  |  |  |  |  |  |
|  | 7 | **Mon - Ravensthorpe to Copley Hill East Jct (23:50 Mon to 05:45 Tues) 32m20ch to 185m26ch** |  | 2020-07-28 | 2020-07-28 |  |  |  |  |  |  |  |  |  |  |  |  |  |  |  |  |  |  |  |  |  |  |
| A59330 |  | ABS | 1d | 2020-07-28 | 2020-07-28 | A72630 | 47d | 40d | start on or after 2020-07-28 |  | W46 | EH | Bam Ritchies | 1m Scheduled Depth | AB5553 | On Track | Midweek | W4 | 37m54 | Morley | Jamie Hogg | Morley Tunnel | ABS |  |  |  |  |
| A59350 |  | Track Survey @ MDL13568 | 1d | 2020-07-28 | 2020-07-28 |  | 228d |  | start on or after 2020-07-28 | A03 5 Day Workweek (BH & Xmas as Work) |  |  | Bridgeway |  |  | On Track | Midweek |  | 35m 04ch To 35m 60ch | Batley LX | Daren Walsh |  | Topographical | Week 17 |  |  |  |
| A59730 |  | ABS | 1d | 2020-07-28 | 2020-07-28 | A72630 | 84d | 40d | start on or after 2020-07-28 |  |  | EH | Bam Ritchies | 1m Scheduled Depth | AB5602 | On Track | Midweek | W4 | 40m53 |  | Jamie Hogg | Cottingley to Copley Hill | ABS |  |  |  |  |
| A59880 |  | ABS | 1d | 2020-07-28 | 2020-07-28 | A72630 | 84d | 40d | start on or after 2020-07-28 |  |  | EH | Bam Ritchies | 1m Scheduled Depth | AB5610 - REPLAN | On Track | Midweek | W4 | 40m40ch - 42m03ch | Copley / Dragon | Jamie Hogg | Cottingley to Copley Hill | ABS |  |  |  |  |
| A60070 |  | ABS | 1d | 2020-07-28 | 2020-07-28 | A72630 | 84d | 40d | start on or after 2020-07-28 |  |  | EH | Bam Ritchies | 2m Scheduled Depth | AB5628 | On Track | Midweek | W4 | 41m40 | REPLAN COVID-19 | Jamie Hogg | Cottingley to Copley Hill | ABS |  |  |  |  |
| A60810 |  | 75mm Horizontal Core - HERITAGE APPROVAL RECIEVED | 1d | 2020-07-28 | 2020-07-28 | A72630 | 278d | 0d | start on or after 2020-07-28 |  |  | EH | Bam Ritchies |  | MDL1/23/SC/03 | On Track | Midweek | W4 | 34m21 |  |  | OB MDL1/23 - Wood Lane | Coring |  |  |  |  |
| A60820 |  | 75mm Inclined Core - HERITAGE APPROVAL RECIEVED | 1d | 2020-07-28 | 2020-07-28 | A72630 | 278d | 0d | start on or after 2020-07-28 |  | W46 | EH | Bam Ritchies | MOVE - NO SAT NIGHT WEEK 11 | MDL1/23/SC/04 | On Track | Midweek | W4 | 34m21 |  |  | OB MDL1/23 - Wood Lane | Coring |  |  |  |  |
| A60830 |  | 75mm Horizontal Core - HERITAGE APPROVAL RECIEVED | 1d | 2020-07-28 | 2020-07-28 | A72630 | 278d | 0d | start on or after 2020-07-28 |  |  | EH | Bam Ritchies | MOVE - NO SAT NIGHT WEEK 11 | MDL1/23/SC/05 | On Track | Midweek | W4 | 34m21 |  |  | OB MDL1/23 - Wood Lane | Coring |  |  |  |  |
| A60840 |  | 75mm Inclined Core - HERITAGE APPROVAL RECIEVED | 1d | 2020-07-28 | 2020-07-28 | A72630 | 278d | 0d | start on or after 2020-07-28 |  | W46 | EH | Bam Ritchies | MOVE - NO SAT NIGHT WEEK 11 | MDL1/23/SC/06 | On Track | Midweek | W4 | 34m21 |  |  | OB MDL1/23 - Wood Lane | Coring |  |  |  |  |
| A60850 |  | 75mm Horizontal Core - HERITAGE APPROVAL RECIEVED | 1d | 2020-07-28 | 2020-07-28 | A72630 | 278d | 0d | start on or after 2020-07-28 |  |  | EH | Bam Ritchies | MOVE - NO SAT NIGHT WEEK 11 | MDL1/23/SC/07 | On Track | Midweek | W4 | 34m21 |  |  | OB MDL1/23 - Wood Lane | Coring |  |  |  |  |
| A60860 |  | 75mm Inclined Core - HERITAGE APPROVAL RECIEVED | 1d | 2020-07-28 | 2020-07-28 | A72630 | 278d | 0d | start on or after 2020-07-28 |  | W46 | EH | Bam Ritchies | MOVE - NO SAT NIGHT WEEK 11 | MDL1/23/SC/08 | On Track | Midweek | W4 | 34m21 |  |  | OB MDL1/23 - Wood Lane | Coring |  |  |  |  |
| A66210 |  | Drainage Survey - CCTV | 1d | 2020-07-28 | 2020-07-28 | A72630 | 96d | 45d | start on or after 2020-07-28 |  |  | 09.07 | Lanes4Drains | Copley Jn | W4-DR-238 | On Track | Midweek | W4 | 41m60 to 185m25ch | Copley Jn | Isaac Derry | Morley Tunnel (MDL1/36) | Drainage | Week 17 |  |  |  |
| A67850 |  | ABS | 1d | 2020-07-28 | 2020-07-28 | A72630 | 47d | 40d | start on or after 2020-07-28 |  |  | EH | Bam Ritchies | 2m Scheduled Depth | AB5464 | On Track | Midweek | W4 | 35m44ch | MOVE OUT OF 8 |  | OB MDL1/29 - Soothill Lane | ABS |  |  |  |  |
| A78250 |  | OLE Trial Holes | 1d | 2020-07-28 | 2020-07-28 |  | 318d |  | start on or after 2020-07-28 |  |  |  | Keltbray / Lundys |  |  | On Track | Midweek | W1B | 38m - 40m | Morley / Whiterose / Cottingley | Tom Wilson |  | OLE Initiatives | Week 17 | Remaining Scope | Coring | Tom Wilson |
| A78440 |  | E&P Survey | 1d | 2020-07-28 | 2020-07-28 |  | 318d |  | start on or after 2020-07-28 |  |  |  | Design |  | Thornhill RR | On Track | Midweek | W4 |  |  | Iain Taylor | Cottingley to Copley Hill | E&P | Week 17 |  |  |  |
| A78450 |  | E&P Survey | 1d | 2020-07-28 | 2020-07-28 |  | 318d |  | start on or after 2020-07-28 |  |  |  | Design | 33m00ch - 34m00ch | FSP 20 | On Track | Midweek | W4 | 33m00ch - 34m00ch | Ravensthorpe | Iain Taylor | Cottingley to Copley Hill | E&P | Week 17 |  |  |  |
| A78460 |  | E&P Survey | 1d | 2020-07-28 | 2020-07-28 |  | 318d |  | start on or after 2020-07-28 |  |  |  | Design | 33m00ch - 34m00ch | FSP 33/46 | On Track | Midweek | W4 | 33m00ch - 34m00ch | Ravensthorpe | Iain Taylor | Cottingley to Copley Hill | E&P | Week 17 |  |  |  |
| A78470 |  | E&P Survey | 1d | 2020-07-28 | 2020-07-28 |  | 318d |  | start on or after 2020-07-28 |  |  |  | Design | 33m00ch - 34m00ch | FSP 33/26 | On Track | Midweek | W4 | 33m00ch - 34m00ch | Ravensthorpe | Iain Taylor | Cottingley to Copley Hill | E&P | Week 17 |  |  |  |
| A78480 |  | E&P Survey | 1d | 2020-07-28 | 2020-07-28 |  | 318d |  | start on or after 2020-07-28 |  |  |  | Design | 33m00ch - 34m00ch | FSP 33/50 | On Track | Midweek | W4 | 33m00ch - 34m00ch | Ravensthorpe | Iain Taylor | Cottingley to Copley Hill | E&P | Week 17 |  |  |  |
| A78690 |  | OLE Trial Holes | 1d | 2020-07-28 | 2020-07-28 |  | 318d |  | start on or after 2020-07-28 |  |  |  | Keltbray / Lundys |  |  | On Track | Midweek | W1B | 38m - 40m | Morley / Whiterose / Cottingley | Tom Wilson |  | OLE Initiatives | Week 17 | Remaining Scope | Coring | Tom Wilson |
| A78790 |  | Topographical Survey - Static Scan | 1d | 2020-07-28 | 2020-07-28 |  | 318d |  | start on or after 2020-07-28 |  |  |  | SEP | MDL1 |  | On Track | Midweek | W4 | 39m34ch to 42m00ch | Cottingley | Dom Keegans | Morley Tunnel (MDL1/36) | Topographical | Week 17 |  |  |  |
| A78800 |  | Topographical Survey - Topo Survey | 1d | 2020-07-28 | 2020-07-28 |  | 318d |  | start on or after 2020-07-28 |  |  |  | SEP | MDL1 |  | On Track | Midweek | W4 | 39m34ch to 42m00ch | Dragons Bridge | Dom Keegans | Morley Tunnel (MDL1/36) | Topographical | Week 17 |  |  |  |
| A78810 |  | Topographical Survey - Level Control | 1d | 2020-07-28 | 2020-07-28 |  | 318d |  | start on or after 2020-07-28 |  |  |  | SEP | MDL1 |  | On Track | Midweek | W4 | 39m34ch to 42m00ch | Dragons Bridge | Dom Keegans | Morley Tunnel (MDL1/36) | Topographical | Week 17 |  |  |  |
| A78820 |  | Topographical Survey - Level Control | 1d | 2020-07-28 | 2020-07-28 |  | 318d |  | start on or after 2020-07-28 |  |  |  | SEP | MDL1 |  | On Track | Midweek | W4 | 39m34ch to 42m00ch | Cottingley | Dom Keegans | Morley Tunnel (MDL1/36) | Topographical | Week 17 |  |  |  |
| A79190 |  | Scoping & Fencing repairs + Replace Barb Wire With Post & Wire Fence ( was A76350 Wk16 ) | 1d | 2020-07-28 | 2020-07-28 |  | 228d |  | start on or after 2020-07-28 | A03 5 Day Workweek (BH & Xmas as Work) |  |  | Bam Nuttall |  |  | On Track | Midweek |  | MDL1 - 32m 20 - 36m 05 up and down | MDL1 32m 0928y (Ravensthorpe) & / MDL1 35m 57ch (Batley) | Mark Cooper |  | Prep For Safety | Week 17 |  |  |  |
| A79300 |  | Traversing & Levelling | 1d | 2020-07-28 | 2020-07-28 |  | 228d |  | start on or after 2020-07-28 | A03 5 Day Workweek (BH & Xmas as Work) |  |  | Severn Partnership |  |  | On Track | Midweek |  | 33m 70ch - 35m 10ch | Dewsbury Stn | John Woods |  | Topographical | Week 17 |  |  |  |
| A80700 |  | Scoping/Closing | 1d | 2020-07-28 | 2020-07-28 |  | 228d |  | start on or after 2020-07-28 | A03 5 Day Workweek (BH & Xmas as Work) |  |  | Amey |  |  | On Track | Midweek |  | 33m10ch - 36m 25ch | Toad Holes- Batley Station | Kyle Spence |  | Prep For Safety | Week 17 |  |  |  |
| A81070 |  | Drainage Survey - Asset Location, Asset Data & Dye Trace | 1d | 2020-07-28 | 2020-07-28 |  | 318d |  | start on or after 2020-07-28 |  |  | 09.07 | Lanes4Drains | Morley Tunnel & West Portal | W4-DR-051 - 190 | On Track | Midweek | W4 | 35m57ch - 36m25ch | Morley | Isaac Derry | Morley Tunnel (MDL1/36) | Drainage | Week 17 |  |  |  |
| A81080 |  | Drainage Survey - Asset Location, Asset Data & Dye Trace | 1d | 2020-07-28 | 2020-07-28 |  | 318d |  | start on or after 2020-07-28 |  |  | 09.07 | Lanes4Drains | Morley Tunnel | W4-DR-MT | On Track | Midweek | W4 | 35m57ch - 36m25ch | Morley | Isaac Derry | Morley Tunnel (MDL1/36) | Drainage | Week 17 |  |  |  |
| A81090 |  | Drainage Survey - Asset Location, Asset Data & Dye Trace | 1d | 2020-07-28 | 2020-07-28 |  | 318d |  | start on or after 2020-07-28 |  |  | 09.07 | Lanes4Drains | Morley Tunnel Bore and Portals | W4-MT-DRAINAGE | On Track | Midweek | W4 | 35m57ch - 36m25ch | Morley | Isaac Derry | Morley Tunnel (MDL1/36) | Drainage | Week 17 |  |  |  |

Notes:
- A59880: General Comments: 24/05 - Scrap rail in 4ft week 08

| ID | WBS | Activity | Duration | Start | Finish | Predecessors | Total float | Free float | Constraint | Calendar | Machines Required | Company Responsible | Location / ELR | GI Reference Number | On-Track Off-Track | Weekend/Midweek | Project | Mileage | Access Point | Responsibility | Location | Discipline | Week Number | Text 3 | Text 4 | Comment |
| --- | --- | --- | --- | --- | --- | --- | --- | --- | --- | --- | --- | --- | --- | --- | --- | --- | --- | --- | --- | --- | --- | --- | --- | --- | --- | --- |
|  | 1 | **Tues - Ravensthorpe to Copley Hill East Jct (23:50 Mon to 05:45 Tues) 32m20ch to 185m26ch** |  | 2020-07-29 | 2020-07-29 |  |  |  |  |  |  |  |  |  |  |  |  |  |  |  |  |  |  |  |  |  |
| A59900 |  | ABS | 1d | 2020-07-29 | 2020-07-29 | A72630 | 83d | 39d | start on or after 2020-07-29 |  | EH | Bam Ritchies | 1m Scheduled Depth | AB5612 - REPLAN | On Track | Midweek | W4 | 40m40ch - 42m03ch | Copley / Dragon | Jamie Hogg | Cottingley to Copley Hill | ABS |  |  |  |  |
| A59920 |  | ABS | 1d | 2020-07-29 | 2020-07-29 | A72630 | 83d | 39d | start on or after 2020-07-29 |  | EH | Bam Ritchies | 1m Scheduled Depth | AB5614 - REPLAN | On Track | Midweek | W4 | 40m40ch - 42m03ch | Copley / Dragon | Jamie Hogg | Cottingley to Copley Hill | ABS |  |  |  |  |
| A59960 |  | ABS | 1d | 2020-07-29 | 2020-07-29 | A72630 | 83d | 39d | start on or after 2020-07-29 |  | EH | Bam Ritchies | 2m Scheduled Depth | AB5618 - REPLAN | On Track | Midweek | W4 | 40m40ch - 42m03ch | Copley / Dragon | Jamie Hogg | Cottingley to Copley Hill | ABS |  |  |  |  |
| A59980 |  | ABS | 1d | 2020-07-29 | 2020-07-29 | A72630 | 83d | 39d | start on or after 2020-07-29 |  | EH | Bam Ritchies | NEW | AB5620 - REPLAN | On Track | Midweek | W4 | 40m40ch - 42m03ch | Copley / Dragon | Jamie Hogg | Cottingley to Copley Hill | ABS |  |  |  |  |
| A60090 |  | ABS | 1d | 2020-07-29 | 2020-07-29 | A72630 | 83d | 39d | start on or after 2020-07-29 |  | EH | Bam Ritchies | NEW | AB5630 | On Track | Midweek | W4 | 41m32ch - 41m70ch | Copley Hill | Jamie Hogg | Cottingley to Copley Hill | ABS |  |  |  |  |
| A66190 |  | Drainage Survey - CCTV | 1d | 2020-07-29 | 2020-07-29 | A72630 | 95d | 44d | start on or after 2020-07-29 |  | 09.07 | Lanes4Drains | Cottingley | W4-DR-236 | On Track | Midweek | W4 | 40m00ch to 41m00ch | Cottingley | Isaac Derry | Morley Tunnel (MDL1/36) | Drainage | Week 17 |  |  |  |
| A66850 |  | Coring - HERITAGE APPROVAL RECIEVED | 1d | 2020-07-29 | 2020-07-29 | A72630 | 277d | 11d | start on or after 2020-07-29 |  | EH | Bam Ritchies | MDL1/19 Dewsbury Viaduct | MDL1/19/SC/01 | On Track | Midweek | W4 | 33m73ch - 34m02ch | Dragon Bridge |  | OB MDL1/47 - Whitehall Road Dragon Bridge | Coring |  |  |  |  |
| A66860 |  | Coring - HERITAGE APPROVAL RECIEVED | 1d | 2020-07-29 | 2020-07-29 | A72630 | 277d | 11d | start on or after 2020-07-29 |  | EH | Bam Ritchies | MDL1/19 Dewsbury Viaduct | MDL1/19/SC/02 | On Track | Midweek | W4 | 33m73ch - 34m02ch | Dragon Bridge |  | OB MDL1/47 - Whitehall Road Dragon Bridge | Coring |  |  |  |  |
| A66870 |  | Coring - HERITAGE APPROVAL RECIEVED | 1d | 2020-07-29 | 2020-07-29 | A72630 | 277d | 11d | start on or after 2020-07-29 |  | EH | Bam Ritchies | MDL1/19 Dewsbury Viaduct | MDL1/19/SC/03 | On Track | Midweek | W4 | 33m73ch - 34m02ch | Dragon Bridge |  | OB MDL1/47 - Whitehall Road Dragon Bridge | Coring |  |  |  |  |
| A66880 |  | Coring - HERITAGE APPROVAL RECIEVED | 1d | 2020-07-29 | 2020-07-29 | A72630 | 277d | 11d | start on or after 2020-07-29 |  | EH | Bam Ritchies | MDL1/19 Dewsbury Viaduct | MDL1/19/SC/04 | On Track | Midweek | W4 | 33m73ch - 34m02ch | Dragon Bridge |  | OB MDL1/47 - Whitehall Road Dragon Bridge | Coring |  |  |  |  |
| A66890 |  | Coring - HERITAGE APPROVAL RECIEVED | 1d | 2020-07-29 | 2020-07-29 | A72630 | 277d | 11d | start on or after 2020-07-29 |  | EH | Bam Ritchies | MDL1/19 Dewsbury Viaduct | MDL1/19/SC/05 | On Track | Midweek | W4 | 33m73ch - 34m02ch | Dragon Bridge |  | OB MDL1/47 - Whitehall Road Dragon Bridge | Coring |  |  |  |  |
| A66900 |  | Coring - HERITAGE APPROVAL RECIEVED | 1d | 2020-07-29 | 2020-07-29 | A72630 | 277d | 11d | start on or after 2020-07-29 |  | EH | Bam Ritchies | MDL1/19 Dewsbury Viaduct | MDL1/19/SC/06 | On Track | Midweek | W4 | 33m73ch - 34m02ch | Dragon Bridge |  | OB MDL1/47 - Whitehall Road Dragon Bridge | Coring |  |  |  |  |
| A75730 |  | Drainage Survey - CCTV | 1d | 2020-07-29 | 2020-07-29 | A72630 | 79d | 46d | start on or after 2020-07-29 |  | 09.07 | Lanes4Drains | Cottingley | W4-DR-198 | On Track | Midweek | W4 | 40m00ch to 41m00ch | Cottingley | Isaac Derry | Morley Tunnel (MDL1/36) | Drainage | Week 17 |  |  |  |
| A75740 |  | Drainage Survey - CCTV | 1d | 2020-07-29 | 2020-07-29 | A72630 | 79d | 46d | start on or after 2020-07-29 |  | 09.07 | Lanes4Drains | Cottingley | W4-DR-199 - 235 | On Track | Midweek | W4 | 40m00ch to 41m00ch | Cottingley | Isaac Derry | Morley Tunnel (MDL1/36) | Drainage | Week 17 |  |  |  |
| A78210 |  | OLE Trial Holes | 1d | 2020-07-29 | 2020-07-29 |  | 317d |  | start on or after 2020-07-29 |  |  | Keltbray / Lundys |  |  | On Track | Midweek | W1B | 38m - 40m | Morley / Whiterose / Cottingley | Tom Wilson |  | OLE Initiatives | Week 17 | Remaining Scope | Coring | Tom Wilson |
| A78490 |  | E&P Survey | 1d | 2020-07-29 | 2020-07-29 |  | 317d |  | start on or after 2020-07-29 |  |  | Design |  | FSP 34/06 | On Track | Midweek | W4 | 34m - 34m41ch | Dewsbury | Iain Taylor | Cottingley to Copley Hill | E&P | Week 17 |  |  |  |
| A78500 |  | E&P Survey | 1d | 2020-07-29 | 2020-07-29 |  | 317d |  | start on or after 2020-07-29 |  |  | Design |  | FSP 34/22 | On Track | Midweek | W4 | 34m - 34m41ch | Dewsbury | Iain Taylor | Cottingley to Copley Hill | E&P | Week 17 |  |  |  |
| A78510 |  | E&P Survey | 1d | 2020-07-29 | 2020-07-29 |  | 317d |  | start on or after 2020-07-29 |  |  | Design |  | FSP 34/18 | On Track | Midweek | W4 | 34m - 34m41ch | Dewsbury | Iain Taylor | Cottingley to Copley Hill | E&P | Week 17 |  |  |  |
| A78520 |  | E&P Survey | 1d | 2020-07-29 | 2020-07-29 |  | 317d |  | start on or after 2020-07-29 |  |  | Design |  | FSP 34/30 | On Track | Midweek | W4 | 34m - 34m41ch | Dewsbury | Iain Taylor | Cottingley to Copley Hill | E&P | Week 17 |  |  |  |
| A78700 |  | OLE Trial Holes | 1d | 2020-07-29 | 2020-07-29 |  | 317d |  | start on or after 2020-07-29 |  |  | Keltbray / Lundys |  |  | On Track | Midweek | W1B | 38m - 40m | Morley / Whiterose / Cottingley | Tom Wilson |  | OLE Initiatives | Week 17 | Remaining Scope | Coring | Tom Wilson |
| A78840 |  | Topographical Survey - Static Scan | 1d | 2020-07-29 | 2020-07-29 |  | 317d |  | start on or after 2020-07-29 |  |  | SEP | MDL1 |  | On Track | Midweek | W4 | 39m34ch to 42m00ch | Cottingley | Dom Keegans | Morley Tunnel (MDL1/36) | Topographical | Week 17 |  |  |  |
| A78850 |  | Topographical Survey - Topo Survey | 1d | 2020-07-29 | 2020-07-29 |  | 317d |  | start on or after 2020-07-29 |  |  | SEP | MDL1 |  | On Track | Midweek | W4 | 39m34ch to 42m00ch | Dragons Bridge | Dom Keegans | Morley Tunnel (MDL1/36) | Topographical | Week 17 |  |  |  |
| A78860 |  | Topographical Survey - Traverse Control | 1d | 2020-07-29 | 2020-07-29 |  | 317d |  | start on or after 2020-07-29 |  |  | SEP | MDL1 |  | On Track | Midweek | W4 | 39m34ch to 42m00ch | Dragons Bridge | Dom Keegans | Morley Tunnel (MDL1/36) | Topographical | Week 17 |  |  |  |
| A78870 |  | Topographical Survey - Off Track Tie in | 1d | 2020-07-29 | 2020-07-29 |  | 317d |  | start on or after 2020-07-29 |  |  | SEP | MDL1 |  | On Track | Midweek | W4 | 39m34ch to 42m00ch | Cottingley | Dom Keegans | Morley Tunnel (MDL1/36) | Topographical | Week 17 |  |  |  |
| A80710 |  | Scoping/Closing | 1d | 2020-07-29 | 2020-07-29 |  | 227d |  | start on or after 2020-07-29 | A03 5 Day Workweek (BH & Xmas as Work) |  | Amey |  |  | On Track | Midweek |  | 33m10ch - 36m 25ch | Toad Holes- Batley Station | Kyle Spence |  | Prep For Safety | Week 17 |  |  |  |
| A81040 |  | Track Survey @ MDL13559 | 1d | 2020-07-29 | 2020-07-29 |  | 227d |  | start on or after 2020-07-29 | A03 5 Day Workweek (BH & Xmas as Work) |  | Bridgeway |  |  | On Track | Midweek |  | 35m 04ch To 35m 60ch | Batley LX | Daren Walsh |  | Topographical | Week 17 |  |  |  |
| A81100 |  | Drainage Survey - Asset Location, Asset Data & Dye Trace | 1d | 2020-07-29 | 2020-07-29 |  | 317d |  | start on or after 2020-07-29 |  | 09.07 | Lanes4Drains | Morley Tunnel & West Portal | W4-DR-051 - 190 | On Track | Midweek | W4 | 35m57ch - 36m25ch | Morley | Isaac Derry | Morley Tunnel (MDL1/36) | Drainage | Week 17 |  |  |  |
| A81110 |  | Drainage Survey - Asset Location, Asset Data & Dye Trace | 1d | 2020-07-29 | 2020-07-29 |  | 317d |  | start on or after 2020-07-29 |  | 09.07 | Lanes4Drains | Morley Tunnel | W4-DR-MT | On Track | Midweek | W4 | 35m57ch - 36m25ch | Morley | Isaac Derry | Morley Tunnel (MDL1/36) | Drainage | Week 17 |  |  |  |
| A81120 |  | Drainage Survey - Asset Location, Asset Data & Dye Trace | 1d | 2020-07-29 | 2020-07-29 |  | 317d |  | start on or after 2020-07-29 |  | 09.07 | Lanes4Drains | Morley Tunnel Bore and Portals | W4-MT-DRAINAGE | On Track | Midweek | W4 | 35m57ch - 36m25ch | Morley | Isaac Derry | Morley Tunnel (MDL1/36) | Drainage | Week 17 |  |  |  |
| A81610 |  | Track Alignment | 1d | 2020-07-29 | 2020-07-29 |  | 227d |  | start on or after 2020-07-29 | A03 5 Day Workweek (BH & Xmas as Work) |  | Severn Partnership |  |  | On Track | Midweek |  | 33m 70ch - 35m 10ch | Dewsbury Stn | John Woods |  | Topographical | Week 17 |  |  |  |
| A82070 |  | Fencing repairs | 1d | 2020-07-29 | 2020-07-29 |  | 227d |  | start on or after 2020-07-29 | A03 5 Day Workweek (BH & Xmas as Work) |  | Bam Nuttall |  |  | On Track | Midweek |  | MDL1 - 32m 20 - 36m 05 up and down | MDL1 32m 0928y (Ravensthorpe) & / MDL1 35m 57ch (Batley) | Mark Cooper |  | Prep For Safety | Week 17 |  |  |  |

Notes:
- A59900: General Comments: 24/05 - Scrap rail in 4ft week 08
- A59920: General Comments: 24/05 - Scrap rail in 4ft week 08
- A59960: General Comments: 24/05 - Scrap rail in 4ft week 08
- A59980: General Comments: 24/05 - Scrap rail in 4ft week 08

| ID | WBS | Activity | Duration | Start | Finish | Predecessors | Total float | Free float | Constraint | Calendar | Text 1 | Machines Required | Company Responsible | Location / ELR | GI Reference Number | On-Track Off-Track | Weekend/Midweek | Project | Mileage | Access Point | Responsibility | Location | Discipline | Week Number | Text 3 | Text 4 | Comment |
| --- | --- | --- | --- | --- | --- | --- | --- | --- | --- | --- | --- | --- | --- | --- | --- | --- | --- | --- | --- | --- | --- | --- | --- | --- | --- | --- | --- |
|  | 2 | **Weds - Ravensthorpe to Copley Hill East Jct (23:50 Mon to 05:45 Tues) 32m20ch to 185m26ch** |  | 2020-07-30 | 2020-07-30 |  |  |  |  |  |  |  |  |  |  |  |  |  |  |  |  |  |  |  |  |  |  |
| A59280 |  | ABS | 1d | 2020-07-30 | 2020-07-30 | A72630 | 45d | 38d | start on or after 2020-07-30 |  | W46 | EH | Bam Ritchies | 1m Scheduled Depth | AB5536 | On Track | Midweek | W4 | 37m21 | Morley | Jamie Hogg | Morley Tunnel | ABS |  |  |  |  |
| A59290 |  | ABS | 1d | 2020-07-30 | 2020-07-30 | A72630 | 45d | 38d | start on or after 2020-07-30 |  | W46 | EH | Bam Ritchies | 1m Scheduled Depth | AB5545 | On Track | Midweek | W4 | 37m38 | Morley | Jamie Hogg | Morley Tunnel | ABS |  |  |  |  |
| A59300 |  | ABS | 1d | 2020-07-30 | 2020-07-30 | A72630 | 45d | 38d | start on or after 2020-07-30 |  | W46 | EH | Bam Ritchies | 1m Scheduled Depth | AB5547 | On Track | Midweek | W4 | 37m42 | Morley | Jamie Hogg | Morley Tunnel | ABS |  |  |  |  |
| A59340 |  | ABS | 1d | 2020-07-30 | 2020-07-30 | A72630 | 45d | 38d | start on or after 2020-07-30 |  | W46 | EH | Bam Ritchies | 1m Scheduled Depth | AB5557 | On Track | Midweek | W4 | 37m62 | Morley | Jamie Hogg | Morley Tunnel | ABS |  |  |  |  |
| A59370 |  | ABS | 1d | 2020-07-30 | 2020-07-30 | A72630 | 45d | 38d | start on or after 2020-07-30 |  | W46 | EH | Bam Ritchies | 1m Scheduled Depth | AB5560 | On Track | Midweek | W4 | 37m68 | Morley | Jamie Hogg | Morley Tunnel | ABS |  |  |  |  |
| A59500 |  | ABS | 1d | 2020-07-30 | 2020-07-30 | A72630 | 82d | 38d | start on or after 2020-07-30 |  |  | EH | Bam Ritchies |  | AB5580 | On Track | Midweek | W4 | 39m50ch - 41m60ch | Gelderd Rd | Jamie Hogg | Cottingley to Copley Hill | ABS |  |  |  |  |
| A66910 |  | Coring - HERITAGE APPROVAL RECIEVED | 1d | 2020-07-30 | 2020-07-30 | A72630 | 276d | 10d | start on or after 2020-07-30 |  |  | EH | Bam Ritchies | MDL1/19 Dewsbury Viaduct | MDL1/19/SC/07 | On Track | Midweek | W4 | 33m73ch - 34m02ch | Dragon Bridge |  | OB MDL1/47 - Whitehall Road Dragon Bridge | Coring |  |  |  |  |
| A66920 |  | Coring - HERITAGE APPROVAL RECIEVED | 1d | 2020-07-30 | 2020-07-30 | A72630 | 276d | 10d | start on or after 2020-07-30 |  |  | EH | Bam Ritchies | MDL1/19 Dewsbury Viaduct | MDL1/19/SC/08 | On Track | Midweek | W4 | 33m73ch - 34m02ch | Dragon Bridge |  | OB MDL1/47 - Whitehall Road Dragon Bridge | Coring |  |  |  |  |
| A66930 |  | Coring - HERITAGE APPROVAL RECIEVED | 1d | 2020-07-30 | 2020-07-30 | A72630 | 276d | 10d | start on or after 2020-07-30 |  |  | EH | Bam Ritchies | MDL1/19 Dewsbury Viaduct | MDL1/19/SC/09 | On Track | Midweek | W4 | 33m73ch - 34m02ch | Dragon Bridge |  | OB MDL1/47 - Whitehall Road Dragon Bridge | Coring |  |  |  |  |
| A66940 |  | Coring - HERITAGE APPROVAL RECIEVED | 1d | 2020-07-30 | 2020-07-30 | A72630 | 276d | 10d | start on or after 2020-07-30 |  |  | EH | Bam Ritchies | MDL1/19 Dewsbury Viaduct | MDL1/19/SC/10 | On Track | Midweek | W4 | 33m73ch - 34m02ch | Dragon Bridge |  | OB MDL1/47 - Whitehall Road Dragon Bridge | Coring |  |  |  |  |
| A66950 |  | Coring - HERITAGE APPROVAL RECIEVED | 1d | 2020-07-30 | 2020-07-30 | A72630 | 276d | 10d | start on or after 2020-07-30 |  |  | EH | Bam Ritchies | MDL1/19 Dewsbury Viaduct | MDL1/19/SC/11 | On Track | Midweek | W4 | 33m73ch - 34m02ch | Dragon Bridge |  | OB MDL1/47 - Whitehall Road Dragon Bridge | Coring |  |  |  |  |
| A66960 |  | Coring - HERITAGE APPROVAL RECIEVED | 1d | 2020-07-30 | 2020-07-30 | A72630 | 276d | 10d | start on or after 2020-07-30 |  |  | EH | Bam Ritchies | MDL1/19 Dewsbury Viaduct | MDL1/19/SC/12 | On Track | Midweek | W4 | 33m73ch - 34m02ch | Dragon Bridge |  | OB MDL1/47 - Whitehall Road Dragon Bridge | Coring |  |  |  |  |
| A75690 |  | Drainage Survey - CCTV | 1d | 2020-07-30 | 2020-07-30 | A72630 | 78d | 66d | start on or after 2020-07-30 |  |  | 09.07 | Lanes4Drains | Batley | W4-DR-025 - 038 | On Track | Midweek | W4 | 34m75ch to 35m60ch | Batley | Isaac Derry | Morley Tunnel (MDL1/36) | Drainage | Week 17 |  |  |  |
| A78260 |  | OLE Trial Holes | 1d | 2020-07-30 | 2020-07-30 |  | 316d |  | start on or after 2020-07-30 |  |  |  | Keltbray / Lundys |  |  | On Track | Midweek | W1B | 38m - 40m | Morley / Whiterose / Cottingley | Tom Wilson |  | OLE Initiatives | Week 17 | Remaining Scope | Coring | Tom Wilson |
| A78530 |  | E&P Survey | 1d | 2020-07-30 | 2020-07-30 |  | 316d |  | start on or after 2020-07-30 |  |  |  | Design |  | FSP 34/51 | On Track | Midweek | W4 | 34m - 35m | Batley | Iain Taylor | Cottingley to Copley Hill | E&P | Week 17 |  |  |  |
| A78540 |  | E&P Survey | 1d | 2020-07-30 | 2020-07-30 |  | 316d |  | start on or after 2020-07-30 |  |  |  | Design |  | Batley ASP | On Track | Midweek | W4 | 34m - 35m | Batley | Iain Taylor | Cottingley to Copley Hill | E&P | Week 17 |  |  |  |
| A78550 |  | E&P Survey | 1d | 2020-07-30 | 2020-07-30 |  | 316d |  | start on or after 2020-07-30 |  |  |  | Design |  | FSP 35/13 | On Track | Midweek | W4 | 34m - 35m | Batley | Iain Taylor | Cottingley to Copley Hill | E&P | Week 17 |  |  |  |
| A78710 |  | OLE Trial Holes | 1d | 2020-07-30 | 2020-07-30 |  | 316d |  | start on or after 2020-07-30 |  |  |  | Keltbray / Lundys |  |  | On Track | Midweek | W1B | 38m - 40m | Morley / Whiterose / Cottingley | Tom Wilson |  | OLE Initiatives | Week 17 | Remaining Scope | Coring | Tom Wilson |
| A78890 |  | Topographical Survey - IMS Survey | 1d | 2020-07-30 | 2020-07-30 |  | 316d |  | start on or after 2020-07-30 |  |  |  | SEP | MDL1 |  | On Track | Midweek | W4 | 39m34ch to 42m00ch | Cottingley | Dom Keegans | Morley Tunnel (MDL1/36) | Topographical | Week 17 |  |  |  |
| A78900 |  | Topographical Survey - Topo Survey | 1d | 2020-07-30 | 2020-07-30 |  | 316d |  | start on or after 2020-07-30 |  |  |  | SEP | MDL1 |  | On Track | Midweek | W4 | 39m34ch to 42m00ch | Dragons Bridge | Dom Keegans | Morley Tunnel (MDL1/36) | Topographical | Week 17 |  |  |  |
| A78910 |  | Topographical Survey - Traversing | 1d | 2020-07-30 | 2020-07-30 |  | 316d |  | start on or after 2020-07-30 |  |  |  | SEP | MDL1 |  | On Track | Midweek | W4 | 39m34ch to 42m00ch | Dragons Bridge | Dom Keegans | Morley Tunnel (MDL1/36) | Topographical | Week 17 |  |  |  |
| A78920 |  | Topographical Survey - Traversing | 1d | 2020-07-30 | 2020-07-30 |  | 316d |  | start on or after 2020-07-30 |  |  |  | SEP | MDL1 |  | On Track | Midweek | W4 | 39m34ch to 42m00ch | Cottingley | Dom Keegans | Morley Tunnel (MDL1/36) | Topographical | Week 17 |  |  |  |
| A80720 |  | Scoping/Closing | 1d | 2020-07-30 | 2020-07-30 |  | 226d |  | start on or after 2020-07-30 | A03 5 Day Workweek (BH & Xmas as Work) |  |  | Amey |  |  | On Track | Midweek |  | 33m10ch - 36m 25ch | Toad Holes- Batley Station | Kyle Spence |  | Prep For Safety | Week 17 |  |  |  |
| A81050 |  | Track Survey @ MDL13550 | 1d | 2020-07-30 | 2020-07-30 |  | 226d |  | start on or after 2020-07-30 | A03 5 Day Workweek (BH & Xmas as Work) |  |  | Bridgeway |  |  | On Track | Midweek |  | 35m 04ch To 35m 60ch | Batley LX | Daren Walsh |  | Topographical | Week 17 |  |  |  |
| A81130 |  | Drainage Survey - Asset Location, Asset Data & Dye Trace | 1d | 2020-07-30 | 2020-07-30 |  | 316d |  | start on or after 2020-07-30 |  |  | 09.07 | Lanes4Drains | Morley Tunnel & West Portal | W4-DR-051 - 190 | On Track | Midweek | W4 | 35m57ch - 36m25ch | Morley | Isaac Derry | Morley Tunnel (MDL1/36) | Drainage | Week 17 |  |  |  |
| A81140 |  | Drainage Survey - Asset Location, Asset Data & Dye Trace | 1d | 2020-07-30 | 2020-07-30 |  | 316d |  | start on or after 2020-07-30 |  |  | 09.07 | Lanes4Drains | Morley Tunnel | W4-DR-MT | On Track | Midweek | W4 | 35m57ch - 36m25ch | Morley | Isaac Derry | Morley Tunnel (MDL1/36) | Drainage | Week 17 |  |  |  |
| A81150 |  | Drainage Survey - Asset Location, Asset Data & Dye Trace | 1d | 2020-07-30 | 2020-07-30 |  | 316d |  | start on or after 2020-07-30 |  |  | 09.07 | Lanes4Drains | Morley Tunnel Bore and Portals | W4-MT-DRAINAGE | On Track | Midweek | W4 | 35m57ch - 36m25ch | Morley | Isaac Derry | Morley Tunnel (MDL1/36) | Drainage | Week 17 |  |  |  |
| A81620 |  | Track Alignment & Drainage | 1d | 2020-07-30 | 2020-07-30 |  | 226d |  | start on or after 2020-07-30 | A03 5 Day Workweek (BH & Xmas as Work) |  |  | Severn Partnership |  |  | On Track | Midweek |  | 32m 20ch - 33m 50ch | Ravensthorpe | John Woods |  | Topographical | Week 17 |  |  |  |
| A81670 |  | Track Alignment | 1d | 2020-07-30 | 2020-07-30 |  | 226d |  | start on or after 2020-07-30 | A03 5 Day Workweek (BH & Xmas as Work) |  |  | Severn Partnership |  |  | On Track | Midweek |  | 33m 70ch - 35m 10ch | Dewsbury Stn | John Woods |  | Topographical | Week 17 |  |  |  |
| A82080 |  | Fencing repairs | 1d | 2020-07-30 | 2020-07-30 |  | 226d |  | start on or after 2020-07-30 | A03 5 Day Workweek (BH & Xmas as Work) |  |  | Bam Nuttall |  |  | On Track | Midweek |  | MDL1 - 32m 20 - 36m 05 up and down | MDL1 32m 0928y (Ravensthorpe) & / MDL1 35m 57ch (Batley) | Mark Cooper |  | Prep For Safety | Week 17 |  |  |  |

Notes:
- A59280: General Comments: 28/05 - Conflict with NR maintianence all week midweek 11
- A59290: General Comments: 28/05 - Conflict with NR maintianence all week midweek 11
- A59300: General Comments: 28/05 - Conflict with NR maintianence all week midweek 11
- A59340: General Comments: 28/05 - Conflict with NR maintianence all week midweek 11
- A59370: General Comments: 28/05 - Conflict with NR maintianence all week midweek 11
- A59500: General Comments: 17/04 - Works cancelled week 3 due to poor planning process / 28/05 - Conflict with NR maintianence all week midweek 11

| ID | WBS | Activity | Duration | Start | Finish | Predecessors | Total float | Free float | Constraint | Calendar | Machines Required | Company Responsible | GI Reference Number | On-Track Off-Track | Weekend/Midweek | Project | Mileage | Access Point | Responsibility | Location | Discipline | Text 1 | Location / ELR | Week Number | Text 3 | Text 4 | Comment |
| --- | --- | --- | --- | --- | --- | --- | --- | --- | --- | --- | --- | --- | --- | --- | --- | --- | --- | --- | --- | --- | --- | --- | --- | --- | --- | --- | --- |
|  | 3 | **Thurs - Ravensthorpe to Copley Hill East Jct (23:50 Mon to 05:45 Tues) 32m20ch to 185m26ch** |  | 2020-07-31 | 2020-08-31 |  |  |  |  |  |  |  |  |  |  |  |  |  |  |  |  |  |  |  |  |  |  |
| A59510 |  | ABS | 1d | 2020-07-31 | 2020-07-31 | A72630 | 81d | 37d | start on or after 2020-07-31 |  | EH | Bam Ritchies | AB5581 | On Track | Midweek | W4 | 39m50ch - 41m60ch | Gelderd Rd | Jamie Hogg | Cottingley to Copley Hill | ABS |  |  |  |  |  |  |
| A59600 |  | ABS | 1d | 2020-07-31 | 2020-07-31 | A72630 | 81d | 37d | start on or after 2020-07-31 |  | EH | Bam Ritchies | AB5590 | On Track | Midweek | W4 | 40m25 | Morley | Jamie Hogg | Cottingley to Copley Hill | ABS | W46 | 1m Scheduled Depth |  |  |  |  |
| A59700 |  | ABS | 1d | 2020-07-31 | 2020-07-31 | A72630 | 81d | 37d | start on or after 2020-07-31 |  | EH | Bam Ritchies | AB5599 | On Track | Midweek | W4 | 40m46 |  | Jamie Hogg | Cottingley to Copley Hill | ABS |  | 1m Scheduled Depth |  |  |  |  |
| A59710 |  | ABS | 1d | 2020-07-31 | 2020-07-31 | A72630 | 81d | 37d | start on or after 2020-07-31 |  | EH | Bam Ritchies | AB5600 | On Track | Midweek | W4 | 40m49 |  | Jamie Hogg | Cottingley to Copley Hill | ABS |  | 1m Scheduled Depth |  |  |  |  |
| A59770 |  | ABS | 1d | 2020-07-31 | 2020-07-31 | A72630 | 81d | 37d | start on or after 2020-07-31 |  | EH | Bam Ritchies | AB5604 | On Track | Midweek | W4 | 40m63 |  | Jamie Hogg | Cottingley to Copley Hill | ABS |  | 1m Scheduled Depth |  |  |  |  |
| A59860 |  | ABS - LOCATION ON HOLD | 1d | 2020-07-31 | 2020-07-31 | A72630 | 81d | 37d | start on or after 2020-07-31 |  | EH | Bam Ritchies | AB5608 | On Track | Midweek | W4 | 41m0 |  | Jamie Hogg | Cottingley to Copley Hill | ABS |  | 2m Scheduled Depth |  |  |  |  |
| A61460 |  | 75mm Horizontal Core - HERITAGE APPROVAL NEEDED | 1d | 2020-07-31 | 2020-07-31 | A72630 | 275d | 23d | start on or after 2020-07-31 |  | EH | Structural Soils | MDL1/40/SC/01 | On Track | Midweek | W4 | 39m56ch - 39m58ch | Morley |  | RW MDL1/40/B1 | Coring |  | MDL1/40 Churwell Viaduct |  |  |  |  |
| A61470 |  | 75mm Horizontal Core - HERITAGE APPROVAL NEEDED | 1d | 2020-07-31 | 2020-07-31 | A72630 | 275d | 23d | start on or after 2020-07-31 |  | EH | Structural Soils | MDL1/40/SC/02 | On Track | Midweek | W4 | 39m56ch - 39m58ch | Morley |  | RW MDL1/40/B1 | Coring |  | MDL1/40 Churwell Viaduct |  |  |  |  |
| A61480 |  | 75mm Horizontal Core - HERITAGE APPROVAL NEEDED | 1d | 2020-07-31 | 2020-07-31 | A72630 | 275d | 23d | start on or after 2020-07-31 |  | EH | Structural Soils | MDL1/40/SC/03 | On Track | Midweek | W4 | 39m56ch - 39m58ch | Morley |  | RW MDL1/40/B1 | Coring |  | MDL1/40 Churwell Viaduct |  |  |  |  |
| A65980 |  | Drainage Survey - Asset Location, Asset Data & Dye Trace | 1d | 2020-07-31 | 2020-07-31 | A72630 | 77d | 65d | start on or after 2020-07-31 |  | 29.06 | Lanes4Drains | W4-DR-051 - 190 | On Track | Midweek | W4 | 35m57ch - 36m25ch | Morley | Isaac Derry | Morley Tunnel (MDL1/36) | Drainage |  | Morley Tunnel & West Portal | Week 17 |  |  |  |
| A66010 |  | Drainage Survey - Asset Location, Asset Data & Dye Trace | 1d | 2020-07-31 | 2020-07-31 | A72630 | 77d | 65d | start on or after 2020-07-31 |  | 29.06 | Lanes4Drains | W4-DR-MT | On Track | Midweek | W4 | 35m57ch - 36m25ch | Morley | Isaac Derry | Morley Tunnel (MDL1/36) | Drainage |  | Morley Tunnel | Week 17 |  |  |  |
| A66100 |  | Drainage Survey - CCTV/Jetting | 1d | 2020-07-31 | 2020-07-31 | A72630 | 77d | 65d | start on or after 2020-07-31 |  | 29.06 | Lanes4Drains | W4-DR-024 | On Track | Midweek | W4 | 34m75ch to 35m60ch | Batley | Isaac Derry | Morley Tunnel (MDL1/36) | Drainage |  | Batley | Week 17 |  |  |  |
| A66310 |  | Drainage Survey - Asset Location, Asset Data & Dye Trace | 1d | 2020-07-31 | 2020-07-31 | A72630 | 77d | 65d | start on or after 2020-07-31 |  | 29.06 | Lanes4Drains | W4-MT-DRAINAGE | On Track | Midweek | W4 | 35m57ch - 36m25ch | Morley | Isaac Derry | Morley Tunnel (MDL1/36) | Drainage |  | Morley Tunnel Bore and Portals | Week 17 |  |  |  |
| A66970 |  | Coring - HERITAGE APPROVAL RECIEVED | 1d | 2020-07-31 | 2020-07-31 | A72630 | 275d | 9d | start on or after 2020-07-31 |  | EH | Bam Ritchies | MDL1/19/SC/13 | On Track | Midweek | W4 | 33m73ch - 34m02ch | Dragon Bridge |  | OB MDL1/47 - Whitehall Road Dragon Bridge | Coring |  | MDL1/19 Dewsbury Viaduct |  |  |  |  |
| A66980 |  | Coring - HERITAGE APPROVAL RECIEVED | 1d | 2020-07-31 | 2020-07-31 | A72630 | 275d | 9d | start on or after 2020-07-31 |  | EH | Bam Ritchies | MDL1/19/SC/14 | On Track | Midweek | W4 | 33m73ch - 34m02ch | Dragon Bridge |  | OB MDL1/47 - Whitehall Road Dragon Bridge | Coring |  | MDL1/19 Dewsbury Viaduct |  |  |  |  |
| A66990 |  | Coring - HERITAGE APPROVAL RECIEVED | 1d | 2020-07-31 | 2020-07-31 | A72630 | 275d | 9d | start on or after 2020-07-31 |  | EH | Bam Ritchies | MDL1/19/SC/15 | On Track | Midweek | W4 | 33m73ch - 34m02ch | Dragon Bridge |  | OB MDL1/47 - Whitehall Road Dragon Bridge | Coring |  | MDL1/19 Dewsbury Viaduct |  |  |  |  |
| A67000 |  | Coring - HERITAGE APPROVAL RECIEVED | 1d | 2020-07-31 | 2020-07-31 | A72630 | 275d | 9d | start on or after 2020-07-31 |  | EH | Bam Ritchies | MDL1/19/SC/16 | On Track | Midweek | W4 | 33m73ch - 34m02ch | Dragon Bridge |  | OB MDL1/47 - Whitehall Road Dragon Bridge | Coring |  | MDL1/19 Dewsbury Viaduct |  |  |  |  |
| A67010 |  | Coring - HERITAGE APPROVAL RECIEVED | 1d | 2020-07-31 | 2020-07-31 | A72630 | 275d | 9d | start on or after 2020-07-31 |  | EH | Bam Ritchies | MDL1/19/SC/17 | On Track | Midweek | W4 | 33m73ch - 34m02ch | Dragon Bridge |  | OB MDL1/47 - Whitehall Road Dragon Bridge | Coring |  | MDL1/19 Dewsbury Viaduct |  |  |  |  |
| A67020 |  | Coring - HERITAGE APPROVAL RECIEVED | 1d | 2020-07-31 | 2020-07-31 | A72630 | 275d | 9d | start on or after 2020-07-31 |  | EH | Bam Ritchies | MDL1/19/SC/18 | On Track | Midweek | W4 | 33m73ch - 34m02ch | Dragon Bridge |  | OB MDL1/47 - Whitehall Road Dragon Bridge | Coring |  | MDL1/19 Dewsbury Viaduct |  |  |  |  |
| A78270 |  | OLE Trial Holes | 1d | 2020-07-31 | 2020-07-31 |  | 315d |  | start on or after 2020-07-31 |  |  | Keltbray / Lundys |  | On Track | Midweek | W1B | 38m - 40m | Morley / Whiterose / Cottingley | Tom Wilson |  | OLE Initiatives |  |  | Week 17 | Remaining Scope | Coring | Tom Wilson |
| A78570 |  | E&P Survey | 1d | 2020-07-31 | 2020-07-31 |  | 315d |  | start on or after 2020-07-31 |  |  | Design | FSP 35/29 | On Track | Midweek | W4 |  | Batley SB | Iain Taylor | Cottingley to Copley Hill | E&P |  |  | Week 17 |  |  |  |
| A78580 |  | E&P Survey | 1d | 2020-07-31 | 2020-07-31 |  | 315d |  | start on or after 2020-07-31 |  |  | Design | FSP 36/05 | On Track | Midweek | W4 |  | Batley SB | Iain Taylor | Cottingley to Copley Hill | E&P |  |  | Week 17 |  |  |  |
| A78590 |  | E&P Survey | 1d | 2020-07-31 | 2020-07-31 |  | 315d |  | start on or after 2020-07-31 |  |  | Design | Batley FSP | On Track | Midweek | W4 |  | Batley SB | Iain Taylor | Cottingley to Copley Hill | E&P |  |  | Week 17 |  |  |  |
| A78600 |  | E&P Survey | 1d | 2020-07-31 | 2020-07-31 |  | 315d |  | start on or after 2020-07-31 |  |  | Design | FSP 36/12 | On Track | Midweek | W4 |  | Batley SB | Iain Taylor | Cottingley to Copley Hill | E&P |  |  | Week 17 |  |  |  |
| A78720 |  | OLE Trial Holes | 1d | 2020-07-31 | 2020-07-31 |  | 315d |  | start on or after 2020-07-31 |  |  | Keltbray / Lundys |  | On Track | Midweek | W1B | 38m - 40m | Morley / Whiterose / Cottingley | Tom Wilson |  | OLE Initiatives |  |  | Week 17 | Remaining Scope | Coring | Tom Wilson |
| A78940 |  | Topographical Survey - IMS Survey | 1d | 2020-07-31 | 2020-07-31 |  | 315d |  | start on or after 2020-07-31 |  |  | SEP |  | On Track | Midweek | W4 | 39m34ch to 42m00ch | Dragons Bridge | Dom Keegans | Morley Tunnel (MDL1/36) | Topographical |  | MDL1 | Week 17 |  |  |  |
| A78950 |  | Topographical Survey - Topo Survey | 1d | 2020-07-31 | 2020-07-31 |  | 315d |  | start on or after 2020-07-31 |  |  | SEP |  | On Track | Midweek | W4 | 39m34ch to 42m00ch | Dragons Bridge | Dom Keegans | Morley Tunnel (MDL1/36) | Topographical |  | MDL1 | Week 17 |  |  |  |
| A78960 |  | Topographical Survey - Traverse Control | 1d | 2020-07-31 | 2020-07-31 |  | 315d |  | start on or after 2020-07-31 |  |  | SEP |  | On Track | Midweek | W4 | 39m34ch to 42m00ch | Dragons Bridge | Dom Keegans | Morley Tunnel (MDL1/36) | Topographical |  | MDL1 | Week 17 |  |  |  |
| A78970 |  | Topographical Survey - Traverse Control | 1d | 2020-07-31 | 2020-07-31 |  | 315d |  | start on or after 2020-07-31 |  |  | SEP |  | On Track | Midweek | W4 | 39m34ch to 42m00ch | Cottingley | Dom Keegans | Morley Tunnel (MDL1/36) | Topographical |  | MDL1 | Week 17 |  |  |  |
| A79220 |  | E&P Survey | 1d | 2020-07-31 | 2020-07-31 |  | 315d |  | start on or after 2020-07-31 |  |  | Design | FSP 33/26 | On Track | Midweek | W4 |  | Batley SB | Iain Taylor | Cottingley to Copley Hill | E&P |  |  | Week 17 |  |  |  |
| A80730 |  | Scoping/Closing | 1d | 2020-07-31 | 2020-07-31 |  | 225d |  | start on or after 2020-07-31 | A03 5 Day Workweek (BH & Xmas as Work) |  | Amey |  | On Track | Midweek |  | 33m10ch - 36m 25ch | Toad Holes- Batley Station | Kyle Spence |  | Prep For Safety |  |  | Week 17 |  |  |  |
| A81060 |  | Track Survey @ MDL13542 | 1d | 2020-07-31 | 2020-07-31 |  | 225d |  | start on or after 2020-07-31 | A03 5 Day Workweek (BH & Xmas as Work) |  | Bridgeway |  | On Track | Midweek |  | 35m 04ch To 35m 60ch | Batley Station | Daren Walsh |  | Topographical |  |  | Week 17 |  |  |  |
| A81630 |  | Topo Survey | 22d | 2020-07-31 | 2020-08-31 |  | 204d |  | start on or after 2020-07-31 | A03 5 Day Workweek (BH & Xmas as Work) |  | Severn Partnership |  | On Track | Midweek |  | 32m 20ch - 33m 50ch | Ravensthorpe | John Woods |  | Topographical |  |  | Week 17 |  |  |  |
| A81680 |  | Topo Survey | 1d | 2020-07-31 | 2020-07-31 |  | 225d |  | start on or after 2020-07-31 | A03 5 Day Workweek (BH & Xmas as Work) |  | Severn Partnership |  | On Track | Midweek |  | 32m 20ch - 33m 50ch | Ravensthorpe | John Woods |  | Topographical |  |  | Week 17 |  |  |  |
| A82090 |  | Fencing repairs | 1d | 2020-07-31 | 2020-07-31 |  | 225d |  | start on or after 2020-07-31 | A03 5 Day Workweek (BH & Xmas as Work) |  | Bam Nuttall |  | On Track | Midweek |  | MDL1 - 32m 20 - 36m 05 up and down | MDL1 32m 0928y (Ravensthorpe) & / MDL1 35m 57ch (Batley) | Mark Cooper |  | Prep For Safety |  |  | Week 17 |  |  |  |

Notes:
- A59510: General Comments: 28/05 - Conflict with NR maintianence all week midweek 11
- A59600: General Comments: 28/05 - Conflict with NR maintianence all week midweek 11
- A59770: General Comments: 28/05 - Conflict with NR maintianence all week midweek 11
- A61460: General Comments: 10/03 - Awaiting Heritage approval
- A61470: General Comments: ? / 10/03 - Awaiting Heritage approval
- A61480: General Comments: ? / 10/03 - Awaiting Heritage approval
- A66100: General Comments: ? / 19/05 - Teething problems / with new supplier has meant progress has been slow. Outputs on site remain to be / seen, so assuming a pesimistic view on the dates for now. Pushing for dates to / be brought in

| ID | WBS | Activity | Duration | Start | Finish | Predecessors | Planned start | Planned finish | Total float | Free float | Constraint | Text | Text 1 | Machines Required | Company Responsible | GI Reference Number | On-Track Off-Track | Week Number | Weekend/Midweek | Project | Mileage | Access Point | Responsibility | Discipline | Comment | Location / ELR | Teams |
| --- | --- | --- | --- | --- | --- | --- | --- | --- | --- | --- | --- | --- | --- | --- | --- | --- | --- | --- | --- | --- | --- | --- | --- | --- | --- | --- | --- |
|  | 15 | **Week 18-1** |  |  |  |  |  |  |  |  |  |  |  |  |  |  |  |  |  |  |  |  |  |  |  |  |  |
|  | 1 | **Weekend Works** |  |  |  |  |  |  |  |  |  |  |  |  |  |  |  |  |  |  |  |  |  |  |  |  |  |
|  | 1 | **Ravensthorpe to Copley Hill East (0040 Sat - 0510 Sat) 33m60ch - 41m60ch** |  |  |  |  |  |  |  |  |  |  |  |  |  |  |  |  |  |  |  |  |  |  |  |  |  |
|  | 48 | **Week 19-1** |  | 2020-07-11 | 2020-08-08 |  |  |  |  |  |  |  |  |  |  |  |  |  |  |  |  |  |  |  |  |  |  |
|  | 8 | **Weekend Works** |  | 2020-07-11 | 2020-08-08 |  |  |  |  |  |  |  |  |  |  |  |  |  |  |  |  |  |  |  |  |  |  |
|  | 5 | **Ravensthorpe to Copley Hill East (0040 Sat - 0510 Sat) 32m28ch - 42m02ch** |  | 2020-07-11 | 2020-08-08 |  |  |  |  |  |  |  |  |  |  |  |  |  |  |  |  |  |  |  |  |  |  |
| A62320 |  | Trial Pit + Surveying | 1d | 2020-07-11 | 2020-07-11 | A72630 | 2020-08-08 | 2020-08-08 | 295d | 1d | start on or after 2020-08-08 | keep | W46 | 06.07 | Structural Soils | MT-TP-A:60800 DN | On Track | Week 19 | Weekend | W4 | 35m52ch to 38m34ch | Morley Station | Olly Phillips | Trial Pit |  |  |  |
| A62340 |  | Trial Pit + Surveying | 1d | 2020-07-11 | 2020-07-11 | A72630 | 2020-08-08 | 2020-08-08 | 295d | 1d | start on or after 2020-08-08 | keep | W46 | 06.07 | Structural Soils | MT-TP-A:60900 DN | On Track | Week 19 | Weekend | W4 | 35m52ch to 38m34ch | Morley Station | Olly Phillips | Trial Pit | Olly Phillips |  |  |
| A59850 |  | ABS | 1d | 2020-07-25 | 2020-07-25 | A72630 | 2020-08-08 | 2020-08-08 | 87d | 43d | start on or after 2020-08-08 |  |  | 15.07 | Bam Ritchies | AB5607 | On Track | Week 19 | Weekend | W4 | 40m40ch - 42m00ch | Copley Hill | Jamie Hogg | ABS |  | 1m Scheduled Depth |  |
| A59870 |  | ABS | 1d | 2020-07-25 | 2020-07-25 | A72630 | 2020-08-08 | 2020-08-08 | 87d | 43d | start on or after 2020-08-08 |  |  | 15.07 | Bam Ritchies | AB5609 | On Track | Week 19 | Weekend | W4 | 40m40ch - 42m00ch | Copley Hill | Jamie Hogg | ABS |  | 1m Scheduled Depth |  |
| A59440 |  | ABS - CANCELLED move to 19 | 1d | 2020-08-08 | 2020-08-08 | A72630 |  |  | 73d | 29d | start on or after 2020-08-08 |  | W46 | 15.07 | Bam Ritchies | AB5573 | On Track | Week 19 | Weekend | W4 | 38m20ch - 40m20ch | Morley | Jamie Hogg | ABS | Jamie Hogg | 2m Scheduled Depth | A |
| A59970 |  | ABS | 1d | 2020-08-08 | 2020-08-08 | A72630 |  |  | 73d | 29d | start on or after 2020-08-08 |  |  | EH | Bam Ritchies | AB5619 | On Track |  | Weekend | W4 | 40m 40ch - 42m03ch | Dragon Bridge | Jamie Hogg | ABS |  |  |  |
| A60220 |  | Window Sample - PROVISIONAL | 1d | 2020-08-08 | 2020-08-08 | A72630 |  |  | 73d | 1d | start on or after 2020-08-08 |  |  |  | Structural Soils | WS5440 | On Track | Week 19 | Midweek | W4 | 33m44ch to 33m75ch | Dewsbury | Olly Phillips | Window Sample |  | Dewsbury Station | A |
| A60310 |  | Track Survey | 1d | 2020-08-08 | 2020-08-08 |  |  |  | 307d |  | start on or after 2020-08-08 |  |  |  | Bridgeway |  | On Track | Week 19 | Weekend |  | 35m 56ch To 38m 29ch | Morley Station | Darren Walsh | Topographical Survey |  |  |  |
| A61360 |  | Paint Sample - PART 2 | 1d | 2020-08-08 | 2020-08-08 | A72630 |  |  | 267d | 1d | start on or after 2020-08-08 |  |  | EH | Bam Ritchies | MDL1/51/PS/01 | On Track |  | Weekend | W4 | 41m48 |  | Jamie Hogg | Paint Sample |  | PART 2 |  |
| A61490 |  | 75mm Horizontal Core - HERITAGE APPROVAL NEEDED | 1d | 2020-08-08 | 2020-08-08 | A72630 |  |  | 267d | 15d | start on or after 2020-08-08 |  |  | EH | Structural Soils | MDL1/40/SC/04 | On Track |  | Weekend | W4 | 39m56ch - 39m58ch | Morley |  | Coring |  | MDL1/40 Churwell Viaduct |  |
| A61500 |  | 75mm Horizontal Core - HERITAGE APPROVAL NEEDED | 1d | 2020-08-08 | 2020-08-08 | A72630 |  |  | 267d | 15d | start on or after 2020-08-08 |  |  | EH | Structural Soils | MDL1/40/SC/05 | On Track |  | Weekend | W4 | 39m56ch - 39m58ch | Morley |  | Coring |  | MDL1/40 Churwell Viaduct |  |
| A61510 |  | 75mm Horizontal Core - HERITAGE APPROVAL NEEDED | 1d | 2020-08-08 | 2020-08-08 | A72630 |  |  | 267d | 15d | start on or after 2020-08-08 |  |  | EH | Structural Soils | MDL1/40/SC/06 | On Track |  | Weekend | W4 | 39m56ch - 39m58ch | Morley |  | Coring |  | MDL1/40 Churwell Viaduct |  |
| A62460 |  | Paint Samples - PART 2 | 1d | 2020-08-08 | 2020-08-08 | A72630 |  |  | 116d | 1d | start on or after 2020-08-08 |  |  | EH | Structural Soils | Dewsbury Station | On Track |  | Weekend | W4 | 33m60 |  | Jamie Hogg | Paint Sample |  | PART 2 |  |
| A62550 |  | Asbestos survey - PROVISIONAL | 1d | 2020-08-08 | 2020-08-08 | A72630 |  |  | 172d | 1d | start on or after 2020-08-08 |  |  | EH | RSK |  | On Track |  | Weekend | W4 | 35m9 | MOVE POST 11 | Olly Phillips | Asbestos |  |  |  |
| A62640 |  | Heights & Staggers Survey - PART 2 - REPLAN | 1d | 2020-08-08 | 2020-08-08 | A72630 |  |  | 262d | 1d | start on or after 2020-08-08 |  |  | EH | Keltbray / Lundys | REPLAN POST WEEK 5 | On Track |  | Weekend | W4 | 41m0 | Countess St. | Tom Wilson | OLE Initiatives |  | PART 2 |  |
| A62650 |  | Bonding survey - PART 2 - MOVE | 1d | 2020-08-08 | 2020-08-08 | A72630 |  |  | 262d | 1d | start on or after 2020-08-08 |  |  | EH | Keltbray / Lundys | REPLAN POST WEEK 9 | On Track |  | Weekend | W4 | 42m0 | Countess St. | Tom Wilson | OLE Initiatives |  | PART 2 |  |
| A65890 |  | Drainage Survey - Asset Location, Asset Data & Dye Trace | 1d | 2020-08-08 | 2020-08-08 | A72630 |  |  | 69d | 57d | start on or after 2020-08-08 | keep |  | 29.06 | Lanes4Drains | W4-DR-001 | On Track | Week 19 | Weekend | W4 | 33m50ch - 34m75ch | Dewsbury | Isaac Derry | Drainage |  | Dewsbury |  |
| A66230 |  | Drainage Survey - Asset Location, Asset Data & Dye Trace | 1d | 2020-08-08 | 2020-08-08 | A72630 |  |  | 69d | 57d | start on or after 2020-08-08 |  |  | 29.06 | Lanes4Drains | W4-DR-002 - 008 | On Track | Week 19 | Weekend | W4 | 33m50ch - 34m75ch | Dewsbury | Isaac Derry | Drainage |  | Dewsbury |  |
| A67030 |  | Coring - HERITAGE APPROVAL RECIEVED | 1d | 2020-08-08 | 2020-08-08 | A72630 |  |  | 267d | 1d | start on or after 2020-08-08 |  |  | EH | Bam Ritchies | MDL1/19/SC/19 | On Track |  | Weekend | W4 | 33m73ch - 34m02ch | Dragon Bridge |  | Coring |  | MDL1/19 Dewsbury Viaduct |  |
| A67040 |  | Coring - HERITAGE APPROVAL RECIEVED | 1d | 2020-08-08 | 2020-08-08 | A72630 |  |  | 267d | 1d | start on or after 2020-08-08 |  |  | EH | Bam Ritchies | MDL1/19/SC/20 | On Track |  | Weekend | W4 | 33m73ch - 34m02ch | Dragon Bridge |  | Coring |  | MDL1/19 Dewsbury Viaduct |  |
| A68000 |  | ABS | 1d | 2020-08-08 | 2020-08-08 | A72630 |  |  | 73d | 29d | start on or after 2020-08-08 |  |  | EH | Bam Ritchies | AB5576 | On Track |  | Weekend | W4 | 39m50ch - 40m40ch | Cottingley | Jamie Hogg | ABS |  | NEW |  |
| A75670 |  | Drainage Survey - CCTV/Jetting | 1d | 2020-08-08 | 2020-08-08 | A72630 |  |  | 69d | 57d | start on or after 2020-08-08 |  |  |  | Lanes4Drains | W4-DR-002 - 008 | On Track | Week 19 | Weekend | W4 | 33m50ch - 34m75ch | Batley | Isaac Derry | Drainage |  | Dewsbury |  |
| A75990 |  | ABS | 1d | 2020-08-08 | 2020-08-08 | A72630 |  |  | 73d | 29d | start on or after 2020-08-08 |  |  | EH | Bam Ritchies | AB5642 | On Track |  | Weekend | W4 | 40m 40ch - 42m03ch | Copley Hill | Jamie Hogg | ABS |  |  |  |
| A76000 |  | ABS | 1d | 2020-08-08 | 2020-08-08 | A72630 |  |  | 73d | 29d | start on or after 2020-08-08 |  |  | EH | Bam Ritchies | AB5643 | On Track |  | Weekend | W4 | 40m 40ch - 42m03ch | Copley Hill | Jamie Hogg | ABS |  |  |  |
| A76010 |  | ABS | 1d | 2020-08-08 | 2020-08-08 | A72630 |  |  | 73d | 29d | start on or after 2020-08-08 |  |  | EH | Bam Ritchies | AB5644 | On Track |  | Weekend | W4 | 40m 40ch - 42m03ch | Copley Hill | Jamie Hogg | ABS |  |  |  |
| A76020 |  | ABS | 1d | 2020-08-08 | 2020-08-08 | A72630 |  |  | 73d | 29d | start on or after 2020-08-08 |  |  | EH | Bam Ritchies | AB5645 | On Track |  | Weekend | W4 | 40m 40ch - 42m03ch | Copley Hill | Jamie Hogg | ABS |  |  |  |
| A80770 |  | Drainage Survey - Asset Location & Asset Data | 1d | 2020-08-08 | 2020-08-08 |  |  |  | 307d |  | start on or after 2020-08-08 |  |  |  | Aaron Rail | W5 | On Track | Week 19 | Weekend | W4 | 37m 79ch - 38m 65ch | Morley | Mark Bingham | Drainage |  |  |  |
| A80830 |  | OLE Trial Holes | 1d | 2020-08-08 | 2020-08-08 |  |  |  | 307d |  | start on or after 2020-08-08 |  |  |  | Keltbray / Lundys |  | On Track | Week 19 | Weekend |  | 38m - 42m | Morley / Whiterose / Cottingley | Tom Wilson | OLE Initiatives |  |  |  |
| A80840 |  | OLE Trial Holes | 1d | 2020-08-08 | 2020-08-08 |  |  |  | 307d |  | start on or after 2020-08-08 |  |  |  | Keltbray / Lundys |  | On Track | Week 19 | Weekend |  | 38m - 42m | Morley / Whiterose / Cottingley | Tom Wilson | OLE Initiatives |  |  |  |
| A80850 |  | OLE Trial Holes | 1d | 2020-08-08 | 2020-08-08 |  |  |  | 307d |  | start on or after 2020-08-08 |  |  |  | Keltbray / Lundys |  | On Track | Week 19 | Weekend |  | 38m - 42m | Morley / Whiterose / Cottingley | Tom Wilson | OLE Initiatives |  |  |  |
| A81210 |  | Topographical Survey - Static Scanning | 1d | 2020-08-08 | 2020-08-08 |  |  |  | 307d |  | start on or after 2020-08-08 |  |  |  | SEP |  | On Track | Week 19 | Midweek |  | 39m34ch to 42m02ch | Gelderd Rd | Dom Keegans | Topographical |  |  |  |
| A81220 |  | Topographical Survey - Topo Survey | 1d | 2020-08-08 | 2020-08-08 |  |  |  | 307d |  | start on or after 2020-08-08 |  |  |  | SEP |  | On Track | Week 19 | Midweek |  | 39m34ch to 42m02ch | Gelderd Rd | Dom Keegans | Topographical |  |  |  |
| A81710 |  | Geophysics Survey | 1d | 2020-08-08 | 2020-08-08 |  |  |  | 307d |  | start on or after 2020-08-08 |  |  | 13.07 | RSK | MT-GEOPH-A:59450-A:59750 | On Track | Week 19 | Weekend | W4 | 35m52ch to 38m34ch | Morley | Olly Phillips | Geophysics |  |  |  |
| A82250 |  | ABS | 1d | 2020-08-08 | 2020-08-08 |  |  |  | 307d |  | start on or after 2020-08-08 |  |  |  | Bam Ritchies | TEAM 1 - REFS TBC | On Track | Week 19 | Weekend | W4 | 40m 40ch - 42m00ch | Copley Hill | Jamie Hogg | ABS |  |  |  |
| A82260 |  | ABS | 1d | 2020-08-08 | 2020-08-08 |  |  |  | 307d |  | start on or after 2020-08-08 |  |  |  | Bam Ritchies | TEAM 2 - REFS TBC | On Track | Week 19 | Weekend | W4 | 40m 40ch - 42m00ch | Copley Hill | Jamie Hogg | ABS |  |  |  |
| A82270 |  | Surveying | 1d | 2020-08-08 | 2020-08-08 |  |  |  | 307d |  | start on or after 2020-08-08 |  |  |  | Bam Ritchies |  | On Track | Week 19 | Weekend | W4 | 35m40ch - 38m30ch | Batley SB / Morley | Jamie Hogg | Walkout |  |  |  |
| A82280 |  | Surveying | 1d | 2020-08-08 | 2020-08-08 |  |  |  | 307d |  | start on or after 2020-08-08 |  |  | 13.07 | Structural Soils |  | On Track | Week 19 | Weekend | W4 | 35m52ch to 38m34ch | Morley | Olly Phillips | Surveying |  |  |  |
| A82290 |  | Window Sample - PROVISIONAL | 1d | 2020-08-08 | 2020-08-08 |  |  |  | 307d |  | start on or after 2020-08-08 |  |  |  | Structural Soils | WS5404 | On Track | Week 19 | Midweek | W4 | 33m44ch to 33m75ch | Dewsbury | Olly Phillips | Window Sample |  | Dewsbury Station | A |
| A82370 |  | Surveying | 1d | 2020-08-08 | 2020-08-08 |  |  |  | 307d |  | start on or after 2020-08-08 |  |  | 13.07 | Structural Soils |  | On Track | Week 19 | Weekend | W4 | 35m19ch | Batley | Olly Phillips | Surveying |  |  |  |

Notes:
- A62320: General Comments: 01/06 - Unable to work on DN line due to NR Gator movements / 11/07 - SSL works halted by Amey, email from Ben Cantrell 10/07: 'Following / on from the various conversations held this afternoon surrounding the release of / the instruction to work to Structural Soils. Note that all works due to be / undertaken by SSL this weekend, weather breaking ground or not, have now been / cancelled and are not to go ahead. This issue will be picked up on Monday (13th) / and further information will be briefed once a solution is in / place.' / Location: Morley Tunnel (MDL1/36)
- A62340: General Comments: 06/04 - SWL's weren't adhering to social distancing rules, therefore were / asked to leave site and works were cancelled / 17/04 - Moved to week 09 when resource is available / 01/06 - Unable to work on DN line due to NR Gator movements / 11/07 - SSL works halted by Amey, email from Ben Cantrell 10/07: 'Following / on from the various conversations held this afternoon surrounding the release of / the instruction to work to Structural Soils. Note that all works due to be / undertaken by SSL this weekend, weather breaking ground or not, have now been / cancelled and are not to go ahead. This issue will be picked up on Monday (13th) / and further information will be briefed once a solution is in / place.' / Location: Morley Tunnel (MDL1/36)
- A59850: Location: Cottingley to Copley Hill
- A59870: General Comments: 23/03 - Cancelled by Jamie Hogg for midweek 52, resource prioritised to W5 / works. To be replanned / Location: Cottingley to Copley Hill
- A59440: Location: Morley to Cottingley
- A59970: General Comments: 23/03 - Cancelled by Jamie Hogg for midweek 52, resource prioritised to W5 / works. To be replanned / 28/05 - Conflict with NR maintianence all week midweek 11 / Location: Cottingley to Copley Hill
- A60220: Location: Dewsbury Station
- A61360: Location: OB MDL1/51 - Walkers Footbridge, Copley Hill
- A61490: General Comments: ? / 10/03 - Awaiting Heritage approval / Location: RW MDL1/40/B1
- A61500: General Comments: ? / 10/03 - Awaiting Heritage approval / Location: RW MDL1/40/B1
- A61510: General Comments: ? / 10/03 - Awaiting Heritage approval / Location: RW MDL1/40/B1
- A62460: Location: Dewsbury Station
- A62550: General Comments: 14/03 - Possession didn't cover area in week 5, moved to next opportunity / 27/05 - Cannot be done until COVID restrictions are lifted / Location: Batley Station
- A62640: Location: Termination of the wire on the Huddersfield lines at LH/118/07&08 to Copley Hill Junction
- A62650: Location: Termination of the wire on the Huddersfield lines at LH/118/07&08 to Copley Hill Junction, including Leeds MPTSC
- A65890: Location: Morley Tunnel (MDL1/36)
- A66230: Location: Morley Tunnel (MDL1/36)
- A67030: Location: OB MDL1/47 - Whitehall Road Dragon Bridge
- A67040: Location: OB MDL1/47 - Whitehall Road Dragon Bridge
- A68000: General Comments: 28/05 - Conflict with NR maintianence all week midweek 11 / Location: OB MDL1/29 - Soothill Lane
- A75670: Location: Morley Tunnel (MDL1/36)
- A75990: General Comments: 23/03 - Cancelled by Jamie Hogg for midweek 52, resource prioritised to W5 / works. To be replanned / 28/05 - Conflict with NR maintianence all week midweek 11 / Location: Cottingley to Copley Hill
- A76000: General Comments: 23/03 - Cancelled by Jamie Hogg for midweek 52, resource prioritised to W5 / works. To be replanned / 28/05 - Conflict with NR maintianence all week midweek / 11 / Location: Cottingley to Copley Hill
- A76010: General Comments: 23/03 - Cancelled by Jamie Hogg for midweek 52, resource prioritised to W5 / works. To be replanned / 28/05 - Conflict with NR maintianence all week midweek / 11 / Location: Cottingley to Copley Hill
- A76020: General Comments: 23/03 - Cancelled by Jamie Hogg for midweek 52, resource prioritised to W5 / works. To be replanned / 28/05 - Conflict with NR maintianence all week midweek / 11 / Location: Cottingley to Copley Hill
- A80770: Location: Morley Tunnel (MDL1/36)
- A81710: General Comments: 06/07 - Further loss of access midweek 17 / Location: Morley Tunnel (MDL1/36)
- A82250: Location: Cottingley to Copley Hill
- A82260: Location: Cottingley to Copley Hill
- A82270: Location: Cottingley to Copley Hill
- A82280: General Comments: 06/07 - Further loss of access midweek 17 / Location: Morley Tunnel (MDL1/36)
- A82290: Location: Dewsbury Station
- A82370: General Comments: 06/07 - Further loss of access midweek 17 / Location: Morley Tunnel (MDL1/36)

| ID | WBS | Activity | Duration | Start | Finish | Predecessors | Total float | Free float | Constraint | Machines Required | Company Responsible | GI Reference Number | Teams | On-Track Off-Track | Week Number | Weekend/Midweek | Project | Mileage | Access Point | Responsibility | Location | Discipline | Location / ELR | Text 1 |
| --- | --- | --- | --- | --- | --- | --- | --- | --- | --- | --- | --- | --- | --- | --- | --- | --- | --- | --- | --- | --- | --- | --- | --- | --- |
|  | 3 | **Greetland Junc to Heaton Lodge Junc (00:25 Sun to 08:10 Sun) 30m60ch to 37m10ch (MVN2)** |  |  |  |  |  |  |  |  |  |  |  |  |  |  |  |  |  |  |  |  |  |  |
|  | 1 | **Mirfield East to Copley Hill (2350 Sat - 0820 Sun) 32m16ch - 38m15ch** |  |  |  |  |  |  |  |  |  |  |  |  |  |  |  |  |  |  |  |  |  |  |
|  | 13 | **Week 20** |  |  |  |  |  |  |  |  |  |  |  |  |  |  |  |  |  |  |  |  |  |  |
|  | 1 | **Wekend Works** |  |  |  |  |  |  |  |  |  |  |  |  |  |  |  |  |  |  |  |  |  |  |
|  | 1 | **Ravensthorpe to Copley Hill East (0040 Sat - 0510 Sat) 33m60ch - 41m60ch** |  |  |  |  |  |  |  |  |  |  |  |  |  |  |  |  |  |  |  |  |  |  |
|  | 49 | **Week 21-1** |  | 2020-08-22 | 2020-08-22 |  |  |  |  |  |  |  |  |  |  |  |  |  |  |  |  |  |  |  |
|  | 8 | **Weekend Works** |  | 2020-08-22 | 2020-08-22 |  |  |  |  |  |  |  |  |  |  |  |  |  |  |  |  |  |  |  |
|  | 5 | **Ravensthorpe to Copley Hill East (0040 Sat - 0510 Sat) 33m60ch - 41m60ch** |  | 2020-08-22 | 2020-08-22 |  |  |  |  |  |  |  |  |  |  |  |  |  |  |  |  |  |  |  |
| A58370 |  | Window Sample - PROVISIONAL | 1d | 2020-08-22 | 2020-08-22 | A72630 | 64d | 59d | start on or after 2020-08-22 | 13.07 | Structural Soils | WS5457 | A | On Track | Week 21 | Weekend | W4 | 35m01ch to 35m62ch | Batley | Olly Phillips | Dewsbury to Batley | Window Sample |  |  |
| A58780 |  | ABS - LOCATION ON HOLD | 1d | 2020-08-22 | 2020-08-22 | A72630 | 22d | 15d | start on or after 2020-08-22 | EH | Bam Ritchies | AB5479 |  | On Track | Week 21 | Weekend | W4 | 35m73 |  | Jamie Hogg | Batley to Morley Tunnel | ABS | 2m Scheduled Depth |  |
| A59260 |  | ABS - LOCATION ON HOLD | 1d | 2020-08-22 | 2020-08-22 | A72630 | 22d | 15d | start on or after 2020-08-22 | EH | Bam Ritchies | AB5534 |  | On Track | Week 21 | Weekend | W4 | 37m17 | Morley | Jamie Hogg | Morley Tunnel | ABS | 2m Scheduled Depth | W46 |
| A59310 |  | ABS - LOCATION ON HOLD | 1d | 2020-08-22 | 2020-08-22 | A72630 | 22d | 15d | start on or after 2020-08-22 | EH | Bam Ritchies | AB5549 |  | On Track | Week 21 | Weekend | W4 | 37m46 | Morley | Jamie Hogg | Morley Tunnel | ABS | 2m Scheduled Depth | W46 |
| A59320 |  | ABS | 1d | 2020-08-22 | 2020-08-22 | A72630 | 22d | 15d | start on or after 2020-08-22 | EH | Bam Ritchies | AB5551 |  | On Track | Week 21 | Weekend | W4 | 37m50 | Morley | Jamie Hogg | Morley Tunnel | ABS | 1m Scheduled Depth | W46 |
| A59360 |  | ABS - LOCATION ON HOLD | 1d | 2020-08-22 | 2020-08-22 | A72630 | 22d | 15d | start on or after 2020-08-22 | EH | Bam Ritchies | AB5559 |  | On Track | Week 21 | Weekend | W4 | 37m66 | Morley | Jamie Hogg | Morley Tunnel | ABS | 2m Scheduled Depth | W46 |
| A59640 |  | ABS | 1d | 2020-08-22 | 2020-08-22 | A72630 | 59d | 15d | start on or after 2020-08-22 | EH | Bam Ritchies | AB5594 |  | On Track | Week 21 | Weekend | W4 | 40m40ch - 42m02ch | Gelderd Road | Jamie Hogg | Cottingley to Copley Hill | ABS | 1m Scheduled Depth | W46 |
| A60410 |  | Window Sample - PROVISIONAL | 1d | 2020-08-22 | 2020-08-22 | A72630 | 64d | 59d | start on or after 2020-08-22 | 13.07 | Structural Soils | WS5460 | A | On Track | Week 21 | Weekend | W4 | 35m01ch to 35m62ch | Batley | Olly Phillips | Batley Station | Window Sample |  |  |
| A61520 |  | 75mm Horizontal Core - HERITAGE APPROVAL NEEDED | 1d | 2020-08-22 | 2020-08-22 | A72630 | 253d | 1d | start on or after 2020-08-22 | EH | Structural Soils | MDL1/40/SC/07 |  | On Track | Week 21 | Weekend | W4 | 39m56ch - 39m58ch | Morley |  | RW MDL1/40/B1 | Coring | MDL1/40 Churwell Viaduct |  |
| A61530 |  | 75mm Horizontal Core - HERITAGE APPROVAL NEEDED | 1d | 2020-08-22 | 2020-08-22 | A72630 | 253d | 1d | start on or after 2020-08-22 | EH | Structural Soils | MDL1/40/SC/08 |  | On Track | Week 21 | Weekend | W4 | 39m56ch - 39m58ch | Morley |  | RW MDL1/40/B1 | Coring | MDL1/40 Churwell Viaduct |  |
| A62570 |  | Geophysics Survey | 1d | 2020-08-22 | 2020-08-22 | A72630 | 134d | 1d | start on or after 2020-08-22 |  | Structural Soils | MT-GEOPH-A:58450-A:59050 |  | On Track | Week 21 | Weekend | W4 | 37m20 | Morley | Olly Phillips | Morley Tunnel (MDL1/36) | Geophysics |  |  |
| A62580 |  | Geophysics Survey | 1d | 2020-08-22 | 2020-08-22 | A72630 | 134d | 1d | start on or after 2020-08-22 | 13.07 | Structural Soils | MT-GEOPH-A:59450-A:59750 |  | On Track | Week 21 | Weekend | W4 | 35m52ch to 38m34ch | Morley | Olly Phillips | Morley Tunnel (MDL1/36) | Geophysics |  |  |
| A66150 |  | Drainage Survey - CCTV/Jetting | 1d | 2020-08-22 | 2020-08-22 | A72630 | 55d | 43d | start on or after 2020-08-22 |  | Lanes4Drains | W4-DR-051 - 190 |  | On Track | Week 21 | Weekend | W4 | 36m00ch - 38m20ch | Morley | Isaac Derry | Morley Tunnel (MDL1/36) | Drainage | Morley Tunnel & West Portal |  |
| A66290 |  | Drainage Survey - Asset Location, Asset Data & Dye Trace | 1d | 2020-08-22 | 2020-08-22 | A72630 | 55d | 22d | start on or after 2020-08-22 |  | Lanes4Drains | W4-DR-198 |  | On Track | Week 21 | Weekend | W4 | 40m20ch - 40m40ch |  | Isaac Derry | Morley Tunnel (MDL1/36) | Drainage | Cottingley |  |
| A66300 |  | Drainage Survey - Asset Location, Asset Data & Dye Trace | 1d | 2020-08-22 | 2020-08-22 | A72630 | 55d | 22d | start on or after 2020-08-22 |  | Lanes4Drains | W4-DR-199 - 235 |  | On Track | Week 21 | Weekend | W4 | 40m20ch - 40m40ch |  | Isaac Derry | Morley Tunnel (MDL1/36) | Drainage | Cottingley |  |
| A67050 |  | Coring - HERITAGE APPROVAL RECIEVED | 1d | 2020-08-22 | 2020-08-22 | A72630 | 253d | 17d | start on or after 2020-08-22 | EH | Bam Ritchies | MDL1/27/SC/01 |  | On Track | Week 21 | Weekend | W4 | 34m73ch - 35m02ch | Dragon Bridge |  | OB MDL1/47 - Whitehall Road Dragon Bridge | Coring | MDL1/27 Batley Viaduct |  |
| A67060 |  | Coring - HERITAGE APPROVAL RECIEVED | 1d | 2020-08-22 | 2020-08-22 | A72630 | 253d | 17d | start on or after 2020-08-22 | EH | Bam Ritchies | MDL1/27/SC/02 |  | On Track | Week 21 | Weekend | W4 | 34m73ch - 35m02ch | Dragon Bridge |  | OB MDL1/47 - Whitehall Road Dragon Bridge | Coring | MDL1/27 Batley Viaduct |  |
| A67070 |  | Coring - HERITAGE APPROVAL RECIEVED | 1d | 2020-08-22 | 2020-08-22 | A72630 | 253d | 17d | start on or after 2020-08-22 | EH | Bam Ritchies | MDL1/27/SC/03 |  | On Track | Week 21 | Weekend | W4 | 34m73ch - 35m02ch | Dragon Bridge |  | OB MDL1/47 - Whitehall Road Dragon Bridge | Coring | MDL1/27 Batley Viaduct |  |
| A67080 |  | Coring - HERITAGE APPROVAL RECIEVED | 1d | 2020-08-22 | 2020-08-22 | A72630 | 253d | 17d | start on or after 2020-08-22 | EH | Bam Ritchies | MDL1/27/SC/04 |  | On Track | Week 21 | Weekend | W4 | 34m73ch - 35m02ch | Dragon Bridge |  | OB MDL1/47 - Whitehall Road Dragon Bridge | Coring | MDL1/27 Batley Viaduct |  |
| A67090 |  | Coring - HERITAGE APPROVAL RECIEVED | 1d | 2020-08-22 | 2020-08-22 | A72630 | 253d | 17d | start on or after 2020-08-22 | EH | Bam Ritchies | MDL1/27/SC/05 |  | On Track | Week 21 | Weekend | W4 | 34m73ch - 35m02ch | Dragon Bridge |  | OB MDL1/47 - Whitehall Road Dragon Bridge | Coring | MDL1/27 Batley Viaduct |  |
| A67100 |  | Coring - HERITAGE APPROVAL RECIEVED | 1d | 2020-08-22 | 2020-08-22 | A72630 | 253d | 17d | start on or after 2020-08-22 | EH | Bam Ritchies | MDL1/27/SC/06 |  | On Track | Week 21 | Weekend | W4 | 34m73ch - 35m02ch | Dragon Bridge |  | OB MDL1/47 - Whitehall Road Dragon Bridge | Coring | MDL1/27 Batley Viaduct |  |
| A75720 |  | Drainage Survey - CCTV/Jetting | 1d | 2020-08-22 | 2020-08-22 | A72630 | 55d | 43d | start on or after 2020-08-22 |  | Lanes4Drains | W4-DR-196 |  | On Track | Week 21 | Weekend | W4 | 36m20ch - 36m40ch |  | Isaac Derry | Morley Tunnel (MDL1/36) | Drainage | Morley West Portal |  |
| A81360 |  | OLE Trial Holes | 1d | 2020-08-22 | 2020-08-22 |  | 293d |  | start on or after 2020-08-22 |  | Keltbray / Lundys |  |  | On Track | Week 21 | Weekend |  | 38m - 42m | Morley / Whiterose / Cottingley | Tom Wilson |  | OLE Initiatives |  |  |
| A81370 |  | OLE Trial Holes | 1d | 2020-08-22 | 2020-08-22 |  | 293d |  | start on or after 2020-08-22 |  | Keltbray / Lundys |  |  | On Track | Week 21 | Weekend |  | 38m - 42m | Morley / Whiterose / Cottingley | Tom Wilson |  | OLE Initiatives |  |  |
| A81380 |  | OLE Trial Holes | 1d | 2020-08-22 | 2020-08-22 |  | 293d |  | start on or after 2020-08-22 |  | Keltbray / Lundys |  |  | On Track | Week 21 | Weekend |  | 38m - 42m | Morley / Whiterose / Cottingley | Tom Wilson |  | OLE Initiatives |  |  |
| A81390 |  | OLE Trial Holes | 1d | 2020-08-22 | 2020-08-22 |  | 293d |  | start on or after 2020-08-22 |  | Keltbray / Lundys |  |  | On Track | Week 21 | Weekend |  | 38m - 42m | Morley / Whiterose / Cottingley | Tom Wilson |  | OLE Initiatives |  |  |
| A82050 |  | Team 1 -Control Coordination Morley Tunnel | 1d | 2020-08-22 | 2020-08-22 |  | 293d |  | start on or after 2020-08-22 |  | Bridgeway |  |  | On Track | Week 21 | Weekend |  | 35m 56ch To 38m 29ch | Batley LX/Morley Station | Darren Walsh |  | Topographical Survey |  |  |
| A82060 |  | Team 2 -Control Coordination Morley Tunnel | 1d | 2020-08-22 | 2020-08-22 |  | 293d |  | start on or after 2020-08-22 |  | Bridgeway |  |  | On Track | Week 21 | Weekend |  | 35m 56ch To 38m 29ch | Batley LX/Morley Station | Darren Walsh |  | Topographical Survey |  |  |
| A82120 |  | Topographical Survey - Static Scanning | 1d | 2020-08-22 | 2020-08-22 |  | 293d |  | start on or after 2020-08-22 |  | SEP |  |  | On Track | Week 21 | Midweek |  | 39m34ch to 42m02ch | Dragons Bridge | Dom Keegans |  | Topographical |  |  |
| A82130 |  | Topographical Survey - Topo Survey | 1d | 2020-08-22 | 2020-08-22 |  | 293d |  | start on or after 2020-08-22 |  | SEP |  |  | On Track | Week 21 | Midweek |  | 39m34ch to 42m02ch | Dragons Bridge | Dom Keegans |  | Topographical |  |  |

Notes:
- A58780: General Comments: 28/05 - Conflict with NR maintianence all week midweek 11
- A59260: General Comments: 28/05 - Conflict with NR maintianence all week midweek 11
- A59310: General Comments: 28/05 - Conflict with NR maintianence all week midweek 11
- A59360: General Comments: 28/05 - Conflict with NR maintianence all week midweek 11
- A61520: General Comments: ? / 10/03 - Awaiting Heritage approval
- A61530: General Comments: ? / 10/03 - Awaiting Heritage approval
- A62580: General Comments: 06/07 - Further loss of access midweek 17

| ID | WBS | Activity | Duration | Start | Finish | Predecessors | Total float | Free float | Constraint | Text 1 | Machines Required | Company Responsible | Location / ELR | GI Reference Number | On-Track Off-Track | Week Number | Weekend/Midweek | Project | Mileage | Responsibility | Location | Discipline | 04.2 Progress Note | Access Point | 03.1 Progress Note |
| --- | --- | --- | --- | --- | --- | --- | --- | --- | --- | --- | --- | --- | --- | --- | --- | --- | --- | --- | --- | --- | --- | --- | --- | --- | --- |
|  | 1 | **Mirfield East to Copley Hill (2350 Sat - 0820 Sun) 32m16ch - 38m15ch** |  |  |  |  |  |  |  |  |  |  |  |  |  |  |  |  |  |  |  |  |  |  |  |
|  | 50 | **Week 23-1** |  | 2020-09-05 | 2020-10-03 |  |  |  |  |  |  |  |  |  |  |  |  |  |  |  |  |  |  |  |  |
|  | 8 | **Weekend Works** |  | 2020-09-05 | 2020-10-03 |  |  |  |  |  |  |  |  |  |  |  |  |  |  |  |  |  |  |  |  |
|  | 5 | **Ravensthorpe to Copley Hill East (0040 Sat - 0510 Sat) 33m60ch - 41m60ch** |  | 2020-09-05 | 2020-09-05 |  |  |  |  |  |  |  |  |  |  |  |  |  |  |  |  |  |  |  |  |
| A59670 |  | ABS | 1d | 2020-09-05 | 2020-09-05 | A72630 | 45d | 1d | start on or after 2020-09-05 | W46 | EH | Bam Ritchies | 1m Scheduled Depth | AB5597 | On Track | Week 23 | Weekend | W4 | 40m39 | Jamie Hogg | Cottingley to Copley Hill | ABS | SURVEY |  |  |
| A59690 |  | Window Sample - PROVISIONAL | 1d | 2020-09-05 | 2020-09-05 | A72630 | 45d |  | start on or after 2020-09-05 |  | JM | Structural Soils |  | WS5426 | On Track | Week 23 | Weekend | W4 | 40m44 | Olly Phillips | Cottingley to Copley Hill | Window Sample |  | REPLAN C-19 |  |
| A59780 |  | Window Sample - PROVISIONAL | 1d | 2020-09-05 | 2020-09-05 | A72630 | 45d |  | start on or after 2020-09-05 |  |  | Structural Soils |  | WS5429 | On Track | Week 23 | Weekend | W4 | 40m63 | Olly Phillips | Cottingley to Copley Hill | Window Sample | SURVEY | REPLAN C-19 |  |
| A59840 |  | ABS | 1d | 2020-09-05 | 2020-09-05 | A72630 | 45d | 1d | start on or after 2020-09-05 |  | EH | Bam Ritchies | 1m Scheduled Depth | AB5606 | On Track | Week 23 | Weekend | W4 | 40m76 | Jamie Hogg | Cottingley to Copley Hill | ABS | SURVEY | Copley Hill |  |
| A62090 |  | Structural Coring [SC] - PART 2 | 1d | 2020-09-05 | 2020-09-05 | A72630 | 239d | 43d | start on or after 2020-09-05 |  | ON HOLD | Structural Soils | PART 2 | MT-SC-A:58550 C1 to C7 | On Track | Week 23 | Weekend | W4 | 36m31 |  | Morley Tunnel (MDL1/36) | Coring |  |  |  |
| A62470 |  | Asbestos survey - TO BE CONFIRMED | 1d | 2020-09-05 | 2020-09-05 | A72630 | 88d | 1d | start on or after 2020-09-05 |  |  | Structural Soils |  |  | On Track | Week 23 | Weekend | W4 | 33m60 | Olly Phillips | Dewsbury Station | Asbestos |  |  |  |
| A65920 |  | Drainage Survey - Asset Location, Asset Data & Dye Trace | 1d | 2020-09-05 | 2020-09-05 | A72630 | 41d | 29d | start on or after 2020-09-05 |  |  | Lanes4Drains | Dewsbury / Batley | W4-DR-023 | On Track | Week 23 | Weekend | W4 | 34m40ch - 34m60ch | Isaac Derry | Morley Tunnel (MDL1/36) | Drainage |  |  |  |
| A65950 |  | Drainage Survey - Asset Location, Asset Data & Dye Trace | 1d | 2020-09-05 | 2020-09-05 | A72630 | 41d | 29d | start on or after 2020-09-05 |  | Y | Lanes4Drains | Morley West Portal | W4-DR-043 | On Track | Week 23 | Weekend | W4 | 36m00ch - 36m20ch | Isaac Derry | Morley Tunnel (MDL1/36) | Drainage |  |  |  |
| A65960 |  | Drainage Survey - Asset Location, Asset Data & Dye Trace | 1d | 2020-09-05 | 2020-09-05 | A72630 | 41d | 29d | start on or after 2020-09-05 |  | Y | Lanes4Drains | Morley West Portal | W4-DR-044 - 046 | On Track | Week 23 | Weekend | W4 | 36m00ch - 36m40ch | Isaac Derry | Morley Tunnel (MDL1/36) | Drainage |  |  |  |
| A67110 |  | Coring - HERITAGE APPROVAL RECIEVED | 1d | 2020-09-05 | 2020-09-05 | A72630 | 239d | 3d | start on or after 2020-09-05 |  | EH | Bam Ritchies | MDL1/27 Batley Viaduct | MDL1/27/SC/07 | On Track | Week 23 | Weekend | W4 | 34m73ch - 35m02ch |  | OB MDL1/47 - Whitehall Road Dragon Bridge | Coring |  | Dragon Bridge |  |
| A67120 |  | Coring - HERITAGE APPROVAL RECIEVED | 1d | 2020-09-05 | 2020-09-05 | A72630 | 239d | 3d | start on or after 2020-09-05 |  | EH | Bam Ritchies | MDL1/27 Batley Viaduct | MDL1/27/SC/08 | On Track | Week 23 | Weekend | W4 | 34m73ch - 35m02ch |  | OB MDL1/47 - Whitehall Road Dragon Bridge | Coring |  | Dragon Bridge |  |
| A67130 |  | Coring - HERITAGE APPROVAL RECIEVED | 1d | 2020-09-05 | 2020-09-05 | A72630 | 239d | 3d | start on or after 2020-09-05 |  | EH | Bam Ritchies | MDL1/27 Batley Viaduct | MDL1/27/SC/09 | On Track | Week 23 | Weekend | W4 | 34m73ch - 35m02ch |  | OB MDL1/47 - Whitehall Road Dragon Bridge | Coring |  | Dragon Bridge |  |
| A67140 |  | Coring - HERITAGE APPROVAL RECIEVED | 1d | 2020-09-05 | 2020-09-05 | A72630 | 239d | 3d | start on or after 2020-09-05 |  | EH | Bam Ritchies | MDL1/27 Batley Viaduct | MDL1/27/SC/10 | On Track | Week 23 | Weekend | W4 | 34m73ch - 35m02ch |  | OB MDL1/47 - Whitehall Road Dragon Bridge | Coring |  | Dragon Bridge |  |
| A67150 |  | Coring - HERITAGE APPROVAL RECIEVED | 1d | 2020-09-05 | 2020-09-05 | A72630 | 239d | 3d | start on or after 2020-09-05 |  | EH | Bam Ritchies | MDL1/27 Batley Viaduct | MDL1/27/SC/11 | On Track | Week 23 | Weekend | W4 | 34m73ch - 35m02ch |  | OB MDL1/47 - Whitehall Road Dragon Bridge | Coring |  | Dragon Bridge |  |
| A67160 |  | Coring - HERITAGE APPROVAL RECIEVED | 1d | 2020-09-05 | 2020-09-05 | A72630 | 239d | 3d | start on or after 2020-09-05 |  | EH | Bam Ritchies | MDL1/27 Batley Viaduct | MDL1/27/SC/12 | On Track | Week 23 | Weekend | W4 | 34m73ch - 35m02ch |  | OB MDL1/47 - Whitehall Road Dragon Bridge | Coring |  | Dragon Bridge |  |
| A67750 |  | Paint Sample - MOVE | 1d | 2020-09-05 | 2020-09-05 | A72630 | 144d | 1d | start on or after 2020-09-05 |  | EH | Bam Ritchies | MDL1/28 Station Subway | MDL1/28/PS/01 | On Track | Week 23 | Weekend | W4 | 35m09ch | Jamie Hogg | OB MDL1/47 - Whitehall Road Dragon Bridge | Paint Sample |  |  |  |
| A67840 |  | ABS | 1d | 2020-09-05 | 2020-09-05 | A72630 | 8d | 1d | start on or after 2020-09-05 |  | EH | Bam Ritchies | 1m Scheduled Depth | AB5451 | On Track | Week 23 | Weekend | W4 | 35m15ch | Jamie Hogg | OB MDL1/29 - Soothill Lane | ABS | SURVEY | MOVE OUT OF 8 | 200530 CV - Survey Critical |
| A67860 |  | ABS | 1d | 2020-09-05 | 2020-09-05 | A72630 | 8d | 1d | start on or after 2020-09-05 |  | EH | Bam Ritchies | 1m Scheduled Depth | AB5466 | On Track | Week 23 | Weekend | W4 | 35m46ch | Jamie Hogg | OB MDL1/29 - Soothill Lane | ABS | SURVEY |  | 200530 CV - Survey Critical |
| A68420 |  | POS Walkout | 1d | 2020-09-05 | 2020-09-05 |  | 279d |  | start on or after 2020-09-05 |  |  | Bam Nuttall |  |  | On Track | Week 23 | Weekend |  | 38m 51ch | Justin Sena |  | Walkout |  | Morley RRAP |  |
| A82100 |  | Team 1 -Control Coordination Morley Tunnel | 1d | 2020-09-05 | 2020-09-05 |  | 279d |  | start on or after 2020-09-05 |  |  | Bridgeway |  |  | On Track | Week 23 | Weekend |  | 35m 56ch To 38m 29ch | Darren Walsh |  | Topographical Survey |  | Batley LX/Morley Station |  |
| A82110 |  | Team 2 -Control Coordination Morley Tunnel | 1d | 2020-09-05 | 2020-09-05 |  | 279d |  | start on or after 2020-09-05 |  |  | Bridgeway |  |  | On Track | Week 23 | Weekend |  | 35m 56ch To 38m 29ch | Darren Walsh |  | Topographical Survey |  | Batley LX/Morley Station |  |

Notes:
- A62470: General Comments: 14/03 - Possession didn't cover area in week 5, moved to next opportunity / 07/05 - delay in getting COVID-19 RA signed off
- A65960: General Comments: ? / 19/05 - Teething problems / with new supplier has meant progress has been slow. Outputs on site remain to be / seen, so assuming a pesimistic view on the dates for now. Pushing for dates to / be brought in

| ID | WBS | Activity | Duration | Start | Finish | Predecessors | Total float | Free float | Constraint | Calendar | Machines Required | Company Responsible | Location / ELR | GI Reference Number | On-Track Off-Track | Week Number | Weekend/Midweek | Project | Mileage | Location | Discipline | Text 1 | Access Point | Responsibility | Teams |
| --- | --- | --- | --- | --- | --- | --- | --- | --- | --- | --- | --- | --- | --- | --- | --- | --- | --- | --- | --- | --- | --- | --- | --- | --- | --- |
|  | 2 | **Mirfield East to Copley Hill (2350 Sat - 0820 Sun) 32m16ch - 38m15ch-1** |  | 2020-09-13 | 2020-10-03 |  |  |  |  |  |  |  |  |  |  |  |  |  |  |  |  |  |  |  |  |
| A60570 |  | 75mm Horizontal Core - HERITAGE APPROVAL RECIEVED | 1d | 2020-09-13 | 2020-09-13 | A72630 | 231d | 7d | start on or after 2020-09-13 |  | EH | Bam Ritchies | MOVE | MDL1/16/SC/01 | On Track | Week 24 | Weekend | W4 | HERITAGE APPROVAL RECIEVED | UB MDL1/16 - George Street | Coring |  |  |  |  |
| A60580 |  | 75mm Horizontal Core - HERITAGE APPROVAL RECIEVED | 1d | 2020-09-13 | 2020-09-13 | A72630 | 231d | 7d | start on or after 2020-09-13 |  | EH | Bam Ritchies | MOVE | MDL1/16/SC/02 | On Track | Week 24 | Weekend | W4 | HERITAGE APPROVAL RECIEVED | UB MDL1/16 - George Street | Coring |  |  |  |  |
| A60590 |  | 75mm Horizontal Core - HERITAGE APPROVAL RECIEVED | 1d | 2020-09-13 | 2020-09-13 | A72630 | 231d | 7d | start on or after 2020-09-13 |  | EH | Bam Ritchies |  | MDL1/16/SC/03 | On Track | Week 24 | Weekend | W4 | HERITAGE APPROVAL RECIEVED | UB MDL1/16 - George Street | Coring | W44 |  |  |  |
| A60600 |  | 75mm Horizontal Core - HERITAGE APPROVAL RECIEVED | 1d | 2020-09-13 | 2020-09-13 | A72630 | 231d | 7d | start on or after 2020-09-13 |  | EH | Bam Ritchies | MOVE | MDL1/16/SC/04 | On Track | Week 24 | Weekend | W4 | HERITAGE APPROVAL RECIEVED | UB MDL1/16 - George Street | Coring |  |  |  |  |
| A60610 |  | 75mm Horizontal Core - HERITAGE APPROVAL RECIEVED | 1d | 2020-09-13 | 2020-09-13 | A72630 | 231d | 7d | start on or after 2020-09-13 |  | EH | Bam Ritchies |  | MDL1/16/SC/05 | On Track | Week 24 | Weekend | W4 | HERITAGE APPROVAL RECIEVED | UB MDL1/16 - George Street | Coring |  |  |  |  |
| A60620 |  | 75mm Horizontal Core - HERITAGE APPROVAL RECIEVED | 1d | 2020-09-13 | 2020-09-13 | A72630 | 231d | 7d | start on or after 2020-09-13 |  | EH | Bam Ritchies |  | MDL1/16/SC/06 | On Track | Week 24 | Weekend | W4 | HERITAGE APPROVAL RECIEVED | UB MDL1/16 - George Street | Coring | W44 |  |  |  |
| A60630 |  | 75mm Horizontal Core - HERITAGE APPROVAL RECIEVED | 1d | 2020-09-13 | 2020-09-13 | A72630 | 231d | 7d | start on or after 2020-09-13 |  | EH | Bam Ritchies |  | MDL1/16/SC/07 | On Track | Week 24 | Weekend | W4 | HERITAGE APPROVAL RECIEVED | UB MDL1/16 - George Street | Coring |  |  |  |  |
| A60640 |  | 75mm Horizontal Core - HERITAGE APPROVAL RECIEVED | 1d | 2020-09-13 | 2020-09-13 | A72630 | 231d | 7d | start on or after 2020-09-13 |  | EH | Bam Ritchies |  | MDL1/16/SC/08 | On Track | Week 24 | Weekend | W4 | HERITAGE APPROVAL RECIEVED | UB MDL1/16 - George Street | Coring |  |  |  |  |
| A61320 |  | Paint Sample - CREATE REPORT | 1d | 2020-09-13 | 2020-09-13 | A72630 | 271d | 0d | start on or after 2020-09-13 |  | EH | Bam Ritchies | PART 2 | MDL1/16/PS/01 | On Track |  | Weekend | W4 | 33m49 | UB MDL1/16 - George Street | Paint Sample | W46 |  |  |  |
| A62140 |  | Structural Coring [SC] - PART 2 | 1d | 2020-09-13 | 2020-09-13 | A72630 | 231d | 35d | start on or after 2020-09-13 |  | ON HOLD | Structural Soils | PART 2 | MT-SC-A:60400 C1 to C7 | On Track | Week 24 | Weekend | W4 | 37m42 | Morley Tunnel (MDL1/36) | Coring |  | Morley |  |  |
| A62150 |  | Structural Coring [SC] - PART 2 | 1d | 2020-09-13 | 2020-09-13 | A72630 | 231d | 35d | start on or after 2020-09-13 |  | ON HOLD | Structural Soils | PART 2 | MT-SC-A:60800 C1 to C7 | On Track | Week 24 | Weekend | W4 | 37m62 | Morley Tunnel (MDL1/36) | Coring |  | Morley |  |  |
| A66090 |  | Drainage Survey - CCTV/Jetting | 1d | 2020-09-13 | 2020-09-13 | A72630 | 33d | 21d | start on or after 2020-09-13 |  |  | Lanes4Drains | Dewsbury / Batley | W4-DR-023 | On Track | Week 24 | Weekend | W4 | 34m40ch - 34m60ch | Morley Tunnel (MDL1/36) | Drainage |  |  | Isaac Derry |  |
| A66130 |  | Drainage Survey - CCTV/Jetting | 1d | 2020-09-13 | 2020-09-13 | A72630 | 33d | 21d | start on or after 2020-09-13 |  |  | Lanes4Drains | Morley West Portal | W4-DR-044 - 046 | On Track | Week 24 | Weekend | W4 | 36m00ch - 36m40ch | Morley Tunnel (MDL1/36) | Drainage |  |  | Isaac Derry |  |
| A79150 |  | Drainage Survey - Asset Location, Asset Data & Dye Trace | 1d | 2020-09-13 | 2020-09-13 |  | 271d |  | start on or after 2020-09-13 |  | Y | Lanes4Drains | Morley West Portal | W4-DR-042 | On Track | Week 24 | Weekend | W4 | 35m60ch - 36m00ch | Morley Tunnel (MDL1/36) | Drainage |  |  | Isaac Derry |  |
| A66140 |  | Drainage Survey - CCTV/Jetting | 1d | 2020-10-03 | 2020-10-03 | A72630 | 13d | 1d | start on or after 2020-10-03 |  |  | Lanes4Drains | Morley West Portal | W4-DR-047 | On Track | Week 24 | Weekend | W4 | 36m00ch - 36m40ch | Morley Tunnel (MDL1/36) | Drainage |  |  | Isaac Derry |  |
| A79110 |  | Drainage Survey - Asset Location, Asset Data & Dye Trace | 1d | 2020-10-03 | 2020-10-03 |  | 251d |  | start on or after 2020-10-03 |  | Y | Lanes4Drains | Morley West Portal | W4-DR-044 - 046 | On Track | Week 24 | Weekend | W4 | 36m00ch - 36m40ch | Morley Tunnel (MDL1/36) | Drainage |  |  | Isaac Derry |  |
|  | 1 | **Mirfield East to Copley Hill (2350 Sat - 0820 Sun) 32m16ch - 38m15ch** |  |  |  |  |  |  |  |  |  |  |  |  |  |  |  |  |  |  |  |  |  |  |  |
|  | 1 | **Midweek Works** |  | 2020-09-08 | 2020-09-11 |  |  |  |  |  |  |  |  |  |  |  |  |  |  |  |  |  |  |  |  |
|  | 7 | **Ravensthorpe to Copley Hill East Jct (23:50 Mon to 05:45 Tues) 32m28ch-35m20ch & 38m25ch-185m25ch** |  | 2020-09-08 | 2020-09-08 |  |  |  |  |  |  |  |  |  |  |  |  |  |  |  |  |  |  |  |  |
| A59790 |  | Window Sample - PROVISIONAL | 1d | 2020-09-08 | 2020-09-08 | A72630 | 42d |  | start on or after 2020-09-08 |  |  | Structural Soils |  | WS5430 | On Track | Week 23 | Midweek | W4 | 40m66 | Cottingley to Copley Hill | Window Sample |  | REPLAN C-19 | Olly Phillips |  |
| A59820 |  | Window Sample - PROVISIONAL | 1d | 2020-09-08 | 2020-09-08 | A72630 | 42d |  | start on or after 2020-09-08 |  | JM | Structural Soils |  | WS5432 | On Track | Week 23 | Midweek | W4 | 40m71 | Cottingley to Copley Hill | Window Sample |  | REPLAN C-19 | Olly Phillips | A |
| A62100 |  | Structural Coring [SC] - PART 2 | 1d | 2020-09-08 | 2020-09-08 | A72630 | 236d | 40d | start on or after 2020-09-08 |  | ON HOLD | Structural Soils | PART 2 | MT-SC-A:59000 C1 to C7 | On Track | Week 23 | Midweek | W4 | 36m53 | Morley Tunnel (MDL1/36) | Coring |  |  |  |  |
| A66180 |  | Drainage Survey - CCTV/Jetting | 1d | 2020-09-08 | 2020-09-08 | A72630 | 38d | 26d | start on or after 2020-09-08 |  |  | Lanes4Drains | Morley Tunnel | W4-DR-MT | On Track | Week 23 | Midweek | W4 | 36m20ch - 38m20ch | Morley Tunnel (MDL1/36) | Drainage |  |  | Isaac Derry |  |
| A66220 |  | Drainage Survey - CCTV/Jetting | 1d | 2020-09-08 | 2020-09-08 | A72630 | 54d | 3d | start on or after 2020-09-08 |  |  | Lanes4Drains | Copley Jn DOL2 | W4-DR-239 - 240 | On Track | Week 23 | Midweek | W4 | 185m40ch - 185m60ch | Morley Tunnel (MDL1/36) | Drainage |  |  | Isaac Derry |  |
| A67170 |  | Coring - HERITAGE APPROVAL RECIEVED | 1d | 2020-09-08 | 2020-09-08 | A72630 | 236d | 0d | start on or after 2020-09-08 |  | EH | Bam Ritchies | MDL1/27 Batley Viaduct | MDL1/27/SC/13 | On Track | Week 23 | Midweek | W4 | 34m73ch - 35m02ch | OB MDL1/47 - Whitehall Road Dragon Bridge | Coring |  | Dragon Bridge |  |  |
| A67180 |  | Coring - HERITAGE APPROVAL RECIEVED | 1d | 2020-09-08 | 2020-09-08 | A72630 | 236d | 0d | start on or after 2020-09-08 |  | EH | Bam Ritchies | MDL1/27 Batley Viaduct | MDL1/27/SC/14 | On Track | Week 23 | Midweek | W4 | 34m73ch - 35m02ch | OB MDL1/47 - Whitehall Road Dragon Bridge | Coring |  | Dragon Bridge |  |  |
| A67190 |  | Coring - HERITAGE APPROVAL RECIEVED | 1d | 2020-09-08 | 2020-09-08 | A72630 | 236d | 0d | start on or after 2020-09-08 |  | EH | Bam Ritchies | MDL1/27 Batley Viaduct | MDL1/27/SC/15 | On Track | Week 23 | Midweek | W4 | 34m73ch - 35m02ch | OB MDL1/47 - Whitehall Road Dragon Bridge | Coring |  | Dragon Bridge |  |  |
| A67200 |  | Coring - HERITAGE APPROVAL RECIEVED | 1d | 2020-09-08 | 2020-09-08 | A72630 | 236d | 0d | start on or after 2020-09-08 |  | EH | Bam Ritchies | MDL1/27 Batley Viaduct | MDL1/27/SC/16 | On Track | Week 23 | Midweek | W4 | 34m73ch - 35m02ch | OB MDL1/47 - Whitehall Road Dragon Bridge | Coring |  | Dragon Bridge |  |  |
| A75700 |  | Drainage Survey - CCTV/Jetting | 1d | 2020-09-08 | 2020-09-08 | A72630 | 38d | 26d | start on or after 2020-09-08 |  |  | Lanes4Drains | Morley West Portal | W4-DR-042 | On Track | Week 23 | Midweek | W4 | 35m60ch - 36m00ch | Morley Tunnel (MDL1/36) | Drainage |  |  | Isaac Derry |  |
| A79120 |  | Drainage Survey - Asset Location, Asset Data & Dye Trace | 1d | 2020-09-08 | 2020-09-08 |  | 276d |  | start on or after 2020-09-08 |  | Y | Lanes4Drains | Morley West Portal | W4-DR-047 | On Track | Week 23 | Midweek | W4 | 36m00ch - 36m40ch | Morley Tunnel (MDL1/36) | Drainage |  |  | Isaac Derry |  |
| A81420 |  | OLE Trial Holes | 1d | 2020-09-08 | 2020-09-08 |  | 198d |  | start on or after 2020-09-08 | A03 5 Day Workweek (BH & Xmas as Work) |  | Keltbray / Lundys |  |  | On Track | Week 23 | Weekend |  | Full Mileage |  | OLE Initiatives |  | Morley / Whiterose / Cottingley | Tom Wilson |  |
| A81460 |  | OLE Trial Holes | 1d | 2020-09-08 | 2020-09-08 |  | 198d |  | start on or after 2020-09-08 | A03 5 Day Workweek (BH & Xmas as Work) |  | Keltbray / Lundys |  |  | On Track | Week 23 | Weekend |  | Full Mileage |  | OLE Initiatives |  | Morley / Whiterose / Cottingley | Tom Wilson |  |
| A81470 |  | OLE Trial Holes | 1d | 2020-09-08 | 2020-09-08 |  | 198d |  | start on or after 2020-09-08 | A03 5 Day Workweek (BH & Xmas as Work) |  | Keltbray / Lundys |  |  | On Track | Week 23 | Weekend |  | Full Mileage |  | OLE Initiatives |  | Morley / Whiterose / Cottingley | Tom Wilson |  |
| A81480 |  | OLE Trial Holes | 1d | 2020-09-08 | 2020-09-08 |  | 198d |  | start on or after 2020-09-08 | A03 5 Day Workweek (BH & Xmas as Work) |  | Keltbray / Lundys |  |  | On Track | Week 23 | Weekend |  | Full Mileage |  | OLE Initiatives |  | Morley / Whiterose / Cottingley | Tom Wilson |  |
| A82000 |  | Prep For Safety - Scoping / Closing | 1d | 2020-09-08 | 2020-09-08 |  | 276d |  | start on or after 2020-09-08 |  |  | Amey |  |  | On Track | Week 23 | Weekend |  |  |  | Prep For Safety |  |  | Kyle Spence |  |
| A82140 |  | Topographical Survey - Quality Checks | 1d | 2020-09-08 | 2020-09-08 |  | 276d |  | start on or after 2020-09-08 |  |  | SEP |  |  | On Track | Week 23 | Midweek |  | 39m34ch to 42m02ch |  | Topographical |  |  | Dom Keegans |  |
| A82150 |  | Topographical Survey - Quality Checks | 1d | 2020-09-08 | 2020-09-08 |  | 276d |  | start on or after 2020-09-08 |  |  | SEP |  |  | On Track | Week 23 | Midweek |  | 39m34ch to 42m02ch |  | Topographical |  |  | Dom Keegans |  |

Notes:
- A60570: General Comments: 01/05 - No possession Saturday Night week 16. Heritage approval still / required for structure, moved to back of coring programme.
- A60580: General Comments: 01/05 - No possession Saturday Night week 16. Heritage approval still / required for structure, moved to back of coring programme.
- A60590: General Comments: 01/05 - No possession Saturday Night week 16. Heritage approval still / required for structure, moved to back of coring programme.
- A60600: General Comments: 01/05 - No possession Saturday Night week 16. Heritage approval still / required for structure, moved to back of coring programme.
- A60610: General Comments: 01/05 - No possession Saturday Night week 16. Heritage approval still / required for structure, moved to back of coring programme.
- A60620: General Comments: 01/05 - No possession Saturday Night week 16. Heritage approval still / required for structure, moved to back of coring programme.
- A60630: General Comments: 01/05 - No possession Saturday Night week 16. Heritage approval still / required for structure, moved to back of coring programme.
- A60640: General Comments: 01/05 - No possession Saturday Night week 16. Heritage approval still / required for structure, moved to back of coring programme.
- A61320: General Comments: 01/05 - No possession Saturday Night week 16. Heritage approval still / required for structure, moved to back of coring programme.
- A79110: General Comments: ? / 19/05 - Teething problems / with new supplier has meant progress has been slow. Outputs on site remain to be / seen, so assuming a pesimistic view on the dates for now. Pushing for dates to / be brought in
- A79120: General Comments: ? / 19/05 - Teething problems / with new supplier has meant progress has been slow. Outputs on site remain to be / seen, so assuming a pesimistic view on the dates for now. Pushing for dates to / be brought in

| ID | WBS | Activity | Duration | Start | Finish | Predecessors | Total float | Free float | Constraint | Calendar | Machines Required | Company Responsible | GI Reference Number | Teams | On-Track Off-Track | Week Number | Weekend/Midweek | Project | Mileage | Access Point | Responsibility | Location | Discipline | Location / ELR | Text 1 |
| --- | --- | --- | --- | --- | --- | --- | --- | --- | --- | --- | --- | --- | --- | --- | --- | --- | --- | --- | --- | --- | --- | --- | --- | --- | --- |
|  | 1 | **Ravensthorpe to Copley Hill East Jct (23:50 Tues to 05:45 Wed) 32m28ch-35m20ch & 38m25ch-185m25ch-1** |  | 2020-09-09 | 2020-09-09 |  |  |  |  |  |  |  |  |  |  |  |  |  |  |  |  |  |  |  |  |
| A60010 |  | Window Sample - PROVISIONAL | 1d | 2020-09-09 | 2020-09-09 | A72630 | 41d |  | start on or after 2020-09-09 |  | JM | Structural Soils | WS5433 | A | On Track | Week 23 | Midweek | W4 | 41m28 | REPLAN C-19 | Olly Phillips | Cottingley to Copley Hill | Window Sample |  |  |
| A60100 |  | Window Sample - PROVISIONAL | 1d | 2020-09-09 | 2020-09-09 | A72630 | 41d |  | start on or after 2020-09-09 |  | JM | Structural Soils | WS5434 | A | On Track | Week 23 | Midweek | W4 | 41m45 | REPLAN C-19 | Olly Phillips | Cottingley to Copley Hill | Window Sample |  |  |
| A62110 |  | Structural Coring [SC] - PART 2 | 1d | 2020-09-09 | 2020-09-09 | A72630 | 235d | 39d | start on or after 2020-09-09 |  | ON HOLD | Structural Soils | MT-SC-A:59450 C1 to C7 |  | On Track | Week 23 | Midweek | W4 | 36m75 |  |  | Morley Tunnel (MDL1/36) | Coring | PART 2 |  |
| A65910 |  | Drainage Survey - Asset Location, Asset Data & Dye Trace | 1d | 2020-09-09 | 2020-09-09 | A72630 | 37d | 25d | start on or after 2020-09-09 |  |  | Lanes4Drains | W4-DR-021 - 022 |  | On Track | Week 23 | Midweek | W4 | 34m30ch - 34m40ch |  | Isaac Derry | Morley Tunnel (MDL1/36) | Drainage | Dewsbury / Batley |  |
| A65970 |  | Drainage Survey - Asset Location, Asset Data & Dye Trace | 1d | 2020-09-09 | 2020-09-09 | A72630 | 37d | 25d | start on or after 2020-09-09 |  | Y | Lanes4Drains | W4-DR-047 |  | On Track | Week 23 | Midweek | W4 | 36m00ch - 36m40ch |  | Isaac Derry | Morley Tunnel (MDL1/36) | Drainage | Morley West Portal |  |
| A66020 |  | Drainage Survey - Asset Location, Asset Data & Dye Trace | 1d | 2020-09-09 | 2020-09-09 | A72630 | 53d | 2d | start on or after 2020-09-09 |  |  | Lanes4Drains | W4-DR-236 |  | On Track | Week 23 | Midweek | W4 | 40m40ch - 40m60ch |  | Isaac Derry | Morley Tunnel (MDL1/36) | Drainage | Cottingley |  |
| A66050 |  | Drainage Survey - Asset Location, Asset Data & Dye Trace/CCTV | 1d | 2020-09-09 | 2020-09-09 | A72630 | 53d | 2d | start on or after 2020-09-09 |  | 29.06 | Lanes4Drains | W4-DR-239 - 240 |  | On Track | Week 23 | Midweek | W4 | 184m50ch to 185m60ch | Copley Jn | Isaac Derry | Morley Tunnel (MDL1/36) | Drainage | Copley Jn DOL2 |  |
| A81430 |  | OLE Trial Holes | 1d | 2020-09-09 | 2020-09-09 |  | 197d |  | start on or after 2020-09-09 | A03 5 Day Workweek (BH & Xmas as Work) |  | Keltbray / Lundys |  |  | On Track | Week 23 | Weekend |  | Full Mileage | Morley / Whiterose / Cottingley | Tom Wilson |  | OLE Initiatives |  |  |
| A81490 |  | OLE Trial Holes | 1d | 2020-09-09 | 2020-09-09 |  | 197d |  | start on or after 2020-09-09 | A03 5 Day Workweek (BH & Xmas as Work) |  | Keltbray / Lundys |  |  | On Track | Week 23 | Weekend |  | Full Mileage | Morley / Whiterose / Cottingley | Tom Wilson |  | OLE Initiatives |  |  |
| A81500 |  | OLE Trial Holes | 1d | 2020-09-09 | 2020-09-09 |  | 197d |  | start on or after 2020-09-09 | A03 5 Day Workweek (BH & Xmas as Work) |  | Keltbray / Lundys |  |  | On Track | Week 23 | Weekend |  | Full Mileage | Morley / Whiterose / Cottingley | Tom Wilson |  | OLE Initiatives |  |  |
| A81510 |  | OLE Trial Holes | 1d | 2020-09-09 | 2020-09-09 |  | 197d |  | start on or after 2020-09-09 | A03 5 Day Workweek (BH & Xmas as Work) |  | Keltbray / Lundys |  |  | On Track | Week 23 | Weekend |  | Full Mileage | Morley / Whiterose / Cottingley | Tom Wilson |  | OLE Initiatives |  |  |
| A82010 |  | Prep For Safety - Scoping / Closing | 1d | 2020-09-09 | 2020-09-09 |  | 275d |  | start on or after 2020-09-09 |  |  | Amey |  |  | On Track | Week 23 | Weekend |  |  |  | Kyle Spence |  | Prep For Safety |  |  |
| A82160 |  | Topographical Survey - Quality Checks | 1d | 2020-09-09 | 2020-09-09 |  | 275d |  | start on or after 2020-09-09 |  |  | SEP |  |  | On Track | Week 23 | Midweek |  | 39m34ch to 42m02ch |  | Dom Keegans |  | Topographical |  |  |
| A82170 |  | Topographical Survey - Quality Checks | 1d | 2020-09-09 | 2020-09-09 |  | 275d |  | start on or after 2020-09-09 |  |  | SEP |  |  | On Track | Week 23 | Midweek |  | 39m34ch to 42m02ch |  | Dom Keegans |  | Topographical |  |  |
|  | 2 | **Ravensthorpe to Copley Hill East Jct (23:50 Wed to 05:45 Thur) 32m28ch-35m20ch & 38m25ch-185m25ch-2** |  | 2020-09-10 | 2020-09-10 |  |  |  |  |  |  |  |  |  |  |  |  |  |  |  |  |  |  |  |  |
| A60170 |  | Window Sample - PROVISIONAL | 1d | 2020-09-10 | 2020-09-10 | A72630 | 40d |  | start on or after 2020-09-10 |  | JM | Structural Soils | WS5435 | A | On Track | Week 23 | Midweek | W4 | 41m65 | REPLAN C-19 | Olly Phillips | Cottingley to Copley Hill | Window Sample |  |  |
| A60200 |  | Window Sample - PROVISIONAL | 1d | 2020-09-10 | 2020-09-10 | A72630 | 40d |  | start on or after 2020-09-10 |  | JM | Structural Soils | WS5436 | A | On Track | Week 23 | Midweek | W4 | 41m68 | REPLAN C-19 | Olly Phillips | Cottingley to Copley Hill | Window Sample |  |  |
| A61370 |  | 75mm Horizontal Core - RAM APPROVAL RECIEVED | 1d | 2020-09-10 | 2020-09-10 | A72630 | 234d | 1d | start on or after 2020-09-10 |  | EH | Bam Ritchies | MDL1/36/B1/SC/01 |  | On Track | Week 23 | Midweek | W4 | 36m25 |  |  | RW MDL1/36/B1 | Coring | PART 2 |  |
| A61380 |  | 75mm Horizontal Core- RAM APPROVAL RECIEVED | 1d | 2020-09-10 | 2020-09-10 | A72630 | 234d | 1d | start on or after 2020-09-10 |  | EH | Bam Ritchies | MDL1/36/B1/SC/02 |  | On Track | Week 23 | Midweek | W4 | 36m25 |  |  | RW MDL1/36/B1 | Coring | PART 2 |  |
| A61390 |  | 75mm Horizontal Core- RAM APPROVAL RECIEVED | 1d | 2020-09-10 | 2020-09-10 | A72630 | 234d | 1d | start on or after 2020-09-10 |  | EH | Bam Ritchies | MDL1/36/B1/SC/03 |  | On Track | Week 23 | Midweek | W4 | 36m25 |  |  | RW MDL1/36/B1 | Coring | PART 2 |  |
| A62120 |  | Structural Coring [SC] - PART 2 | 1d | 2020-09-10 | 2020-09-10 | A72630 | 234d | 38d | start on or after 2020-09-10 |  | ON HOLD | Structural Soils | MT-SC-A:59750 C1 to C7 |  | On Track | Week 23 | Midweek | W4 | 37m10 | Morley |  | Morley Tunnel (MDL1/36) | Coring | PART 2 |  |
| A66030 |  | Drainage Survey - Asset Location, Asset Data & Dye Trace | 1d | 2020-09-10 | 2020-09-10 | A72630 | 52d | 1d | start on or after 2020-09-10 |  |  | Lanes4Drains | W4-DR-237 |  | On Track | Week 23 | Midweek | W4 | 41m20ch - 41m40ch |  | Isaac Derry | Morley Tunnel (MDL1/36) | Drainage | Holbeck |  |
| A66120 |  | Drainage Survey - CCTV/Jetting | 1d | 2020-09-10 | 2020-09-10 | A72630 | 36d | 24d | start on or after 2020-09-10 |  |  | Lanes4Drains | W4-DR-043 |  | On Track | Week 23 | Midweek | W4 | 36m00ch - 36m20ch |  | Isaac Derry | Morley Tunnel (MDL1/36) | Drainage | Morley West Portal |  |
| A66200 |  | Drainage Survey - CCTV/Jetting | 1d | 2020-09-10 | 2020-09-10 | A72630 | 52d | 1d | start on or after 2020-09-10 |  |  | Lanes4Drains | W4-DR-237 |  | On Track | Week 23 | Midweek | W4 | 41m20ch - 41m40ch |  | Isaac Derry | Morley Tunnel (MDL1/36) | Drainage | Holbeck |  |
| A66280 |  | Drainage Survey - Asset Location, Asset Data & Dye Trace | 1d | 2020-09-10 | 2020-09-10 | A72630 | 36d | 24d | start on or after 2020-09-10 |  |  | Lanes4Drains | W4-DR-196 |  | On Track | Week 23 | Midweek | W4 | 36m20ch - 36m40ch |  | Isaac Derry | Morley Tunnel (MDL1/36) | Drainage | Morley West Portal |  |
| A70630 |  | Coring | 1d | 2020-09-10 | 2020-09-10 | A72630 | 234d | 0d | start on or after 2020-09-10 |  | EH | Bam Ritchies | MDL1/36P2/SC/01 |  | On Track | Week 23 | Midweek | W4 | 38m19ch - 38m30ch | Dewsbury | Jamie Hogg | OB MDL1/17 - Ashworth Road | Coring | MDL1/36P2 Valley Road OBR | W46 |
| A70640 |  | Coring | 1d | 2020-09-10 | 2020-09-10 | A72630 | 234d | 0d | start on or after 2020-09-10 |  | EH | Bam Ritchies | MDL1/36P2/SC/02 |  | On Track | Week 23 | Midweek | W4 | 38m19ch - 38m30ch | Dewsbury | Jamie Hogg | OB MDL1/17 - Ashworth Road | Coring | MDL1/36P2 Valley Road OBR | W46 |
| A75710 |  | Drainage Survey - CCTV/Jetting | 1d | 2020-09-10 | 2020-09-10 | A72630 | 36d | 24d | start on or after 2020-09-10 |  |  | Lanes4Drains | W4-DR-048 - 050 |  | On Track | Week 23 | Midweek | W4 | 36m00ch - 36m20ch |  | Isaac Derry | Morley Tunnel (MDL1/36) | Drainage | Morley West Portal |  |
| A81440 |  | OLE Trial Holes | 1d | 2020-09-10 | 2020-09-10 |  | 196d |  | start on or after 2020-09-10 | A03 5 Day Workweek (BH & Xmas as Work) |  | Keltbray / Lundys |  |  | On Track | Week 23 | Weekend |  | Full Mileage | Morley / Whiterose / Cottingley | Tom Wilson |  | OLE Initiatives |  |  |
| A81520 |  | OLE Trial Holes | 1d | 2020-09-10 | 2020-09-10 |  | 196d |  | start on or after 2020-09-10 | A03 5 Day Workweek (BH & Xmas as Work) |  | Keltbray / Lundys |  |  | On Track | Week 23 | Weekend |  | Full Mileage | Morley / Whiterose / Cottingley | Tom Wilson |  | OLE Initiatives |  |  |
| A81530 |  | OLE Trial Holes | 1d | 2020-09-10 | 2020-09-10 |  | 196d |  | start on or after 2020-09-10 | A03 5 Day Workweek (BH & Xmas as Work) |  | Keltbray / Lundys |  |  | On Track | Week 23 | Weekend |  | Full Mileage | Morley / Whiterose / Cottingley | Tom Wilson |  | OLE Initiatives |  |  |
| A81540 |  | OLE Trial Holes | 1d | 2020-09-10 | 2020-09-10 |  | 196d |  | start on or after 2020-09-10 | A03 5 Day Workweek (BH & Xmas as Work) |  | Keltbray / Lundys |  |  | On Track | Week 23 | Weekend |  | Full Mileage | Morley / Whiterose / Cottingley | Tom Wilson |  | OLE Initiatives |  |  |
| A82020 |  | Prep For Safety - Scoping / Closing | 1d | 2020-09-10 | 2020-09-10 |  | 274d |  | start on or after 2020-09-10 |  |  | Amey |  |  | On Track | Week 23 | Weekend |  |  |  | Kyle Spence |  | Prep For Safety |  |  |
| A82180 |  | Topographical Survey - Quality Checks | 1d | 2020-09-10 | 2020-09-10 |  | 274d |  | start on or after 2020-09-10 |  |  | SEP |  |  | On Track | Week 23 | Midweek |  | 39m34ch to 42m02ch |  | Dom Keegans |  | Topographical |  |  |
| A82190 |  | Topographical Survey - Quality Checks | 1d | 2020-09-10 | 2020-09-10 |  | 274d |  | start on or after 2020-09-10 |  |  | SEP |  |  | On Track | Week 23 | Midweek |  | 39m34ch to 42m02ch |  | Dom Keegans |  | Topographical |  |  |

Notes:
- A65970: General Comments: ? / 19/05 - Teething problems / with new supplier has meant progress has been slow. Outputs on site remain to be / seen, so assuming a pesimistic view on the dates for now. Pushing for dates to / be brought in

| ID | WBS | Activity | Duration | Start | Finish | Predecessors | Total float | Free float | Constraint | Machines Required | Company Responsible | GI Reference Number | Teams | On-Track Off-Track | Week Number | Weekend/Midweek | Project | Mileage | Access Point | Responsibility | Location | Discipline | 04.2 Progress Note | Location / ELR | Text 1 | Comment |
| --- | --- | --- | --- | --- | --- | --- | --- | --- | --- | --- | --- | --- | --- | --- | --- | --- | --- | --- | --- | --- | --- | --- | --- | --- | --- | --- |
|  | 3 | **Ravensthorpe to Copley Hill East Jct (23:50 Thur to 05:45 Fri) 32m28ch-35m20ch & 38m25ch-185m25ch-3** |  | 2020-09-11 | 2020-09-11 |  |  |  |  |  |  |  |  |  |  |  |  |  |  |  |  |  |  |  |  |  |
| A59750 |  | Window Sample - PROVISIONAL | 1d | 2020-09-11 | 2020-09-11 | A72630 | 39d |  | start on or after 2020-09-11 | JM | Structural Soils | WS5427 | A | On Track | Week 23 | Midweek | W4 | 40m58 | REPLAN C-19 | Olly Phillips | Cottingley to Copley Hill | Window Sample | SURVEY |  |  |  |
| A60210 |  | Window Sample - PROVISIONAL | 1d | 2020-09-11 | 2020-09-11 | A72630 | 39d |  | start on or after 2020-09-11 | JM | Structural Soils | WS5437 | A | On Track | Week 23 | Midweek | W4 | 41m78 | REPLAN C-19 | Olly Phillips | Cottingley to Copley Hill | Window Sample |  |  |  |  |
| A61400 |  | 75mm Horizontal Core- RAM APPROVAL RECIEVED | 1d | 2020-09-11 | 2020-09-11 | A72630 | 233d | 0d | start on or after 2020-09-11 | EH | Bam Ritchies | MDL1/36/B1/SC/04 |  | On Track | Week 23 | Midweek | W4 | 36m25 |  |  | RW MDL1/36/B1 | Coring |  | PART 2 |  |  |
| A61440 |  | 75mm Horizontal Core- RAM APPROVAL RECIEVED | 1d | 2020-09-11 | 2020-09-11 | A72630 | 233d | 0d | start on or after 2020-09-11 | EH | Bam Ritchies | MDL1/36/B1/SC/08 |  | On Track | Week 23 | Midweek | W4 | 36m25 |  |  | RW MDL1/36/B1 | Coring |  | PART 2 | W46 |  |
| A61450 |  | 75mm Horizontal Core- RAM APPROVAL RECIEVED | 1d | 2020-09-11 | 2020-09-11 | A72630 | 233d | 0d | start on or after 2020-09-11 | EH | Bam Ritchies | MDL1/36/B1/SC/09 |  | On Track | Week 23 | Midweek | W4 | 36m25 |  |  | RW MDL1/36/B1 | Coring |  | PART 2 | W46 |  |
| A62130 |  | Structural Coring [SC] - PART 2 | 1d | 2020-09-11 | 2020-09-11 | A72630 | 233d | 37d | start on or after 2020-09-11 | ON HOLD | Structural Soils | MT-SC-A:60050 C1 to C7 |  | On Track | Week 23 | Midweek | W4 | 37m25 | Morley |  | Morley Tunnel (MDL1/36) | Coring |  | PART 2 |  |  |
| A65990 |  | Drainage Survey - Asset Location, Asset Data & Dye Trace | 1d | 2020-09-11 | 2020-09-11 | A72630 | 35d | 23d | start on or after 2020-09-11 |  | Lanes4Drains | W4-DR-191 - 195 |  | On Track | Week 23 | Midweek | W4 | 36m20ch - 36m40ch |  | Isaac Derry | Morley Tunnel (MDL1/36) | Drainage |  | Morley West Portal |  |  |
| A66000 |  | Drainage Survey - Asset Location, Asset Data & Dye Trace | 1d | 2020-09-11 | 2020-09-11 | A72630 | 35d | 23d | start on or after 2020-09-11 |  | Lanes4Drains | W4-DR-060 & 197 |  | On Track | Week 23 | Midweek | W4 | 36m20ch - 36m40ch |  | Isaac Derry | Morley Tunnel (MDL1/36) | Drainage |  | Morley West Portal |  |  |
| A66040 |  | Drainage Survey - Asset Location, Asset Data & Dye Trace | 1d | 2020-09-11 | 2020-09-11 | A72630 | 51d | 0d | start on or after 2020-09-11 |  | Lanes4Drains | W4-DR-238 |  | On Track | Week 23 | Midweek | W4 | 42m00ch - 42m20ch |  | Isaac Derry | Morley Tunnel (MDL1/36) | Drainage |  | Copley Jn |  |  |
| A79100 |  | Drainage Survey - Asset Location, Asset Data & Dye Trace | 1d | 2020-09-11 | 2020-09-11 |  | 273d |  | start on or after 2020-09-11 | Y | Lanes4Drains | W4-DR-043 |  | On Track | Week 23 | Midweek | W4 | 36m00ch - 36m20ch |  | Isaac Derry | Morley Tunnel (MDL1/36) | Drainage |  | Morley West Portal |  |  |
| A82030 |  | Prep For Safety - Scoping / Closing | 1d | 2020-09-11 | 2020-09-11 |  | 273d |  | start on or after 2020-09-11 |  | Amey |  |  | On Track | Week 23 | Weekend |  |  |  | Kyle Spence |  | Prep For Safety |  |  |  |  |
| A82200 |  | Topographical Survey - Quality Checks | 1d | 2020-09-11 | 2020-09-11 |  | 273d |  | start on or after 2020-09-11 |  | SEP |  |  | On Track | Week 23 | Midweek |  | 39m34ch to 42m02ch |  | Dom Keegans |  | Topographical |  |  |  |  |
| A82210 |  | Topographical Survey - Quality Checks | 1d | 2020-09-11 | 2020-09-11 |  | 273d |  | start on or after 2020-09-11 |  | SEP |  |  | On Track | Week 23 | Midweek |  | 39m34ch to 42m02ch |  | Dom Keegans |  | Topographical |  |  |  |  |
|  | 3 | **Week 24-1** |  |  |  |  |  |  |  |  |  |  |  |  |  |  |  |  |  |  |  |  |  |  |  |  |
|  | 1 | **Weekend** |  |  |  |  |  |  |  |  |  |  |  |  |  |  |  |  |  |  |  |  |  |  |  |  |
|  | 51 | **Week 25-1** |  | 2020-09-19 | 2020-09-23 |  |  |  |  |  |  |  |  |  |  |  |  |  |  |  |  |  |  |  |  |  |
|  | 8 | **Weekend Works** |  | 2020-09-19 | 2020-09-23 |  |  |  |  |  |  |  |  |  |  |  |  |  |  |  |  |  |  |  |  |  |
|  | 5 | **Ravensthorpe to Copley Hill East (0040 Sat - 0510 Sat) 33m60ch - 41m60ch** |  | 2020-09-19 | 2020-09-23 |  |  |  |  |  |  |  |  |  |  |  |  |  |  |  |  |  |  |  |  |  |
| A59760 |  | Window Sample - PROVISIONAL | 1d | 2020-09-19 | 2020-09-19 | A72630 | 31d |  | start on or after 2020-09-19 | JM | Structural Soils | WS5428 | A | On Track | Week 25 | Weekend | W4 | 40m61 | REPLAN C-19 | Olly Phillips | Cottingley to Copley Hill | Window Sample | SURVEY |  |  |  |
| A60510 |  | Window Sample - PROVISIONAL | 1d | 2020-09-19 | 2020-09-19 | A72630 | 31d |  | start on or after 2020-09-19 | OFF | Structural Soils | WS5470 | A | On Track | Week 25 | Weekend | W4 | 38m0628yds to 39m0506yds | REPLAN C-19 | Olly Phillips | Morley | Window Sample |  | PART 2 | W46 | Olly Phillips |
| A60650 |  | 75mm Inclined Core - HERITAGE APPROVAL RECIEVED | 1d | 2020-09-19 | 2020-09-19 | A72630 | 225d | 1d | start on or after 2020-09-19 | EH | Bam Ritchies | MDL1/16/SC/09 |  | On Track | Week 25 | Weekend | W4 | HERITAGE APPROVAL RECIEVED |  |  | UB MDL1/16 - George Street | Coring |  |  | W44 |  |
| A60660 |  | 75mm Horizontal Core - HERITAGE APPROVAL RECIEVED | 1d | 2020-09-19 | 2020-09-19 | A72630 | 225d | 1d | start on or after 2020-09-19 | EH | Bam Ritchies | MDL1/16/SC/10 |  | On Track | Week 25 | Weekend | W4 | HERITAGE APPROVAL RECIEVED |  |  | UB MDL1/16 - George Street | Coring |  |  |  |  |
| A60670 |  | 75mm Horizontal Core - HERITAGE APPROVAL RECIEVED | 1d | 2020-09-19 | 2020-09-19 | A72630 | 225d | 1d | start on or after 2020-09-19 | EH | Bam Ritchies | MDL1/16/SC/11 |  | On Track | Week 25 | Weekend | W4 | HERITAGE APPROVAL RECIEVED |  |  | UB MDL1/16 - George Street | Coring |  |  |  |  |
| A60680 |  | 75mm Inclined Core - HERITAGE APPROVAL RECIEVED | 1d | 2020-09-19 | 2020-09-19 | A72630 | 225d | 1d | start on or after 2020-09-19 | EH | Bam Ritchies | MDL1/16/SC/12 |  | On Track | Week 25 | Weekend | W4 | HERITAGE APPROVAL RECIEVED |  |  | UB MDL1/16 - George Street | Coring |  |  | W46 |  |
| A62160 |  | Structural Coring [SC] - PART 2 | 1d | 2020-09-19 | 2020-09-19 | A72630 | 225d | 29d | start on or after 2020-09-19 | ON HOLD | Structural Soils | MT-SC-A:60900 C1 to C7 |  | On Track | Week 25 | Weekend | W4 | 37m67 | Morley |  | Morley Tunnel (MDL1/36) | Coring |  | PART 2 |  |  |
| A66080 |  | Drainage Survey - CCTV/Jetting | 1d | 2020-09-19 | 2020-09-19 | A72630 | 27d | 15d | start on or after 2020-09-19 |  | Lanes4Drains | W4-DR-021 - 022 |  | On Track | Week 25 | Weekend | W4 | 34m30ch - 34m40ch |  | Isaac Derry | Morley Tunnel (MDL1/36) | Drainage |  | Dewsbury / Batley |  |  |
| A79130 |  | Drainage Survey - Asset Location, Asset Data & Dye Trace | 1d | 2020-09-19 | 2020-09-19 |  | 265d |  | start on or after 2020-09-19 | Y | Lanes4Drains | W4-DR-042 |  | On Track | Week 25 | Weekend | W4 | 35m60ch - 36m00ch |  | Isaac Derry | Morley Tunnel (MDL1/36) | Drainage |  | Morley West Portal |  |  |
| A79140 |  | Drainage Survey - Asset Location, Asset Data & Dye Trace | 1d | 2020-09-19 | 2020-09-19 |  | 265d |  | start on or after 2020-09-19 | Y | Lanes4Drains | W4-DR-048 - 050 |  | On Track | Week 25 | Weekend | W4 | 36m00ch - 36m20ch |  | Isaac Derry | Morley Tunnel (MDL1/36) | Drainage |  | Morley West Portal |  |  |
| A81760 |  | New Activity | 5d | 2020-09-19 | 2020-09-23 |  | 261d |  | start on or after 2020-09-19 |  |  |  |  |  | Week 25 |  |  |  |  |  |  |  |  |  |  |  |

Notes:
- A60650: General Comments: 01/05 - No possession Saturday Night week 16. Heritage approval still / required for structure, moved to back of coring programme.
- A60660: General Comments: 01/05 - No possession Saturday Night week 16. Heritage approval still / required for structure, moved to back of coring programme.
- A60670: General Comments: 01/05 - No possession Saturday Night week 16. Heritage approval still / required for structure, moved to back of coring programme.
- A60680: General Comments: 01/05 - No possession Saturday Night week 16. Heritage approval still / required for structure, moved to back of coring programme.
- A66080: General Comments: 19/05 - Teething problems with new supplier has meant progress has been / slow. Outputs on site remain to be seen, so assuming a pesimistic view on the / dates for now. Pushing for dates to be brought in

| ID | WBS | Activity | Duration | Start | Finish | Predecessors | Total float | Free float | Constraint | Text 1 | Machines Required | Company Responsible | GI Reference Number | Teams | On-Track Off-Track | Week Number | Weekend/Midweek | Project | Mileage | Access Point | Responsibility | Location | Discipline | Location / ELR | 04.2 Progress Note |
| --- | --- | --- | --- | --- | --- | --- | --- | --- | --- | --- | --- | --- | --- | --- | --- | --- | --- | --- | --- | --- | --- | --- | --- | --- | --- |
|  | 1 | **Mirfield East to Copley Hill (2350 Sat - 0820 Sun) 32m16ch - 38m15ch** |  |  |  |  |  |  |  |  |  |  |  |  |  |  |  |  |  |  |  |  |  |  |  |
|  | 1 | **Midweek Works** |  |  |  |  |  |  |  |  |  |  |  |  |  |  |  |  |  |  |  |  |  |  |  |
|  | 7 | **Mon - Thorn Hill (LNW Junction) to Copley Hill East Junction** |  |  |  |  |  |  |  |  |  |  |  |  |  |  |  |  |  |  |  |  |  |  |  |
|  | 1 | **Tues - Thorn Hill (LNW Junction) to Copley Hill East Junction** |  |  |  |  |  |  |  |  |  |  |  |  |  |  |  |  |  |  |  |  |  |  |  |
|  | 2 | **Weds - Thorn Hill (LNW Junction) to Copley Hill East Junction** |  |  |  |  |  |  |  |  |  |  |  |  |  |  |  |  |  |  |  |  |  |  |  |
|  | 3 | **Thurs - Thorn Hill (LNW Junction) to Copley Hill East Junction** |  |  |  |  |  |  |  |  |  |  |  |  |  |  |  |  |  |  |  |  |  |  |  |
|  | 5 | **Week 27-1** |  | 2020-10-03 | 2020-10-03 |  |  |  |  |  |  |  |  |  |  |  |  |  |  |  |  |  |  |  |  |
|  | 1 | **Weekend** |  | 2020-10-03 | 2020-10-03 |  |  |  |  |  |  |  |  |  |  |  |  |  |  |  |  |  |  |  |  |
|  | 1 | **Ravensthorpe to Copley Hill East (0040 Sat - 0510 Sat) 33m60ch - 41m60ch** |  | 2020-10-03 | 2020-10-03 |  |  |  |  |  |  |  |  |  |  |  |  |  |  |  |  |  |  |  |  |
| A60520 |  | Window Sample - PROVISIONAL | 1d | 2020-10-03 | 2020-10-03 | A72630 | 17d |  | start on or after 2020-10-03 | W46 | JM | Structural Soils | WS5473 | A | On Track | Week 27 | Weekend | W4 | 38m76 | REPLAN C-19 | Olly Phillips | Morley | Window Sample |  |  |
| A60530 |  | Window Sample - PROVISIONAL | 1d | 2020-10-03 | 2020-10-03 | A72630 | 17d |  | start on or after 2020-10-03 |  | JM | Structural Soils | WS5474 | A | On Track | Week 27 | Weekend | W4 | 39m30 | REPLAN C-19 | Olly Phillips | Morley | Window Sample | PART 2 |  |
| A62170 |  | Structural Coring [SC] - PART 2 | 1d | 2020-10-03 | 2020-10-03 | A72630 | 211d | 15d | start on or after 2020-10-03 |  | ON HOLD | Structural Soils | MT-SC-A:61000 C1 to C7 |  | On Track | Week 27 | Weekend | W4 | 37m72 | Morley |  | Morley Tunnel (MDL1/36) | Coring | MOVE - NO SAT NIGHT WEEK 11 |  |
| A65930 |  | Drainage Survey - Asset Location, Asset Data & Dye Trace | 1d | 2020-10-03 | 2020-10-03 | A72630 | 13d | 1d | start on or after 2020-10-03 |  |  | Lanes4Drains | W4-DR-024 |  | On Track | Week 27 | Weekend | W4 | 34m75ch to 35m57ch | Batley | Isaac Derry | Morley Tunnel (MDL1/36) | Drainage | Batley |  |
| A66070 |  | Drainage Survey - CCTV | 1d | 2020-10-03 | 2020-10-03 | A72630 | 13d | 1d | start on or after 2020-10-03 |  | 29.06 | Lanes4Drains | W4-DR-009 |  | On Track | Week 27 | Weekend | W4 | 33m50ch - 34m75ch | Batley | Isaac Derry | Morley Tunnel (MDL1/36) | Drainage | Dewsbury |  |
| A66250 |  | Drainage Survey - Asset Location, Asset Data & Dye Trace | 1d | 2020-10-03 | 2020-10-03 | A72630 | 13d | 1d | start on or after 2020-10-03 |  |  | Lanes4Drains | W4-DR-025 - 038 |  | On Track | Week 27 | Weekend | W4 | 34m75ch to 35m57ch | Batley | Isaac Derry | Morley Tunnel (MDL1/36) | Drainage | Batley |  |
| A75680 |  | Drainage Survey - CCTV | 1d | 2020-10-03 | 2020-10-03 | A72630 | 13d | 1d | start on or after 2020-10-03 |  | 29.06 | Lanes4Drains | W4-DR-010 - 020 |  | On Track | Week 27 | Weekend | W4 | 33m50ch - 34m75ch | Batley | Isaac Derry | Morley Tunnel (MDL1/36) | Drainage | Dewsbury |  |
| A81730 |  | Borehole Enabling Works - RRV | 1d | 2020-10-03 | 2020-10-03 |  | 251d |  | start on or after 2020-10-03 | W46 | RRV | Bam Nuttall/SSL |  |  | On Track | Week 27 | Weekend | W4 |  | Morley | Justin Sena | UB MDL1/16 - George Street | Enabling Works |  |  |
|  | 7 | **Week 29-1** |  | 2020-10-17 | 2020-10-20 |  |  |  |  |  |  |  |  |  |  |  |  |  |  |  |  |  |  |  |  |
|  | 1 | **Weekend** |  | 2020-10-17 | 2020-10-17 |  |  |  |  |  |  |  |  |  |  |  |  |  |  |  |  |  |  |  |  |
|  | 1 | **Ravensthorpe to Copley Hill East (0040 Sat - 0510 Sat) 33m60ch - 41m60ch** |  | 2020-10-17 | 2020-10-17 |  |  |  |  |  |  |  |  |  |  |  |  |  |  |  |  |  |  |  |  |
| A60540 |  | Window Sample - PROVISIONAL | 1d | 2020-10-17 | 2020-10-17 | A72630 | 3d |  | start on or after 2020-10-17 | W46 | JM | Structural Soils | WS5478 | A | On Track | Week 29 | Weekend | W4 | 39m50 | REPLAN C-19 | Olly Phillips | Cottingley | Window Sample |  | SURVEY |
| A60560 |  | Window Sample - PROVISIONAL | 1d | 2020-10-17 | 2020-10-17 | A72630 | 3d |  | start on or after 2020-10-17 | W46 | JM | Structural Soils | WS5481 | A | On Track | Week 29 | Weekend | W4 | 39m66 | REPLAN C-19 | Olly Phillips | Cottingley | Window Sample | PART 2 | SURVEY |
| A62180 |  | Structural Coring [SC] - PART 2 | 1d | 2020-10-17 | 2020-10-17 | A72630 | 197d | 1d | start on or after 2020-10-17 |  | ON HOLD | Structural Soils | MT-SC-A:61200 C1 to C7 |  | On Track | Week 29 | Weekend | W4 | 38m2 | Morley |  | Morley Tunnel (MDL1/36) | Coring | PART 2 |  |
| A81720 |  | Borehole Enabling Works | 1d | 2020-10-17 | 2020-10-17 |  | 237d |  | start on or after 2020-10-17 | W46 | Crane - Dewsbury Car Park | Bam Nuttall/SSL | BH5402 |  | On Track | Week 29 | Weekend | W4 |  | Dewsbury | Justin Sena | UB MDL1/16 - George Street | Enabling Works |  |  |
| A81750 |  | Borehole Demobilisation Works - RRV | 1d | 2020-10-17 | 2020-10-17 |  | 237d |  | start on or after 2020-10-17 | W46 | RRV | Bam Nuttall/SSL |  |  | On Track | Week 29 | Weekend | W4 |  | Morley | Justin Sena | UB MDL1/16 - George Street | Enabling Works |  |  |

Notes:
- A81730: General Comments: 01/05 - No possession Saturday Night week 16. Heritage approval still / required for structure, moved to back of coring programme.
- A81720: General Comments: 01/05 - No possession Saturday Night week 16. Heritage approval still / required for structure, moved to back of coring programme.
- A81750: General Comments: 01/05 - No possession Saturday Night week 16. Heritage approval still / required for structure, moved to back of coring programme.

| ID | WBS | Activity | Duration | Start | Finish | Predecessors | Total float | Free float | Constraint | Company Responsible | Location / ELR | GI Reference Number | On-Track Off-Track | Week Number | Weekend/Midweek | Project | Mileage | Access Point | Responsibility | Location | Discipline | Machines Required | Text 1 | Teams | Comments | Comment |
| --- | --- | --- | --- | --- | --- | --- | --- | --- | --- | --- | --- | --- | --- | --- | --- | --- | --- | --- | --- | --- | --- | --- | --- | --- | --- | --- |
|  | 2 | **Midweek** |  | 2020-10-20 | 2020-10-20 |  |  |  |  |  |  |  |  |  |  |  |  |  |  |  |  |  |  |  |  |  |
|  | 4 | **Mon - Thorn Hill (LNW Junction) to Copley Hill East Junction** |  | 2020-10-20 | 2020-10-20 |  |  |  |  |  |  |  |  |  |  |  |  |  |  |  |  |  |  |  |  |  |
| A59810 |  | Window Sample - PROVISIONAL | 1d | 2020-10-20 | 2020-10-20 | A72630 | 0d |  | start on or after 2020-10-20 | Structural Soils | MOVE POST 15 | WS5431 | On Track | Week 29 | Midweek | W4 | 40m68 | REPLAN COVID-19 | Olly Phillips | Cottingley to Copley Hill | Window Sample |  |  |  |  |  |
| A68010 |  | Window Sample - PROVISIONAL | 1d | 2020-10-20 | 2020-10-20 | A72630 | 5d | 0d | start on or after 2020-10-20 | Structural Soils |  | WS5417 | On Track | Week 29 | Midweek | W4 | 34m70ch | REPLAN C-19 | Olly Phillips | OB MDL1/47 - Whitehall Road Dragon Bridge | Window Sample | JM |  |  |  |  |
|  | 3 | **Tues - Thorn Hill (LNW Junction) to Copley Hill East Junction** |  |  |  |  |  |  |  |  |  |  |  |  |  |  |  |  |  |  |  |  |  |  |  |  |
|  | 2 | **Weds - Thorn Hill (LNW Junction) to Copley Hill East Junction** |  |  |  |  |  |  |  |  |  |  |  |  |  |  |  |  |  |  |  |  |  |  |  |  |
|  | 1 | **Thurs - Thorn Hill (LNW Junction) to Copley Hill East Junction** |  |  |  |  |  |  |  |  |  |  |  |  |  |  |  |  |  |  |  |  |  |  |  |  |
|  | 17 | **Week 31** |  | 2020-10-31 | 2020-10-31 |  |  |  |  |  |  |  |  |  |  |  |  |  |  |  |  |  |  |  |  |  |
|  | 1 | **Weekend** |  | 2020-10-31 | 2020-10-31 |  |  |  |  |  |  |  |  |  |  |  |  |  |  |  |  |  |  |  |  |  |
|  | 1 | **Ravensthorpe to Copley Hill East (0040 Sat - 0510 Sat) 33m60ch - 41m60ch** |  | 2020-10-31 | 2020-10-31 |  |  |  |  |  |  |  |  |  |  |  |  |  |  |  |  |  |  |  |  |  |
| A81740 |  | Borehole Demobilisation Works | 1d | 2020-10-31 | 2020-10-31 |  | 223d |  | start on or after 2020-10-31 | Bam Nuttall/SSL |  | BH5402 | On Track | Week 31 | Weekend | W4 |  | Dewsbury | Justin Sena | UB MDL1/16 - George Street | Enabling Works | Crane - Dewsbury Car Park | W46 |  |  |  |
|  | 34 | **Unable To Proceed Due To Working Methodologies - COVID-19** |  | 2020-08-21 | 2020-08-21 |  |  |  |  |  |  |  |  |  |  |  |  |  |  |  |  |  |  |  |  |  |
| A60950 |  | 75mm Horizontal Core | 1d | 2020-08-21 | 2020-08-21 | A72630 | 254d | 2d | start on or after 2020-08-21 | Structural Soils | Dragon Bridge MDL1/47 | MDL1/47/SC/01 | On Track | Week 05 | Monday Night | W4 | 41m14 | REPLAN C-19 | Olly Phillips | OB MDL1/47 - Whitehall Road Dragon Bridge | Coring | EH |  | A |  |  |
| A60980 |  | 75mm Horizontal Core | 1d | 2020-08-21 | 2020-08-21 | A72630 | 254d | 2d | start on or after 2020-08-21 | Structural Soils |  | MDL1/47/SC/04 | On Track | Week 05 | Tuesday Night | W4 | 41m14 | REPLAN C-19 | Olly Phillips | OB MDL1/47 - Whitehall Road Dragon Bridge | Coring | EH |  | A |  |  |
| A61010 |  | 75mm Horizontal Core | 1d | 2020-08-21 | 2020-08-21 | A72630 | 254d | 2d | start on or after 2020-08-21 | Structural Soils | Dragon Bridge MDL1/47 | MDL1/47/SC/07 | On Track | Week 05 | Wednesday Night | W4 | 41m14 | REPLAN C-19 | Olly Phillips | OB MDL1/47 - Whitehall Road Dragon Bridge | Coring | EH |  | A |  |  |
| A61040 |  | 75mm Horizontal Core | 1d | 2020-08-21 | 2020-08-21 | A72630 | 254d | 2d | start on or after 2020-08-21 | Structural Soils |  | MDL1/47/SC/10 | On Track | Week 05 | Thursday Night | W4 | 41m14 | REPLAN C-19 | Olly Phillips | OB MDL1/47 - Whitehall Road Dragon Bridge | Coring | EH |  | A |  |  |
| A61920 |  | Horizontal Core - HERITAGE APPROVAL RECIEVED | 1d | 2020-08-21 | 2020-08-21 | A72630 | 103d | 0d | start on or after 2020-08-21 | Structural Soils | Dewsbury Station | HC1 | Off Track | Week 02 | Wednesday Day | W4 | HERITAGE APPROVAL RECIEVED | REPLAN C-19 | Olly Phillips | Dewsbury Station | Coring | EH |  | A | Olly |  |
| A61940 |  | Horizontal Core - HERITAGE APPROVAL RECIEVED | 1d | 2020-08-21 | 2020-08-21 | A72630 | 103d | 0d | start on or after 2020-08-21 | Structural Soils | Dewsbury Station | HC3 | Off Track | Week 02 | Thursday Day | W4 | HERITAGE APPROVAL RECIEVED | REPLAN C-19 | Olly Phillips | Dewsbury Station | Coring | EH |  | A | Olly |  |
| A62010 |  | Inclined Core - HERITAGE APPROVAL RECIEVED | 1d | 2020-08-21 | 2020-08-21 | A72630 | 103d | 0d | start on or after 2020-08-21 | Structural Soils | Dewsbury Station | IC6 | Off Track | Week 02 | Wednesday Day | W4 | HERITAGE APPROVAL RECIEVED | REPLAN C-19 | Olly Phillips | Dewsbury Station | Coring | EH |  | A | Olly |  |
| A62020 |  | Inclined Core - HERITAGE APPROVAL RECIEVED | 1d | 2020-08-21 | 2020-08-21 | A72630 | 103d | 0d | start on or after 2020-08-21 | Structural Soils | Dewsbury Station | IC7 | Off Track | Week 02 | Wednesday Day | W4 | HERITAGE APPROVAL RECIEVED | REPLAN C-19 | Olly Phillips | Dewsbury Station | Coring | EH |  | A | Olly |  |
| A62030 |  | Trial Hole | 1d | 2020-08-21 | 2020-08-21 | A72630 | 117d | 0d | start on or after 2020-08-21 | Structural Soils | Dewsbury Station | TH1 | Off Track | Week 02 | Tuesday Day | W4 | 33m60 | REPLAN C-19 | Olly Phillips | Dewsbury Station | Trial Pit | EH |  | A | Olly |  |
| A62040 |  | Trial Hole | 1d | 2020-08-21 | 2020-08-21 | A72630 | 117d | 0d | start on or after 2020-08-21 | Structural Soils | Dewsbury Station | TH2 | Off Track | Week 02 | Tuesday Day | W4 | 33m60 | REPLAN C-19 | Olly Phillips | Dewsbury Station | Trial Pit | EH |  | A | Olly |  |
| A62050 |  | Trial Hole | 1d | 2020-08-21 | 2020-08-21 | A72630 | 117d | 0d | start on or after 2020-08-21 | Structural Soils | Dewsbury Station | TH3 | Off Track | Week 02 | Tuesday Day | W4 | 33m60 | REPLAN C-19 | Olly Phillips | Dewsbury Station | Trial Pit | EH |  | A | Olly |  |
| A62060 |  | Trial Hole | 1d | 2020-08-21 | 2020-08-21 | A72630 | 117d | 0d | start on or after 2020-08-21 | Structural Soils | Dewsbury Station | TH4 | Off Track | Week 02 | Tuesday Day | W4 | 33m60 | REPLAN C-19 | Olly Phillips | Dewsbury Station | Trial Pit | EH |  | A | Olly |  |
| A70820 |  | Track Dilapidation Survey | 1d | 2020-08-21 | 2020-08-21 | A72630 | 294d |  | start on or after 2020-08-21 | Design |  |  | On Track | Week 01 | Friday Night | W4 | 35m1254yds - 38m628yds | REPLAN C-19 | Samir Sobeih | Morley Tunnel | Walkout | OFF | W46 | A |  | Samir Sobeih |
| A72820 |  | Trial Hole | 1d | 2020-08-21 | 2020-08-21 | A72630 | 294d |  | start on or after 2020-08-21 | Structural Soils | Dewsbury Station | TH5 - ADD LINKS | Off Track | Week 02 | Tuesday Day | W4 | 33m60 | REPLAN C-19 | Olly Phillips | Dewsbury Station | Trial Pit | EH |  | A | Olly |  |
| A72830 |  | Trial Hole | 1d | 2020-08-21 | 2020-08-21 | A72630 | 294d |  | start on or after 2020-08-21 | Structural Soils | Dewsbury Station | TH6 - ADD LINKS | Off Track | Week 02 | Wednesday Day | W4 | 33m60 | REPLAN C-19 | Olly Phillips | Dewsbury Station | Trial Pit | EH |  | A | Olly |  |

Notes:
- A59810: General Comments: 09/06 - Working methodology not yet agreed, moved back 2 / weeks
- A81740: General Comments: 01/05 - No possession Saturday Night week 16. Heritage approval still / required for structure, moved to back of coring programme.

| ID | WBS | Activity | Type | Duration | Start | Finish | Predecessors | Complete | Remaining | Planned start | Planned finish | Total float | Free float | Constraint | Calendar | Week Number | Discipline |
| --- | --- | --- | --- | --- | --- | --- | --- | --- | --- | --- | --- | --- | --- | --- | --- | --- | --- |
|  | 1 | **On Track** |  |  |  |  |  |  |  |  |  |  |  |  |  |  |  |
|  | 2 | **Off Track** |  |  |  |  |  |  |  |  |  |  |  |  |  |  |  |
|  | 10 | **Survey Factual Reports - SECTION A - 33m 42ch to 34m 54ch** |  |  | 2019-11-21 | 2020-12-11 |  |  |  |  |  |  |  |  |  |  |  |
|  | 6 | **Geotechnical** |  |  | 2019-11-21 | 2020-12-11 |  |  |  |  |  |  |  |  |  |  |  |
|  | 1 | **ABS** |  |  | 2019-11-21 | 2020-07-31 |  |  |  |  |  |  |  |  |  |  |  |
| A62660 |  | Compile Draft Report |  | 10d | 2019-11-21 A | 2020-05-15 A | A57670, A57680, A56170, A57660, A57690, A58390, A58400, A58410, A58420, A58430, A58440, A57970, A57980, A57990, A58000, A58010, A58020, A58450, A58460, A58470, A58480, A58490, A57960, A58060, A58070, A58570, A58600, A58610, A58620, A58640, A58700, A58710, A59040, A59050, A58930, A59110, A58850, A59160, A58770, A58790, A58820, A58880, A59210, A59250, A59270, A59230 | 100% |  | 2020-03-02 | 2020-03-13 |  |  |  | A02 5 Day Workweek (BH as Work & Xmas as Non-Work) | Reports | ABS |
| A62670 |  | Designers Review Draft Report |  | 10d | 2020-05-18 A | 2020-07-17 | A62660 |  | 10d | 2020-05-18 | 2020-05-29 | 87d | 0d | start on or after 2020-05-18 | A02 5 Day Workweek (BH as Work & Xmas as Non-Work) | Reports | ABS |
| A62680 |  | Compile Final Report |  | 10d | 2020-07-20 | 2020-07-31 | A62670 |  |  |  |  | 87d | 0d |  | A02 5 Day Workweek (BH as Work & Xmas as Non-Work) | Reports | ABS |
| A62690 |  | Final Report Complete & Submitted To Design | milestone | 0d | 2020-07-31 | 2020-07-31 | A62680 |  |  |  |  | 87d | 0d |  | A02 5 Day Workweek (BH as Work & Xmas as Non-Work) | Reports | ABS |
|  | 2 | **Boreholes** |  |  | 2020-11-02 | 2020-12-11 |  |  |  |  |  |  |  |  |  |  |  |
| A68100 |  | Compile Draft Report |  | 10d | 2020-11-02 | 2020-11-13 | A60270, A60280 |  |  |  |  | -5d | 0d |  | A02 5 Day Workweek (BH as Work & Xmas as Non-Work) | Reports | Borehole |
| A68120 |  | Designers Review Draft Report |  | 10d | 2020-11-16 | 2020-11-27 | A68100 |  |  |  |  | -5d | 0d |  | A02 5 Day Workweek (BH as Work & Xmas as Non-Work) | Reports | Borehole |
| A68110 |  | Compile Final Report |  | 10d | 2020-11-30 | 2020-12-11 | A68120 |  |  |  |  | -5d | 0d |  | A02 5 Day Workweek (BH as Work & Xmas as Non-Work) | Reports | Borehole |
| A68130 |  | Final Report Complete & Submitted To Design | milestone | 0d | 2020-12-11 | 2020-12-11 | A68110 |  |  |  |  | -5d | 0d |  | A02 5 Day Workweek (BH as Work & Xmas as Non-Work) | Reports | Borehole |
|  | 3 | **Trial Pits** |  |  | 2020-08-18 | 2020-09-28 |  |  |  |  |  |  |  |  |  |  |  |
| A62740 |  | Compile Draft Report |  | 10d | 2020-08-18 | 2020-08-31 | A60230, A60240, A60250, A60300, A57950, A60260, A60290, A60340, A60350, A60330 |  |  |  |  | 14d | 0d |  | A02 5 Day Workweek (BH as Work & Xmas as Non-Work) | Reports | Trial Pit |
| A62750 |  | Designers Review Draft Report |  | 10d | 2020-09-01 | 2020-09-14 | A62740 |  |  |  |  | 14d | 0d |  | A02 5 Day Workweek (BH as Work & Xmas as Non-Work) | Reports | Trial Pit |
| A62760 |  | Compile Final Report |  | 10d | 2020-09-15 | 2020-09-28 | A62750 |  |  |  |  | 14d | 0d |  | A02 5 Day Workweek (BH as Work & Xmas as Non-Work) | Reports | Trial Pit |
| A62770 |  | Final Report Complete & Submitted To Design | milestone | 0d | 2020-09-28 | 2020-09-28 | A62760 |  |  |  |  | 14d | 0d |  | A02 5 Day Workweek (BH as Work & Xmas as Non-Work) | Reports | Trial Pit |
|  | 4 | **Window Samples** |  |  | 2020-08-10 | 2020-09-18 |  |  |  |  |  |  |  |  |  |  |  |
| A62780 |  | Compile Draft Report |  | 10d | 2020-08-10 | 2020-08-21 | A56060, A56070, A58030, A60360, A58080, A57920, A60220, A60320, A58200, A58210, A58270, A58340, A58730, A58810, A58830 |  |  |  |  | 52d | 0d |  | A02 5 Day Workweek (BH as Work & Xmas as Non-Work) | Reports | Window Sample |
| A62790 |  | Designers Review Draft Report |  | 10d | 2020-08-24 | 2020-09-04 | A62780 |  |  |  |  | 52d | 0d |  | A02 5 Day Workweek (BH as Work & Xmas as Non-Work) | Reports | Window Sample |
| A62800 |  | Compile Final Report |  | 10d | 2020-09-07 | 2020-09-18 | A62790 |  |  |  |  | 52d | 0d |  | A02 5 Day Workweek (BH as Work & Xmas as Non-Work) | Reports | Window Sample |
| A62810 |  | Final Report Complete & Submitted To Design | milestone | 0d | 2020-09-18 | 2020-09-18 | A62800 |  |  |  |  | 52d | 0d |  | A02 5 Day Workweek (BH as Work & Xmas as Non-Work) | Reports | Window Sample |

| ID | WBS | Activity | Type | Duration | Start | Finish | Predecessors | Total float | Free float | Calendar | Company Responsible | Week Number | Discipline |
| --- | --- | --- | --- | --- | --- | --- | --- | --- | --- | --- | --- | --- | --- |
|  | 1 | **Structures** |  |  | 2020-01-13 | 2020-10-30 |  |  |  |  |  |  |  |
|  | 2 | **MDL1/16 - GEORGE STREET UB** |  |  | 2020-07-27 | 2020-10-30 |  |  |  |  |  |  |  |
|  | 1 | **Coring** |  |  | 2020-09-21 | 2020-10-30 |  |  |  |  |  |  |  |
| A62940 |  | Compile Draft Report |  | 10d | 2020-09-21 | 2020-10-02 | A60590, A60620, A60650, A60680, A60570, A60580, A60600, A60610, A60630, A60640, A60660, A60670 | 160d | 0d | A02 5 Day Workweek (BH as Work & Xmas as Non-Work) | Bam Ritchies | Reports | Coring |
| A62950 |  | Designers Review Draft Report |  | 10d | 2020-10-05 | 2020-10-16 | A62940 | 160d | 0d | A02 5 Day Workweek (BH as Work & Xmas as Non-Work) | Design | Reports | Coring |
| A62960 |  | Compile Final Report |  | 10d | 2020-10-19 | 2020-10-30 | A62950 | 160d | 0d | A02 5 Day Workweek (BH as Work & Xmas as Non-Work) | Bam Ritchies | Reports | Coring |
| A62970 |  | Final Report Complete & Submitted To Design | milestone | 0d | 2020-10-30 | 2020-10-30 | A62960 | 160d | 0d | A02 5 Day Workweek (BH as Work & Xmas as Non-Work) | Bam Ritchies | Reports | Coring |
|  | 2 | **Trial Holes** |  |  | 2020-07-27 | 2020-09-04 |  |  |  |  |  |  |  |
| A62980 |  | Compile Draft Report |  | 10d | 2020-07-27 | 2020-08-07 | A61070, A61080, A61090, A61100 | 200d | 0d | A02 5 Day Workweek (BH as Work & Xmas as Non-Work) | Bam Ritchies | Reports | Trial Pit |
| A62990 |  | Designers Review Draft Report |  | 10d | 2020-08-10 | 2020-08-21 | A62980 | 200d | 0d | A02 5 Day Workweek (BH as Work & Xmas as Non-Work) | Design | Reports | Trial Pit |
| A63000 |  | Compile Final Report |  | 10d | 2020-08-24 | 2020-09-04 | A62990 | 200d | 0d | A02 5 Day Workweek (BH as Work & Xmas as Non-Work) | Bam Ritchies | Reports | Trial Pit |
| A63010 |  | Final Report Complete & Submitted To Design | milestone | 0d | 2020-09-04 | 2020-09-04 | A63000 | 200d | 0d | A02 5 Day Workweek (BH as Work & Xmas as Non-Work) | Bam Ritchies | Reports | Trial Pit |
|  | 3 | **Paint Samples** |  |  |  |  |  |  |  |  |  |  |  |
|  | 7 | **MDL1/17 - ASHWORTH RD OB** |  |  | 2020-08-13 | 2020-09-23 |  |  |  |  |  |  |  |
|  | 1 | **Coring** |  |  |  |  |  |  |  |  |  |  |  |
|  | 2 | **Trial Holes** |  |  |  |  |  |  |  |  |  |  |  |
|  | 3 | **Paint Samples** |  |  |  |  |  |  |  |  |  |  |  |
|  | 4 | **Off-Track Drainage Inspection** |  |  | 2020-08-13 | 2020-09-23 |  |  |  |  |  |  |  |
| A69380 |  | Compile Draft Report |  | 10d | 2020-08-13 | 2020-08-26 | A61660, A81300 | 187d | 0d | A02 5 Day Workweek (BH as Work & Xmas as Non-Work) | Structural Soils | Reports | Paint Sample |
| A69390 |  | Designers Review Draft Report |  | 10d | 2020-08-27 | 2020-09-09 | A69380 | 187d | 0d | A02 5 Day Workweek (BH as Work & Xmas as Non-Work) | Design | Reports | Paint Sample |
| A69400 |  | Compile Final Report |  | 10d | 2020-09-10 | 2020-09-23 | A69390 | 187d | 0d | A02 5 Day Workweek (BH as Work & Xmas as Non-Work) | Structural Soils | Reports | Paint Sample |
| A69410 |  | Final Report Complete & Submitted To Design | milestone | 0d | 2020-09-23 | 2020-09-23 | A69400 | 187d |  | A02 5 Day Workweek (BH as Work & Xmas as Non-Work) | Structural Soils | Reports | Paint Sample |
|  | 3 | **MDL1/19 - DEWSBURY VIADUCT** |  |  | 2020-08-10 | 2020-09-18 |  |  |  |  |  |  |  |
|  | 1 | **Coring** |  |  | 2020-08-10 | 2020-09-18 |  |  |  |  |  |  |  |
| A68800 |  | Compile Draft Report |  | 10d | 2020-08-10 | 2020-08-21 | A66850, A66860, A66870, A66880, A66890, A66900, A66910, A66920, A66930, A66940, A66950, A66960, A66970, A66980, A66990, A67000, A67010, A67020, A67030, A67040 | 190d | 0d | A02 5 Day Workweek (BH as Work & Xmas as Non-Work) | Bam Ritchies | Reports | Coring |
| A68810 |  | Designers Review Draft Report |  | 10d | 2020-08-24 | 2020-09-04 | A68800 | 190d | 0d | A02 5 Day Workweek (BH as Work & Xmas as Non-Work) | Design | Reports | Coring |
| A68820 |  | Compile Final Report |  | 10d | 2020-09-07 | 2020-09-18 | A68810 | 190d | 0d | A02 5 Day Workweek (BH as Work & Xmas as Non-Work) | Bam Ritchies | Reports | Coring |
| A68830 |  | Final Report Complete & Submitted To Design | milestone | 0d | 2020-09-18 | 2020-09-18 | A68820 | 190d | 30d | A02 5 Day Workweek (BH as Work & Xmas as Non-Work) | Bam Ritchies | Reports | Coring |

| ID | WBS | Activity | Type | Duration | Start | Finish | Predecessors | Complete | Remaining | Planned start | Planned finish | Total float | Free float | Calendar | Company Responsible | Week Number | Discipline | Machines Required |
| --- | --- | --- | --- | --- | --- | --- | --- | --- | --- | --- | --- | --- | --- | --- | --- | --- | --- | --- |
|  | 1 | **MDL1/23 - WOOD LANE OB** |  |  | 2020-01-13 | 2020-09-08 |  |  |  |  |  |  |  |  |  |  |  |  |
|  | 1 | **Coring** |  |  | 2020-07-29 | 2020-09-08 |  |  |  |  |  |  |  |  |  |  |  |  |
| A63180 |  | Compile Draft Report |  | 10d | 2020-07-29 | 2020-08-11 | A60800, A60820, A60840, A60860, A60790, A60810, A60830, A60850 |  |  |  |  | 198d | 0d | A02 5 Day Workweek (BH as Work & Xmas as Non-Work) | Bam Ritchies | Reports | Coring |  |
| A63190 |  | Designers Review Draft Report |  | 10d | 2020-08-12 | 2020-08-25 | A63180 |  |  |  |  | 198d | 0d | A02 5 Day Workweek (BH as Work & Xmas as Non-Work) | Design | Reports | Coring |  |
| A63200 |  | Compile Final Report |  | 10d | 2020-08-26 | 2020-09-08 | A63190 |  |  |  |  | 198d | 0d | A02 5 Day Workweek (BH as Work & Xmas as Non-Work) | Bam Ritchies | Reports | Coring |  |
| A63210 |  | Final Report Complete & Submitted To Design | milestone | 0d | 2020-09-08 | 2020-09-08 | A63200 |  |  |  |  | 198d | 68d | A02 5 Day Workweek (BH as Work & Xmas as Non-Work) | Bam Ritchies | Reports | Coring |  |
|  | 2 | **Trial Holes** |  |  | 2020-01-13 | 2020-07-31 |  |  |  |  |  |  |  |  |  |  |  |  |
| A63220 |  | Compile Draft Report |  | 10d | 2020-01-13 A | 2020-07-06 | A61120, A61130, A61140, A61150 | 100% | 0d | 2020-01-20 | 2020-01-31 | 225d | 0d | A02 5 Day Workweek (BH as Work & Xmas as Non-Work) | Bam Ritchies | Reports | Trial Pit | A |
| A63230 |  | Designers Review Draft Report |  | 10d | 2020-07-06 | 2020-07-17 | A63220 |  |  |  |  | 225d | 0d | A02 5 Day Workweek (BH as Work & Xmas as Non-Work) | Design | Reports | Trial Pit |  |
| A63240 |  | Compile Final Report |  | 10d | 2020-07-20 | 2020-07-31 | A63230 |  |  |  |  | 225d | 0d | A02 5 Day Workweek (BH as Work & Xmas as Non-Work) | Bam Ritchies | Reports | Trial Pit |  |
| A63250 |  | Final Report Complete & Submitted To Design | milestone | 0d | 2020-07-31 | 2020-07-31 | A63240 |  |  |  |  | 225d | 25d | A02 5 Day Workweek (BH as Work & Xmas as Non-Work) | Bam Ritchies | Reports | Trial Pit |  |
|  | 2 | **Stations** |  |  | 2020-05-04 | 2020-10-16 |  |  |  |  |  |  |  |  |  |  |  |  |
|  | 1 | **Dewsbury Station** |  |  | 2020-05-04 | 2020-10-16 |  |  |  |  |  |  |  |  |  |  |  |  |
|  | 1 | **Coring** |  |  | 2020-08-24 | 2020-10-02 |  |  |  |  |  |  |  |  |  |  |  |  |
| A63820 |  | Compile Draft Report |  | 10d | 2020-08-24 | 2020-09-04 | A61920, A61930, A61940, A61950, A61960, A61970, A61980, A61990, A62000, A62010, A62020 |  |  |  |  | 73d | 0d | A02 5 Day Workweek (BH as Work & Xmas as Non-Work) | Structural Soils | Reports | Coring |  |
| A63830 |  | Designers Review Draft Report |  | 10d | 2020-09-07 | 2020-09-18 | A63820 |  |  |  |  | 73d | 0d | A02 5 Day Workweek (BH as Work & Xmas as Non-Work) | Design | Reports | Coring |  |
| A63840 |  | Compile Final Report |  | 10d | 2020-09-21 | 2020-10-02 | A63830 |  |  |  |  | 73d | 0d | A02 5 Day Workweek (BH as Work & Xmas as Non-Work) | Structural Soils | Reports | Coring |  |
| A63850 |  | Final Report Complete & Submitted To Design | milestone | 0d | 2020-10-02 | 2020-10-02 | A63840 |  |  |  |  | 73d | 0d | A02 5 Day Workweek (BH as Work & Xmas as Non-Work) | Structural Soils | Reports | Coring |  |
|  | 2 | **Trial Holes** |  |  | 2020-08-10 | 2020-09-18 |  |  |  |  |  |  |  |  |  |  |  |  |
| A63860 |  | Compile Draft Report |  | 10d | 2020-08-10 | 2020-08-21 | A62030 FF, A62040 FF, A62050 FF, A62060 FF |  |  |  |  | 83d | 0d | A02 5 Day Workweek (BH as Work & Xmas as Non-Work) | Structural Soils | Reports | Trial Pit |  |
| A63870 |  | Designers Review Draft Report |  | 10d | 2020-08-24 | 2020-09-04 | A63860 |  |  |  |  | 83d | 0d | A02 5 Day Workweek (BH as Work & Xmas as Non-Work) | Design | Reports | Trial Pit |  |
| A63880 |  | Compile Final Report |  | 10d | 2020-09-07 | 2020-09-18 | A63870 |  |  |  |  | 83d | 0d | A02 5 Day Workweek (BH as Work & Xmas as Non-Work) | Structural Soils | Reports | Trial Pit |  |
| A63890 |  | Final Report Complete & Submitted To Design | milestone | 0d | 2020-09-18 | 2020-09-18 | A63880 |  |  |  |  | 83d | 10d | A02 5 Day Workweek (BH as Work & Xmas as Non-Work) | Structural Soils | Reports | Trial Pit |  |
|  | 3 | **Off-Track Drainage Inspection** |  |  | 2020-07-06 | 2020-08-14 |  |  |  |  |  |  |  |  |  |  |  |  |
| A69300 |  | Compile Draft Report |  | 10d | 2020-07-06 | 2020-07-17 | A62390 |  |  |  |  | 108d | 0d | A02 5 Day Workweek (BH as Work & Xmas as Non-Work) |  | Reports | Drainage |  |
| A69310 |  | Designers Review Draft Report |  | 10d | 2020-07-20 | 2020-07-31 | A69300 |  |  |  |  | 108d | 0d | A02 5 Day Workweek (BH as Work & Xmas as Non-Work) | Design | Reports | Drainage |  |
| A69320 |  | Compile Final Report |  | 10d | 2020-08-03 | 2020-08-14 | A69310 |  |  |  |  | 108d | 0d | A02 5 Day Workweek (BH as Work & Xmas as Non-Work) |  | Reports | Drainage |  |
| A69330 |  | Final Report Complete & Submitted To Design | milestone | 0d | 2020-08-14 | 2020-08-14 | A69320 |  |  |  |  | 108d | 0d | A02 5 Day Workweek (BH as Work & Xmas as Non-Work) |  | Reports | Drainage |  |

| ID | WBS | Activity | Type | Duration | Start | Finish | Predecessors | Complete | Remaining | Planned start | Planned finish | Total float | Free float | Constraint | Calendar | Machines Required | Company Responsible | Week Number | Discipline | Location / ELR | Weekend/Midweek | Responsibility | GI Reference Number |
| --- | --- | --- | --- | --- | --- | --- | --- | --- | --- | --- | --- | --- | --- | --- | --- | --- | --- | --- | --- | --- | --- | --- | --- |
|  | 5 | **Exisitng Services / GPR** |  |  | 2020-05-04 | 2020-08-14 |  |  |  |  |  |  |  |  |  |  |  |  |  |  |  |  |  |
| A69260 |  | Compile Draft Report |  | 10d | 2020-05-04 A | 2020-07-17 | A62410 |  | 10d | 2020-05-04 | 2020-05-15 | 108d | 0d |  | A02 5 Day Workweek (BH as Work & Xmas as Non-Work) | A | Structural Soils | Reports | Drainage |  |  |  |  |
| A69270 |  | Designers Review Draft Report |  | 10d | 2020-07-20 | 2020-07-31 | A69260 |  |  |  |  | 108d | 0d |  | A02 5 Day Workweek (BH as Work & Xmas as Non-Work) |  | Design | Reports | Drainage |  |  |  |  |
| A69280 |  | Compile Final Report |  | 10d | 2020-08-03 | 2020-08-14 | A69270 |  |  |  |  | 108d | 0d |  | A02 5 Day Workweek (BH as Work & Xmas as Non-Work) |  | Structural Soils | Reports | Drainage |  |  |  |  |
| A69290 |  | Final Report Complete & Submitted To Design | milestone | 0d | 2020-08-14 | 2020-08-14 | A69280 |  |  |  |  | 108d | 0d |  | A02 5 Day Workweek (BH as Work & Xmas as Non-Work) |  | Structural Soils | Reports | Drainage |  |  |  |  |
|  | 6 | **Point Cloud / Laser Scan** |  |  |  |  |  |  |  |  |  |  |  |  |  |  |  |  |  |  |  |  |  |
|  | 7 | **Pedestrian Flow Survey** |  |  |  |  |  |  |  |  |  |  |  |  |  |  |  |  |  |  |  |  |  |
|  | 8 | **Paint Samples** |  |  | 2020-08-10 | 2020-09-18 |  |  |  |  |  |  |  |  |  |  |  |  |  |  |  |  |  |
| A63900 |  | Compile Draft Report |  | 10d | 2020-08-10 | 2020-08-21 | A62460 |  |  |  |  | 83d | 0d |  | A02 5 Day Workweek (BH as Work & Xmas as Non-Work) |  | Structural Soils | Reports | Paint Sample |  |  |  |  |
| A63910 |  | Designers Review Draft Report |  | 10d | 2020-08-24 | 2020-09-04 | A63900 |  |  |  |  | 83d | 0d |  | A02 5 Day Workweek (BH as Work & Xmas as Non-Work) |  | Design | Reports | Paint Sample |  |  |  |  |
| A63920 |  | Compile Final Report |  | 10d | 2020-09-07 | 2020-09-18 | A63910 |  |  |  |  | 83d | 0d |  | A02 5 Day Workweek (BH as Work & Xmas as Non-Work) |  | Structural Soils | Reports | Paint Sample |  |  |  |  |
| A63930 |  | Final Report Complete & Submitted To Design | milestone | 0d | 2020-09-18 | 2020-09-18 | A63920 |  |  |  |  | 83d | 10d |  | A02 5 Day Workweek (BH as Work & Xmas as Non-Work) |  | Structural Soils | Reports | Paint Sample |  |  |  |  |
|  | 9 | **Asbestos Survey** |  |  | 2020-09-07 | 2020-10-16 |  |  |  |  |  |  |  |  |  |  |  |  |  |  |  |  |  |
| A69220 |  | Compile Draft Report |  | 10d | 2020-09-07 | 2020-09-18 | A62470 |  |  |  |  | 63d | 0d |  | A02 5 Day Workweek (BH as Work & Xmas as Non-Work) |  | Structural Soils | Reports | Drainage |  |  |  |  |
| A69230 |  | Designers Review Draft Report |  | 10d | 2020-09-21 | 2020-10-02 | A69220 |  |  |  |  | 63d | 0d |  | A02 5 Day Workweek (BH as Work & Xmas as Non-Work) |  | Design | Reports | Drainage |  |  |  |  |
| A69240 |  | Compile Final Report |  | 10d | 2020-10-05 | 2020-10-16 | A69230 |  |  |  |  | 63d | 0d |  | A02 5 Day Workweek (BH as Work & Xmas as Non-Work) |  | Structural Soils | Reports | Drainage |  |  |  |  |
| A69250 |  | Final Report Complete & Submitted To Design | milestone | 0d | 2020-10-16 | 2020-10-16 | A69240 |  |  |  |  | 63d | 0d |  | A02 5 Day Workweek (BH as Work & Xmas as Non-Work) |  |  | Reports | Drainage |  |  |  |  |
|  | 4 | **Topographical Survey** |  |  | 2020-05-26 | 2020-10-09 |  |  |  |  |  |  |  |  |  |  |  |  |  |  |  |  |  |
|  | 1 | **Off-Track Survey - Dewsbury Station inc. Roads & MDL1/16 George St, MDL1/17 Ashworth Gardens** |  |  | 2020-05-26 | 2020-07-21 |  |  |  |  |  |  |  |  |  |  |  |  |  |  |  |  |  |
| A65780 |  | Topographical Survey Data Release |  | 8d | 2020-05-26 A | 2020-06-02 A |  | 100% |  | 2020-06-22 | 2020-07-01 |  |  | start on or after 2020-06-22 | A03 5 Day Workweek (BH & Xmas as Work) |  | Severn Partnership | Reports | Topographical | matt | Section A | Matt Levine |  |
| A65790 |  | Designers Review Draft Topographical Survey Report |  | 10d | 2020-06-03 A | 2020-07-02 A | A65780 | 100% |  | 2020-07-02 | 2020-07-15 |  |  |  | A03 5 Day Workweek (BH & Xmas as Work) |  | Design Team | Reports | Topographical | matt | Section A | Matt Levine |  |
| A65800 |  | Compile Final Topographical Survey Wireframe |  | 10d | 2020-07-06 A | 2020-07-07 A | A65790 | 100% |  | 2020-07-06 | 2020-07-17 |  |  |  | A03 5 Day Workweek (BH & Xmas as Work) |  | Severn Partnership | Reports | Topographical | matt | Section A | Matt Levine |  |
| A65810 |  | Completion Of Survey Deliverables | milestone | 0d | 2020-07-07 A | 2020-07-07 A | A65800 | 100% |  | 2020-07-17 | 2020-07-17 |  |  |  | A03 5 Day Workweek (BH & Xmas as Work) |  | Severn Partnership | Reports | Topographical | matt | Section A | Matt Levine | GIVE |
| A65820 |  | Resolution Of CRS Comments & Submittal Of Final Survey Deliverables |  | 10d | 2020-07-08 A | 2020-07-21 | A65810 |  | 10d | 2020-07-20 | 2020-07-31 | 233d | 103d |  | A03 5 Day Workweek (BH & Xmas as Work) |  | Severn Partnership | Reports | Topographical | matt | Section A | Matt Levine |  |

Notes:
- A65780: Comments: on going this week, loss of midweek 52 & and no access midweek 5. 6 week delay. 10.07 - delivered
- A65820: Comments: 10.07 - Comments didn't require any edits. ML to close out and move to coordinate

| ID | WBS | Activity | Type | Duration | Start | Finish | Predecessors | Remaining | Total float | Free float | Constraint | Calendar | Company Responsible | Location / ELR | Week Number | Weekend/Midweek | Responsibility | Discipline | GI Reference Number | 03.1 Progress Note | 04.2 Progress Note |
| --- | --- | --- | --- | --- | --- | --- | --- | --- | --- | --- | --- | --- | --- | --- | --- | --- | --- | --- | --- | --- | --- |
|  | 2 | **Track Survey - 34m 10ch to 34m 30ch // Off-Track - Dewsbury Disused Tunnel, MDL1/23 Wood Lane** |  |  | 2020-07-06 | 2020-09-11 |  |  |  |  |  |  |  |  |  |  |  |  |  |  |  |
| A70320 |  | Rail String & Gauging Data Release |  | 10d | 2020-07-06 A | 2020-07-17 |  | 10d | 195d | 0d | start on or after 2020-07-06 | A03 5 Day Workweek (BH & Xmas as Work) | Severn Partnership | matt | Reports | Section A | Matt Levine | Topographical |  |  |  |
| A70330 |  | Lineside Detail Data & SCO Gauging File Release |  | 10d | 2020-07-20 | 2020-07-31 | A70320 |  | 195d | 0d |  | A03 5 Day Workweek (BH & Xmas as Work) | Severn Partnership | matt | Reports | Section A | Matt Levine | Topographical |  |  |  |
| A70340 |  | Designers Review Draft Topographical Survey Report |  | 10d | 2020-08-03 | 2020-08-14 | A70330 |  | 195d | 0d |  | A03 5 Day Workweek (BH & Xmas as Work) | Design Team | matt | Reports | Section A | Matt Levine | Topographical |  |  |  |
| A70350 |  | Compile Final Topographical Survey Wireframe |  | 10d | 2020-08-17 | 2020-08-28 | A70340 |  | 195d | 0d |  | A03 5 Day Workweek (BH & Xmas as Work) | Severn Partnership | matt | Reports | Section A | Matt Levine | Topographical |  |  |  |
| A70360 |  | Completion Of Survey Deliverables | milestone | 0d | 2020-08-28 | 2020-08-28 | A70350 |  | 195d | 0d |  | A03 5 Day Workweek (BH & Xmas as Work) | Severn Partnership | matt | Reports | Section A | Matt Levine | Topographical | GIVE |  |  |
| A70370 |  | Resolution Of CRS Comments & Submittal Of Final Survey Deliverables |  | 10d | 2020-08-31 | 2020-09-11 | A70360 |  | 195d |  |  | A03 5 Day Workweek (BH & Xmas as Work) | Severn Partnership | matt | Reports | Section A | Matt Levine | Topographical |  |  |  |
|  | 3 | **Track Survey - 34m 30ch to 34m 60ch // Off-Track - MDL1/24 Jack Lane** |  |  | 2020-08-03 | 2020-10-09 |  |  |  |  |  |  |  |  |  |  |  |  |  |  |  |
| A70260 |  | Rail String & Gauging Data Release |  | 10d | 2020-08-03 | 2020-08-14 |  |  | 144d | 0d | start on or after 2020-08-03 | A03 5 Day Workweek (BH & Xmas as Work) | Severn Partnership | matt | Reports | Section A | Matt Levine | Topographical |  |  |  |
| A70270 |  | Lineside Detail Data & SCO Gauging File Release |  | 10d | 2020-08-17 | 2020-08-28 | A70260 |  | 175d | 0d |  | A03 5 Day Workweek (BH & Xmas as Work) | Severn Partnership | matt | Reports | Section A | Matt Levine | Topographical |  |  |  |
| A70280 |  | Designers Review Draft Topographical Survey Report |  | 10d | 2020-08-31 | 2020-09-11 | A70270 |  | 175d | 0d |  | A03 5 Day Workweek (BH & Xmas as Work) | Design Team | matt | Reports | Section A | Matt Levine | Topographical |  |  |  |
| A70290 |  | Compile Final Topographical Survey Wireframe |  | 10d | 2020-09-14 | 2020-09-25 | A70280 |  | 175d | 0d |  | A03 5 Day Workweek (BH & Xmas as Work) | Severn Partnership | matt | Reports | Section A | Matt Levine | Topographical |  |  |  |
| A70300 |  | Completion Of Survey Deliverables | milestone | 0d | 2020-09-25 | 2020-09-25 | A70290 |  | 175d | 0d |  | A03 5 Day Workweek (BH & Xmas as Work) | Severn Partnership | matt | Reports | Section A | Matt Levine | Topographical | GIVE |  |  |
| A70310 |  | Resolution Of CRS Comments & Submittal Of Final Survey Deliverables |  | 10d | 2020-09-28 | 2020-10-09 | A70300 |  | 175d |  |  | A03 5 Day Workweek (BH & Xmas as Work) | Severn Partnership | matt | Reports | Section A | Matt Levine | Topographical |  |  |  |
|  | 3 | **Drainage** |  |  | 2020-10-05 | 2020-11-13 |  |  |  |  |  |  |  |  |  |  |  |  |  |  |  |
| A66400 |  | Compile Draft Report |  | 10d | 2020-10-05 | 2020-10-16 | A65890, A65900, A66060, A65910, A65920, A66070, A66080, A66230, A66240, A66090, A75670, A75680, A81350 |  | 150d | 0d |  | A02 5 Day Workweek (BH as Work & Xmas as Non-Work) | Lanes4Drains |  | Reports |  |  | Drainage |  |  |  |
| A66420 |  | Designers Review Draft Report |  | 10d | 2020-10-19 | 2020-10-30 | A66400 |  | 150d | 0d |  | A02 5 Day Workweek (BH as Work & Xmas as Non-Work) | Design |  | Reports |  |  | Drainage |  |  |  |
| A66410 |  | Compile Final Report |  | 10d | 2020-11-02 | 2020-11-13 | A66420 |  | 150d | 0d |  | A02 5 Day Workweek (BH as Work & Xmas as Non-Work) | Lanes4Drains |  | Reports |  |  | Drainage |  |  |  |
| A66430 |  | Final Report Complete & Submitted To Design | milestone | 0d | 2020-11-13 | 2020-11-13 | A66410 |  | 150d | 0d |  | A02 5 Day Workweek (BH as Work & Xmas as Non-Work) | Lanes4Drains |  | Reports |  |  | Drainage |  |  |  |
|  | 13 | **Survey Factual Reports - SECTION B - 34m 54ch to 38m 10ch** |  |  | 2020-01-20 | 2020-12-01 |  |  |  |  |  |  |  |  |  |  |  |  |  |  |  |
|  | 6 | **Geotechnical** |  |  | 2020-05-11 | 2020-12-01 |  |  |  |  |  |  |  |  |  |  |  |  |  |  |  |
|  | 1 | **ABS** |  |  | 2020-09-07 | 2020-10-16 |  |  |  |  |  |  |  |  |  |  |  |  |  |  |  |
| A68140 |  | Compile Draft Report |  | 10d | 2020-09-07 | 2020-09-18 | A59140, A59150, A59170, A59260, A59280, A59290, A59300, A59310, A59320, A59330, A59340, A59360, A59370, A59380, A59390, A59400, A59410, A59420, A59000, A59010, A59020, A59030, A59060, A59070, A58780, A58800, A58840, A58900, A59080, A59090, A59100, A59120, A59130, A67830, A67840, A67850, A67860, A67870, A67880, A67890, A67900, A67910, A67920, A67930, A67940, A67950, A56130, A55830 |  | 5d | 0d |  | A02 5 Day Workweek (BH as Work & Xmas as Non-Work) |  |  | Reports |  |  | ABS |  | 200530 CV - Survey Critical | SURVEY |
| A68160 |  | Designers Review Draft Report |  | 10d | 2020-09-21 | 2020-10-02 | A68140 |  | 5d | 0d |  | A02 5 Day Workweek (BH as Work & Xmas as Non-Work) |  |  | Reports |  |  | ABS |  | 200530 CV - Survey Critical | SURVEY |
| A68150 |  | Compile Final Report |  | 10d | 2020-10-05 | 2020-10-16 | A68160 |  | 5d | 0d |  | A02 5 Day Workweek (BH as Work & Xmas as Non-Work) |  |  | Reports |  |  | ABS |  | 200530 CV - Survey Critical | SURVEY |
| A68170 |  | Final Report Complete & Submitted To Design | milestone | 0d | 2020-10-16 | 2020-10-16 | A68150 |  | 5d | 0d |  | A02 5 Day Workweek (BH as Work & Xmas as Non-Work) |  |  | Reports |  |  | ABS |  | 200530 CV - Survey Critical |  |

Notes:
- A70320: Comments: 10.07 - Processing in progress, delivery TBC
- A70260: Comments: 10.07 - Due to access restrictions week 11, track & gauging planned for week 17 MW nights. TBC upon completion week 17.

| ID | WBS | Activity | Type | Duration | Start | Finish | Predecessors | Complete | Total float | Free float | Calendar | Week Number | Discipline | Machines Required | Location / ELR | GI Reference Number | Mileage | Access Point | 04.2 Progress Note |
| --- | --- | --- | --- | --- | --- | --- | --- | --- | --- | --- | --- | --- | --- | --- | --- | --- | --- | --- | --- |
|  | 2 | **Boreholes** |  |  | 2020-08-10 | 2020-09-18 |  |  |  |  |  |  |  |  |  |  |  |  |  |
| A68180 |  | Compile Draft Report |  | 10d | 2020-08-10 | 2020-08-21 | A60390, A60400 |  | 20d | 0d | A02 5 Day Workweek (BH as Work & Xmas as Non-Work) | Reports | Borehole |  |  |  |  |  |  |
| A68200 |  | Designers Review Draft Report |  | 10d | 2020-08-24 | 2020-09-04 | A68180 |  | 20d | 0d | A02 5 Day Workweek (BH as Work & Xmas as Non-Work) | Reports | Borehole |  |  |  |  |  |  |
| A68190 |  | Compile Final Report |  | 10d | 2020-09-07 | 2020-09-18 | A68200 |  | 20d | 0d | A02 5 Day Workweek (BH as Work & Xmas as Non-Work) | Reports | Borehole |  |  |  |  |  |  |
| A68210 |  | Final Report Complete & Submitted To Design | milestone | 0d | 2020-09-18 | 2020-09-18 | A68190 |  | 20d | 0d | A02 5 Day Workweek (BH as Work & Xmas as Non-Work) | Reports | Borehole |  |  |  |  |  |  |
|  | 3 | **Trial Pits** |  |  | 2020-05-11 | 2020-05-22 |  |  |  |  |  |  |  |  |  |  |  |  |  |
| A68220 |  | Compile Draft Report - DESCOPED |  | 10d | 2020-05-11 A | 2020-05-22 A | A68020 FF, A68030 FF, A68040 FF, A68050 FF, A68060 FF, A68070 FF, A68080 FF, A68090 FF | 100% |  |  | A02 5 Day Workweek (BH as Work & Xmas as Non-Work) | Reports | Trial Pit | DESCOPED | DESCOPED | DESCOPED | DESCOPED | DESCOPED |  |
| A68230 |  | Compile Final Report - DESCOPED |  | 10d | 2020-05-11 A | 2020-05-22 A | A68240 FF | 100% |  |  | A02 5 Day Workweek (BH as Work & Xmas as Non-Work) | Reports | Trial Pit | DESCOPED | DESCOPED | DESCOPED | DESCOPED | DESCOPED |  |
| A68240 |  | Designers Review Draft Report - DESCOPED |  | 10d | 2020-05-11 A | 2020-05-22 A | A68220 FF | 100% |  |  | A02 5 Day Workweek (BH as Work & Xmas as Non-Work) | Reports | Trial Pit | DESCOPED | DESCOPED | DESCOPED | DESCOPED | DESCOPED |  |
| A68250 |  | Final Report Complete & Submitted To Design - DESCOPED | milestone | 0d | 2020-05-22 A | 2020-05-22 A | A68230 FF | 100% |  |  | A02 5 Day Workweek (BH as Work & Xmas as Non-Work) | Reports | Trial Pit | DESCOPED | DESCOPED | DESCOPED | DESCOPED | DESCOPED |  |
|  | 4 | **Window Samples** |  |  | 2020-10-21 | 2020-12-01 |  |  |  |  |  |  |  |  |  |  |  |  |  |
| A68260 |  | Compile Draft Report |  | 10d | 2020-10-21 | 2020-11-03 | A60410, A68010, A58370 |  | 3d | 0d | A02 5 Day Workweek (BH as Work & Xmas as Non-Work) | Reports | Window Sample |  |  |  |  |  | SURVEY |
| A68280 |  | Designers Review Draft Report |  | 10d | 2020-11-04 | 2020-11-17 | A68260 |  | 3d | 0d | A02 5 Day Workweek (BH as Work & Xmas as Non-Work) | Reports | Window Sample |  |  |  |  |  | SURVEY |
| A68270 |  | Compile Final Report |  | 10d | 2020-11-18 | 2020-12-01 | A68280 |  | 3d | 0d | A02 5 Day Workweek (BH as Work & Xmas as Non-Work) | Reports | Window Sample |  |  |  |  |  | SURVEY |
| A68290 |  | Final Report Complete & Submitted To Design | milestone | 0d | 2020-12-01 | 2020-12-01 | A68270 |  | 3d | 0d | A02 5 Day Workweek (BH as Work & Xmas as Non-Work) | Reports | Window Sample |  |  |  |  |  |  |
|  | 5 | **Structures** |  |  | 2020-01-20 | 2020-10-23 |  |  |  |  |  |  |  |  |  |  |  |  |  |
|  | 5 | **MDL1/27 - BATLEY VIADUCT** |  |  | 2020-09-09 | 2020-10-20 |  |  |  |  |  |  |  |  |  |  |  |  |  |
|  | 1 | **Coring** |  |  | 2020-09-09 | 2020-10-20 |  |  |  |  |  |  |  |  |  |  |  |  |  |
| A68840 |  | Compile Draft Report |  | 10d | 2020-09-09 | 2020-09-22 | A67050, A67060, A67070, A67080, A67090, A67100, A67110, A67120, A67130, A67140, A67150, A67160, A67170, A67180, A67190, A67200 |  | 168d | 0d | A02 5 Day Workweek (BH as Work & Xmas as Non-Work) | Reports | Coring |  |  |  |  |  |  |
| A68850 |  | Designers Review Draft Report |  | 10d | 2020-09-23 | 2020-10-06 | A68840 |  | 168d | 0d | A02 5 Day Workweek (BH as Work & Xmas as Non-Work) | Reports | Coring |  |  |  |  |  |  |
| A68860 |  | Compile Final Report |  | 10d | 2020-10-07 | 2020-10-20 | A68850 |  | 168d | 0d | A02 5 Day Workweek (BH as Work & Xmas as Non-Work) | Reports | Coring |  |  |  |  |  |  |
| A68870 |  | Final Report Complete & Submitted To Design | milestone | 0d | 2020-10-20 | 2020-10-20 | A68860 |  | 168d | 3d | A02 5 Day Workweek (BH as Work & Xmas as Non-Work) | Reports | Coring |  |  |  |  |  |  |
|  | 1 | **MDL1/29 - SOOTHILL** |  |  | 2020-08-04 | 2020-09-14 |  |  |  |  |  |  |  |  |  |  |  |  |  |
|  | 1 | **Coring** |  |  |  |  |  |  |  |  |  |  |  |  |  |  |  |  |  |
|  | 2 | **Trial Holes** |  |  |  |  |  |  |  |  |  |  |  |  |  |  |  |  |  |
|  | 3 | **GPR** |  |  |  |  |  |  |  |  |  |  |  |  |  |  |  |  |  |
|  | 4 | **Paint Samples** |  |  |  |  |  |  |  |  |  |  |  |  |  |  |  |  |  |
|  | 5 | **Off-Track Drainage Inspection** |  |  | 2020-08-04 | 2020-09-14 |  |  |  |  |  |  |  |  |  |  |  |  |  |
| A69420 |  | Compile Draft Report |  | 10d | 2020-08-04 | 2020-08-17 | A61670, A81310 |  | 194d | 0d | A02 5 Day Workweek (BH as Work & Xmas as Non-Work) | Reports | Drainage |  |  |  |  |  |  |
| A69430 |  | Designers Review Draft Report |  | 10d | 2020-08-18 | 2020-08-31 | A69420 |  | 194d | 0d | A02 5 Day Workweek (BH as Work & Xmas as Non-Work) | Reports | Drainage |  |  |  |  |  |  |
| A69440 |  | Compile Final Report |  | 10d | 2020-09-01 | 2020-09-14 | A69430 |  | 194d | 0d | A02 5 Day Workweek (BH as Work & Xmas as Non-Work) | Reports | Drainage |  |  |  |  |  |  |
| A69450 |  | Final Report Complete & Submitted To Design | milestone | 0d | 2020-09-14 | 2020-09-14 | A69440 FF |  | 194d |  | A02 5 Day Workweek (BH as Work & Xmas as Non-Work) | Reports | Drainage |  |  |  |  |  |  |

| ID | WBS | Activity | Type | Duration | Start | Finish | Predecessors | Total float | Free float | Calendar | Week Number | Discipline |
| --- | --- | --- | --- | --- | --- | --- | --- | --- | --- | --- | --- | --- |
|  | 4 | **MDL1/33 DISUSED ABUTMENT** |  |  | 2020-07-06 | 2020-09-04 |  |  |  |  |  |  |
|  | 3 | **Window Samples** |  |  | 2020-07-06 | 2020-08-14 |  |  |  |  |  |  |
| A77220 |  | Compile Draft Report |  | 10d | 2020-07-06 | 2020-07-17 | A67590, A67600 | 215d | 0d | A02 5 Day Workweek (BH as Work & Xmas as Non-Work) | Reports | Coring |
| A77230 |  | Designers Review Draft Report |  | 10d | 2020-07-20 | 2020-07-31 | A77220 | 215d | 0d | A02 5 Day Workweek (BH as Work & Xmas as Non-Work) | Reports | Coring |
| A77240 |  | Compile Final Report |  | 10d | 2020-08-03 | 2020-08-14 | A77230 | 215d | 0d | A02 5 Day Workweek (BH as Work & Xmas as Non-Work) | Reports | Coring |
| A77250 |  | Final Report Complete & Submitted To Design | milestone | 0d | 2020-08-14 | 2020-08-14 | A77240 | 215d |  | A02 5 Day Workweek (BH as Work & Xmas as Non-Work) | Reports | Coring |
|  | 2 | **Coring** |  |  | 2020-07-27 | 2020-09-04 |  |  |  |  |  |  |
| A68880 |  | Compile Draft Report |  | 10d | 2020-07-27 | 2020-08-07 | A67210, A67220, A67230, A67240, A67250, A67260, A67270, A67280 | 200d | 0d | A02 5 Day Workweek (BH as Work & Xmas as Non-Work) | Reports | Coring |
| A68890 |  | Designers Review Draft Report |  | 10d | 2020-08-10 | 2020-08-21 | A68880 | 200d | 0d | A02 5 Day Workweek (BH as Work & Xmas as Non-Work) | Reports | Coring |
| A68900 |  | Compile Final Report |  | 10d | 2020-08-24 | 2020-09-04 | A68890 | 200d | 0d | A02 5 Day Workweek (BH as Work & Xmas as Non-Work) | Reports | Coring |
| A68910 |  | Final Report Complete & Submitted To Design | milestone | 0d | 2020-09-04 | 2020-09-04 | A68900 | 200d | 35d | A02 5 Day Workweek (BH as Work & Xmas as Non-Work) | Reports | Coring |
|  | 1 | **Trial Holes** |  |  | 2020-07-06 | 2020-08-14 |  |  |  |  |  |  |
| A68760 |  | Compile Draft Report |  | 10d | 2020-07-06 | 2020-07-17 | A67610, A67620, A67630, A67640 | 215d | 0d | A02 5 Day Workweek (BH as Work & Xmas as Non-Work) | Reports | Trial Pit |
| A68770 |  | Designers Review Draft Report |  | 10d | 2020-07-20 | 2020-07-31 | A68760 | 215d | 0d | A02 5 Day Workweek (BH as Work & Xmas as Non-Work) | Reports | Trial Pit |
| A68780 |  | Compile Final Report |  | 10d | 2020-08-03 | 2020-08-14 | A68770 | 215d | 0d | A02 5 Day Workweek (BH as Work & Xmas as Non-Work) | Reports | Trial Pit |
| A68790 |  | Final Report Complete & Submitted To Design | milestone | 0d | 2020-08-14 | 2020-08-14 | A68780 | 215d | 0d | A02 5 Day Workweek (BH as Work & Xmas as Non-Work) | Reports | Trial Pit |
|  | 3 | **MDL1/36/B1 - RETAINING WALL** |  |  | 2020-09-14 | 2020-10-23 |  |  |  |  |  |  |
|  | 1 | **Coring** |  |  | 2020-09-14 | 2020-10-23 |  |  |  |  |  |  |
| A63740 |  | Compile Draft Report |  | 10d | 2020-09-14 | 2020-09-25 | A61370, A61380, A61390, A61400, A61410, A61420, A61430, A61440, A61450 | 165d | 0d | A02 5 Day Workweek (BH as Work & Xmas as Non-Work) | Reports | Coring |
| A63750 |  | Designers Review Draft Report |  | 10d | 2020-09-28 | 2020-10-09 | A63740 | 165d | 0d | A02 5 Day Workweek (BH as Work & Xmas as Non-Work) | Reports | Coring |
| A63760 |  | Compile Final Report |  | 10d | 2020-10-12 | 2020-10-23 | A63750 | 165d | 0d | A02 5 Day Workweek (BH as Work & Xmas as Non-Work) | Reports | Coring |
| A63770 |  | Final Report Complete & Submitted To Design | milestone | 0d | 2020-10-23 | 2020-10-23 | A63760 | 165d | 0d | A02 5 Day Workweek (BH as Work & Xmas as Non-Work) | Reports | Coring |
|  | 2 | **MDL1/36/P2 - VALLEY ROAD OB** |  |  | 2020-01-20 | 2020-10-22 |  |  |  |  |  |  |
|  | 1 | **Coring** |  |  | 2020-09-11 | 2020-10-22 |  |  |  |  |  |  |
| A63420 |  | Compile Draft Report |  | 10d | 2020-09-11 | 2020-09-24 | A70640, A70630 | 166d | 0d | A02 5 Day Workweek (BH as Work & Xmas as Non-Work) | Reports | Coring |
| A63430 |  | Designers Review Draft Report |  | 10d | 2020-09-25 | 2020-10-08 | A63420 | 166d | 0d | A02 5 Day Workweek (BH as Work & Xmas as Non-Work) | Reports | Coring |
| A63440 |  | Compile Final Report |  | 10d | 2020-10-09 | 2020-10-22 | A63430 | 166d | 0d | A02 5 Day Workweek (BH as Work & Xmas as Non-Work) | Reports | Coring |
| A63450 |  | Final Report Complete & Submitted To Design | milestone | 0d | 2020-10-22 | 2020-10-22 | A63440 | 166d | 1d | A02 5 Day Workweek (BH as Work & Xmas as Non-Work) | Reports | Coring |

| ID | WBS | Activity | Type | Duration | Start | Finish | Predecessors | Remaining | Planned start | Planned finish | Total float | Free float | Calendar | Machines Required | Week Number | Discipline | Company Responsible |
| --- | --- | --- | --- | --- | --- | --- | --- | --- | --- | --- | --- | --- | --- | --- | --- | --- | --- |
|  | 2 | **Trial Holes** |  |  | 2020-01-20 | 2020-08-14 |  |  |  |  |  |  |  |  |  |  |  |
| A63460 |  | Compile Draft Report |  | 10d | 2020-01-20 A | 2020-07-17 | A61220, A61230, A67660, A67650 | 10d | 2020-02-03 | 2020-02-14 | 215d | 0d | A02 5 Day Workweek (BH as Work & Xmas as Non-Work) | A | Reports | Trial Pit |  |
| A63470 |  | Designers Review Draft Report |  | 10d | 2020-07-20 | 2020-07-31 | A63460 |  |  |  | 215d | 0d | A02 5 Day Workweek (BH as Work & Xmas as Non-Work) |  | Reports | Trial Pit |  |
| A63480 |  | Compile Final Report |  | 10d | 2020-08-03 | 2020-08-14 | A63470 |  |  |  | 215d | 0d | A02 5 Day Workweek (BH as Work & Xmas as Non-Work) |  | Reports | Trial Pit |  |
| A63490 |  | Final Report Complete & Submitted To Design | milestone | 0d | 2020-08-14 | 2020-08-14 | A63480 |  |  |  | 215d | 0d | A02 5 Day Workweek (BH as Work & Xmas as Non-Work) |  | Reports | Trial Pit |  |
|  | 3 | **Slit Trenches** |  |  | 2020-01-23 | 2020-08-14 |  |  |  |  |  |  |  |  |  |  |  |
| A63500 |  | Compile Draft Report |  | 10d | 2020-01-23 A | 2020-07-17 | A61300, A61310, A67690, A67700 | 10d | 2020-02-03 | 2020-02-14 | 215d | 0d | A02 5 Day Workweek (BH as Work & Xmas as Non-Work) | A | Reports | Slit Trench |  |
| A63510 |  | Designers Review Draft Report |  | 10d | 2020-07-20 | 2020-07-31 | A63500 |  |  |  | 215d | 0d | A02 5 Day Workweek (BH as Work & Xmas as Non-Work) |  | Reports | Slit Trench |  |
| A63520 |  | Compile Final Report |  | 10d | 2020-08-03 | 2020-08-14 | A63510 |  |  |  | 215d | 0d | A02 5 Day Workweek (BH as Work & Xmas as Non-Work) |  | Reports | Slit Trench |  |
| A63530 |  | Final Report Complete & Submitted To Design | milestone | 0d | 2020-08-14 | 2020-08-14 | A63520 |  |  |  | 215d | 0d | A02 5 Day Workweek (BH as Work & Xmas as Non-Work) |  | Reports | Slit Trench |  |
|  | 1 | **Stations** |  |  | 2020-06-01 | 2020-10-16 |  |  |  |  |  |  |  |  |  |  |  |
|  | 2 | **Batley Station** |  |  | 2020-06-01 | 2020-10-16 |  |  |  |  |  |  |  |  |  |  |  |
|  | 1 | **Coring** |  |  | 2020-07-23 | 2020-09-02 |  |  |  |  |  |  |  |  |  |  |  |
| A63940 |  | Compile Draft Report |  | 10d | 2020-07-23 | 2020-08-05 | A61700, A61710, A61720, A61730, A61740, A61750, A61760, A61770, A61780, A61790, A61800, A61810, A61820, A61830, A61840, A61850, A61860, A61870, A61880, A61890, A61900, A61910 |  |  |  | 135d | 0d | A02 5 Day Workweek (BH as Work & Xmas as Non-Work) |  | Reports | Coring |  |
| A63950 |  | Designers Review Draft Report |  | 10d | 2020-08-06 | 2020-08-19 | A63940 |  |  |  | 135d | 0d | A02 5 Day Workweek (BH as Work & Xmas as Non-Work) |  | Reports | Coring |  |
| A63960 |  | Compile Final Report |  | 10d | 2020-08-20 | 2020-09-02 | A63950 |  |  |  | 135d | 0d | A02 5 Day Workweek (BH as Work & Xmas as Non-Work) |  | Reports | Coring |  |
| A63970 |  | Final Report Complete & Submitted To Design | milestone | 0d | 2020-09-02 | 2020-09-02 | A63960 |  |  |  | 135d | 32d | A02 5 Day Workweek (BH as Work & Xmas as Non-Work) |  | Reports | Coring |  |
|  | 3 | **Off-Track Drainage Inspection** |  |  | 2020-07-06 | 2020-08-14 |  |  |  |  |  |  |  |  |  |  |  |
| A69180 |  | Compile Draft Report |  | 10d | 2020-07-06 | 2020-07-17 | A62480 |  |  |  | 148d | 0d | A02 5 Day Workweek (BH as Work & Xmas as Non-Work) |  | Reports | Drainage |  |
| A69190 |  | Designers Review Draft Report |  | 10d | 2020-07-20 | 2020-07-31 | A69180 |  |  |  | 148d | 0d | A02 5 Day Workweek (BH as Work & Xmas as Non-Work) |  | Reports | Drainage | Design |
| A69200 |  | Compile Final Report |  | 10d | 2020-08-03 | 2020-08-14 | A69190 |  |  |  | 148d | 0d | A02 5 Day Workweek (BH as Work & Xmas as Non-Work) |  | Reports | Drainage |  |
| A69210 |  | Final Report Complete & Submitted To Design | milestone | 0d | 2020-08-14 | 2020-08-14 | A69200 |  |  |  | 148d | 0d | A02 5 Day Workweek (BH as Work & Xmas as Non-Work) |  | Reports | Drainage |  |
|  | 5 | **Exisitng Services / GPR** |  |  | 2020-06-01 | 2020-08-14 |  |  |  |  |  |  |  |  |  |  |  |
| A69140 |  | Compile Draft Report |  | 10d | 2020-06-01 A | 2020-07-17 | A66820 | 10d | 2020-06-01 | 2020-06-12 | 148d | 0d | A02 5 Day Workweek (BH as Work & Xmas as Non-Work) |  | Reports | Drainage |  |
| A69150 |  | Designers Review Draft Report |  | 10d | 2020-07-20 | 2020-07-31 | A69140 |  |  |  | 148d | 0d | A02 5 Day Workweek (BH as Work & Xmas as Non-Work) |  | Reports | Drainage | Design |
| A69160 |  | Compile Final Report |  | 10d | 2020-08-03 | 2020-08-14 | A69150 |  |  |  | 148d | 0d | A02 5 Day Workweek (BH as Work & Xmas as Non-Work) |  | Reports | Drainage |  |
| A69170 |  | Final Report Complete & Submitted To Design | milestone | 0d | 2020-08-14 | 2020-08-14 | A69160 |  |  |  | 148d | 0d | A02 5 Day Workweek (BH as Work & Xmas as Non-Work) |  | Reports | Drainage |  |

| ID | WBS | Activity | Type | Duration | Start | Finish | Predecessors | Complete | Remaining | Planned start | Planned finish | Total float | Free float | Constraint | Calendar | Week Number | Discipline | Company Responsible | Location / ELR | Responsibility | GI Reference Number |
| --- | --- | --- | --- | --- | --- | --- | --- | --- | --- | --- | --- | --- | --- | --- | --- | --- | --- | --- | --- | --- | --- |
|  | 6 | **Point Cloud / Laser Scan** |  |  |  |  |  |  |  |  |  |  |  |  |  |  |  |  |  |  |  |
|  | 2 | **Pedestrian Flow Survey** |  |  |  |  |  |  |  |  |  |  |  |  |  |  |  |  |  |  |  |
|  | 7 | **Paint Samples** |  |  | 2020-09-07 | 2020-10-16 |  |  |  |  |  |  |  |  |  |  |  |  |  |  |  |
| A63980 |  | Compile Draft Report |  | 10d | 2020-09-07 | 2020-09-18 | A67750 |  |  |  |  | 103d | 0d |  | A02 5 Day Workweek (BH as Work & Xmas as Non-Work) | Reports | Paint Sample |  |  |  |  |
| A63990 |  | Designers Review Draft Report |  | 10d | 2020-09-21 | 2020-10-02 | A63980 |  |  |  |  | 103d | 0d |  | A02 5 Day Workweek (BH as Work & Xmas as Non-Work) | Reports | Paint Sample |  |  |  |  |
| A64000 |  | Compile Final Report |  | 10d | 2020-10-05 | 2020-10-16 | A63990 |  |  |  |  | 103d | 0d |  | A02 5 Day Workweek (BH as Work & Xmas as Non-Work) | Reports | Paint Sample |  |  |  |  |
| A64010 |  | Final Report Complete & Submitted To Design | milestone | 0d | 2020-10-16 | 2020-10-16 | A64000 |  |  |  |  | 103d | 0d |  | A02 5 Day Workweek (BH as Work & Xmas as Non-Work) | Reports | Paint Sample |  |  |  |  |
|  | 8 | **Asbestos Survey** |  |  | 2020-08-10 | 2020-09-18 |  |  |  |  |  |  |  |  |  |  |  |  |  |  |  |
| A69100 |  | Compile Draft Report |  | 10d | 2020-08-10 | 2020-08-21 | A62550 |  |  |  |  | 123d | 0d |  | A02 5 Day Workweek (BH as Work & Xmas as Non-Work) | Reports | Drainage |  |  |  |  |
| A69110 |  | Designers Review Draft Report |  | 10d | 2020-08-24 | 2020-09-04 | A69100 |  |  |  |  | 123d | 0d |  | A02 5 Day Workweek (BH as Work & Xmas as Non-Work) | Reports | Drainage | Design |  |  |  |
| A69120 |  | Compile Final Report |  | 10d | 2020-09-07 | 2020-09-18 | A69110 |  |  |  |  | 123d | 0d |  | A02 5 Day Workweek (BH as Work & Xmas as Non-Work) | Reports | Drainage |  |  |  |  |
| A69130 |  | Final Report Complete & Submitted To Design | milestone | 0d | 2020-09-18 | 2020-09-18 | A69120 |  |  |  |  | 123d | 0d |  | A02 5 Day Workweek (BH as Work & Xmas as Non-Work) | Reports | Drainage |  |  |  |  |
|  | 4 | **Topographical Survey** |  |  | 2020-05-25 | 2020-11-20 |  |  |  |  |  |  |  |  |  |  |  |  |  |  |  |
|  | 1 | **Track Survey - 34m60ch - 35m20ch - Fence to Fence Where Possible inc. Platforms** |  |  | 2020-05-25 | 2020-08-07 |  |  |  |  |  |  |  |  |  |  |  |  |  |  |  |
| A65830 |  | Rail String & Gauging Data Release |  | 13d | 2020-05-25 A | 2020-06-30 A |  | 100% |  | 2020-05-25 | 2020-06-10 |  |  | start on or after 2020-05-18 | A03 5 Day Workweek (BH & Xmas as Work) | Reports | Topographical | Bridgeway | matt | Matt Levine |  |
| A65840 |  | Lineside Detail Data & SCO Gauging File Release | milestone | 0d | 2020-06-30 A | 2020-06-30 A | A65830 | 100% |  | 2020-07-15 | 2020-07-15 |  |  |  | A03 5 Day Workweek (BH & Xmas as Work) | Reports | Topographical | Bridgeway | matt | Matt Levine |  |
| A65850 |  | Designers Review Draft Topographical Survey Report |  | 10d | 2020-07-01 A | 2020-07-17 | A65840 |  | 10d | 2020-07-16 | 2020-07-29 | 220d | 0d |  | A03 5 Day Workweek (BH & Xmas as Work) | Reports | Topographical | Design Team | matt | Matt Levine |  |
| A65860 |  | Compile Final Topographical Survey Wireframe |  | 9d | 2020-07-20 | 2020-07-30 | A65850 |  |  |  |  | 220d | 0d | start on or after 2020-06-01 | A03 5 Day Workweek (BH & Xmas as Work) | Reports | Topographical | Bridgeway | matt | Matt Levine |  |
| A65870 |  | Completion Of Survey Deliverables | milestone | 0d | 2020-07-30 | 2020-07-30 | A65860 |  |  |  |  | 220d | 0d |  | A03 5 Day Workweek (BH & Xmas as Work) | Reports | Topographical | Bridgeway | matt | Matt Levine | GIVE |
| A65880 |  | Resolution Of CRS Comments & Submittal Of Final Survey Deliverables |  | 6d | 2020-07-31 | 2020-08-07 | A65870 |  |  |  |  | 220d | 82d |  | A03 5 Day Workweek (BH & Xmas as Work) | Reports | Topographical | Bridgeway | matt | Matt Levine |  |
|  | 2 | **Batley Station On & Off Track Survey & MDL1/27, MDL1/28, MDL1/29** |  |  | 2020-06-01 | 2020-09-15 |  |  |  |  |  |  |  |  |  |  |  |  |  |  |  |
| A69660 |  | Topographical Survey Data Release |  | 12d | 2020-06-01 A | 2020-07-31 |  |  | 20d | 2020-06-01 | 2020-06-16 | 158d | 0d | start on or after 2020-06-01 | A03 5 Day Workweek (BH & Xmas as Work) | Reports | Topographical | Bridgeway | matt | Matt Levine |  |
| A69670 |  | Designers Review Draft Topographical Survey Report |  | 10d | 2020-08-03 | 2020-08-14 | A69660 |  |  |  |  | 193d | 0d |  | A03 5 Day Workweek (BH & Xmas as Work) | Reports | Topographical | Design Team | matt | Matt Levine |  |
| A69680 |  | Compile Final Topographical Survey Wireframe |  | 12d | 2020-08-17 | 2020-09-01 | A69670 |  |  |  |  | 193d | 0d |  | A03 5 Day Workweek (BH & Xmas as Work) | Reports | Topographical | Bridgeway | matt | Matt Levine |  |
| A69690 |  | Completion Of Survey Deliverables | milestone | 0d | 2020-09-01 | 2020-09-01 | A69680 |  |  |  |  | 193d | 0d |  | A03 5 Day Workweek (BH & Xmas as Work) | Reports | Topographical | Bridgeway | matt | Matt Levine | GIVE |
| A69700 |  | Resolution Of CRS Comments & Submittal Of Final Survey Deliverables |  | 10d | 2020-09-02 | 2020-09-15 | A69690 |  |  |  |  | 193d | 55d |  | A03 5 Day Workweek (BH & Xmas as Work) | Reports | Topographical | Bridgeway | matt | Matt Levine |  |

Notes:
- A65830: Comments: loss of midweek 52 & and no access midweek 5. 6 week delay.
- A65850: Comments: 10.07 - Review ongoing, large number of comments
- A69660: Comments: 10.07 - Off track processing delayed due to contractor resource shortage.

| ID | WBS | Activity | Type | Duration | Start | Finish | Predecessors | Total float | Free float | Constraint | Calendar | Company Responsible | Location / ELR | Week Number | Responsibility | Discipline | GI Reference Number |
| --- | --- | --- | --- | --- | --- | --- | --- | --- | --- | --- | --- | --- | --- | --- | --- | --- | --- |
|  | 3 | **Track Survey 35m 20ch to 35m 70ch** |  |  | 2020-08-03 | 2020-10-02 |  |  |  |  |  |  |  |  |  |  |  |
| A69710 |  | Rail String & Gauging Data Release |  | 13d | 2020-08-03 | 2020-08-19 |  | 180d | 0d | start on or after 2020-08-03 | A03 5 Day Workweek (BH & Xmas as Work) | Bridgeway | matt | Reports | Matt Levine | Topographical |  |
| A69720 |  | Lineside Detail Data & SCO Gauging File Release |  | 1d | 2020-08-20 | 2020-08-20 | A69710 | 180d | 0d |  | A03 5 Day Workweek (BH & Xmas as Work) | Bridgeway | matt | Reports | Matt Levine | Topographical |  |
| A69730 |  | Designers Review Draft Topographical Survey Report |  | 10d | 2020-08-21 | 2020-09-03 | A69720 | 180d | 0d |  | A03 5 Day Workweek (BH & Xmas as Work) | Design Team | matt | Reports | Matt Levine | Topographical |  |
| A69740 |  | Compile Final Topographical Survey Wireframe |  | 11d | 2020-09-04 | 2020-09-18 | A69730 | 180d | 0d |  | A03 5 Day Workweek (BH & Xmas as Work) | Bridgeway | matt | Reports | Matt Levine | Topographical |  |
| A69750 |  | Completion Of Survey Deliverables | milestone | 0d | 2020-09-18 | 2020-09-18 | A69740 | 180d | 0d |  | A03 5 Day Workweek (BH & Xmas as Work) | Bridgeway | matt | Reports | Matt Levine | Topographical | GIVE |
| A69760 |  | Resolution Of CRS Comments & Submittal Of Final Survey Deliverables |  | 10d | 2020-09-21 | 2020-10-02 | A69750 | 180d | 42d |  | A03 5 Day Workweek (BH & Xmas as Work) | Bridgeway | matt | Reports | Matt Levine | Topographical |  |
|  | 4 | **Track Survey 35m 70ch to 36m 20ch inc. MDL1/34, MDL1/35** |  |  | 2020-08-03 | 2020-10-02 |  |  |  |  |  |  |  |  |  |  |  |
| A69770 |  | Rail String & Gauging Data Release |  | 13d | 2020-08-03 | 2020-08-19 |  | 180d | 0d | start on or after 2020-08-03 | A03 5 Day Workweek (BH & Xmas as Work) | Bridgeway | matt | Reports | Matt Levine | Topographical |  |
| A69780 |  | Lineside Detail Data & SCO Gauging File Release |  | 1d | 2020-08-20 | 2020-08-20 | A69770 | 180d | 0d |  | A03 5 Day Workweek (BH & Xmas as Work) | Bridgeway | matt | Reports | Matt Levine | Topographical |  |
| A69790 |  | Designers Review Draft Topographical Survey Report |  | 10d | 2020-08-21 | 2020-09-03 | A69780 | 180d | 0d |  | A03 5 Day Workweek (BH & Xmas as Work) | Design Team | matt | Reports | Matt Levine | Topographical |  |
| A69800 |  | Compile Final Topographical Survey Wireframe |  | 11d | 2020-09-04 | 2020-09-18 | A69790 | 180d | 0d |  | A03 5 Day Workweek (BH & Xmas as Work) | Bridgeway | matt | Reports | Matt Levine | Topographical |  |
| A69810 |  | Completion Of Survey Deliverables | milestone | 0d | 2020-09-18 | 2020-09-18 | A69800 | 180d | 0d |  | A03 5 Day Workweek (BH & Xmas as Work) | Bridgeway | matt | Reports | Matt Levine | Topographical | GIVE |
| A69820 |  | Resolution Of CRS Comments & Submittal Of Final Survey Deliverables |  | 10d | 2020-09-21 | 2020-10-02 | A69810 | 180d | 42d |  | A03 5 Day Workweek (BH & Xmas as Work) | Bridgeway | matt | Reports | Matt Levine | Topographical |  |
|  | 5 | **Morley Tunnel Survey 36m 20ch to 38m 20ch** |  |  | 2020-09-07 | 2020-11-20 |  |  |  |  |  |  |  |  |  |  |  |
| A69830 |  | Rail String & Gauging Data Release |  | 23d | 2020-09-07 | 2020-10-07 |  | 145d | 0d | start on or after 2020-09-07 | A03 5 Day Workweek (BH & Xmas as Work) | Bridgeway | matt | Reports | Matt Levine | Topographical |  |
| A69840 |  | Lineside Detail Data & SCO Gauging File Release |  | 1d | 2020-10-08 | 2020-10-08 | A69830 | 145d | 0d |  | A03 5 Day Workweek (BH & Xmas as Work) | Bridgeway | matt | Reports | Matt Levine | Topographical |  |
| A69850 |  | Designers Review Draft Topographical Survey Report |  | 10d | 2020-10-09 | 2020-10-22 | A69840 | 145d | 0d |  | A03 5 Day Workweek (BH & Xmas as Work) | Design Team | matt | Reports | Matt Levine | Topographical |  |
| A69860 |  | Compile Final Topographical Survey Wireframe |  | 11d | 2020-10-23 | 2020-11-06 | A69850 | 145d | 0d |  | A03 5 Day Workweek (BH & Xmas as Work) | Bridgeway | matt | Reports | Matt Levine | Topographical |  |
| A69870 |  | Completion Of Survey Deliverables | milestone | 0d | 2020-11-06 | 2020-11-06 | A69860 | 145d | 0d |  | A03 5 Day Workweek (BH & Xmas as Work) | Bridgeway | matt | Reports | Matt Levine | Topographical | GIVE |
| A69880 |  | Resolution Of CRS Comments & Submittal Of Final Survey Deliverables |  | 10d | 2020-11-09 | 2020-11-20 | A69870 | 145d | 7d |  | A03 5 Day Workweek (BH & Xmas as Work) | Bridgeway | matt | Reports | Matt Levine | Topographical |  |
|  | 2 | **Tunnels** |  |  | 2020-07-13 | 2020-11-27 |  |  |  |  |  |  |  |  |  |  |  |
|  | 4 | **Morley Tunnel** |  |  | 2020-07-13 | 2020-11-27 |  |  |  |  |  |  |  |  |  |  |  |
|  | 1 | **Coring** |  |  | 2020-10-19 | 2020-11-27 |  |  |  |  |  |  |  |  |  |  |  |
| A64020 |  | Compile Draft Report |  | 10d | 2020-10-19 | 2020-10-30 | A62090, A62100, A62110, A62120, A62130, A62140, A62150, A62160, A62170, A62180 | 140d | 0d |  | A02 5 Day Workweek (BH as Work & Xmas as Non-Work) |  |  | Reports |  | Coring |  |
| A64030 |  | Designers Review Draft Report |  | 10d | 2020-11-02 | 2020-11-13 | A64020 | 140d | 0d |  | A02 5 Day Workweek (BH as Work & Xmas as Non-Work) |  |  | Reports |  | Coring |  |
| A64040 |  | Compile Final Report |  | 10d | 2020-11-16 | 2020-11-27 | A64030 | 140d | 0d |  | A02 5 Day Workweek (BH as Work & Xmas as Non-Work) |  |  | Reports |  | Coring |  |
| A64050 |  | Final Report Complete & Submitted To Design | milestone | 0d | 2020-11-27 | 2020-11-27 | A64040 | 140d | 0d |  | A02 5 Day Workweek (BH as Work & Xmas as Non-Work) |  |  | Reports |  | Coring |  |

Notes:
- A69710: Comments: 10.07 - Due to access restrictions week 11, track & gauging planned for week 17 MW nights. TBC upon completion week 17.
- A69770: Comments: 10.07 - Due to access restrictions week 11, track & gauging planned for week 17 MW nights. TBC upon completion week 17.
- A69830: Comments: 10.07 - loss of midweek access 52, 5, 11 & 17. New date to be proposed once maintainance regime is understood.

| ID | WBS | Activity | Type | Duration | Start | Finish | Predecessors | Total float | Free float | Calendar | Week Number | Discipline | Company Responsible | 04.2 Progress Note |
| --- | --- | --- | --- | --- | --- | --- | --- | --- | --- | --- | --- | --- | --- | --- |
|  | 2 | **Trial Pits** |  |  | 2020-07-13 | 2020-08-21 |  |  |  |  |  |  |  |  |
| A64060 |  | Compile Draft Report |  | 10d | 2020-07-13 | 2020-07-24 | A62200, A62230, A62250, A62260, A62270, A62280, A62290, A62300, A62310, A62320, A62330, A62340, A62350, A62360, A62370, A62380, A62190, A62210, A62220, A62240 | 210d | 0d | A02 5 Day Workweek (BH as Work & Xmas as Non-Work) | Reports | Trial Pit |  |  |
| A64070 |  | Designers Review Draft Report |  | 10d | 2020-07-27 | 2020-08-07 | A64060 | 210d | 0d | A02 5 Day Workweek (BH as Work & Xmas as Non-Work) | Reports | Trial Pit |  |  |
| A64080 |  | Compile Final Report |  | 10d | 2020-08-10 | 2020-08-21 | A64070 | 210d | 0d | A02 5 Day Workweek (BH as Work & Xmas as Non-Work) | Reports | Trial Pit |  |  |
| A64090 |  | Final Report Complete & Submitted To Design | milestone | 0d | 2020-08-21 | 2020-08-21 | A64080 | 210d | 0d | A02 5 Day Workweek (BH as Work & Xmas as Non-Work) | Reports | Trial Pit |  |  |
|  | 3 | **Drainage (Tunnel Bore & Portals)** |  |  | 2020-10-05 | 2020-11-13 |  |  |  |  |  |  |  |  |
| A66320 |  | Compile Draft Report |  | 10d | 2020-10-05 | 2020-10-16 | A66180, A66170, A66160, A66150, A66140, A66310, A66130, A66120, A66280, A66270, A66260, A65970, A65960, A65950, A65990, A65980, A66010, A66000, A75700, A75710, A75720 | 150d | 0d | A02 5 Day Workweek (BH as Work & Xmas as Non-Work) | Reports | Drainage | Lanes4Drains |  |
| A66340 |  | Designers Review Draft Report |  | 10d | 2020-10-19 | 2020-10-30 | A66320 | 150d | 0d | A02 5 Day Workweek (BH as Work & Xmas as Non-Work) | Reports | Drainage | Design |  |
| A66330 |  | Compile Final Report |  | 10d | 2020-11-02 | 2020-11-13 | A66340 | 150d | 0d | A02 5 Day Workweek (BH as Work & Xmas as Non-Work) | Reports | Drainage | Lanes4Drains |  |
| A66350 |  | Final Report Complete & Submitted To Design | milestone | 0d | 2020-11-13 | 2020-11-13 | A66330 | 150d | 0d | A02 5 Day Workweek (BH as Work & Xmas as Non-Work) | Reports | Drainage | Lanes4Drains |  |
|  | 4 | **Geophysics** |  |  | 2020-08-24 | 2020-10-02 |  |  |  |  |  |  |  |  |
| A69060 |  | Compile Draft Report |  | 10d | 2020-08-24 | 2020-09-04 | A62570, A62580 | 95d | 0d | A02 5 Day Workweek (BH as Work & Xmas as Non-Work) | Reports | Drainage |  |  |
| A69070 |  | Designers Review Draft Report |  | 10d | 2020-09-07 | 2020-09-18 | A69060 | 95d | 0d | A02 5 Day Workweek (BH as Work & Xmas as Non-Work) | Reports | Drainage | Design |  |
| A69080 |  | Compile Final Report |  | 10d | 2020-09-21 | 2020-10-02 | A69070 | 95d | 0d | A02 5 Day Workweek (BH as Work & Xmas as Non-Work) | Reports | Drainage |  |  |
| A69090 |  | Final Report Complete & Submitted To Design | milestone | 0d | 2020-10-02 | 2020-10-02 | A69080 | 95d | 0d | A02 5 Day Workweek (BH as Work & Xmas as Non-Work) | Reports | Drainage |  |  |
|  | 5 | **Geophysics (36m75ch - 37m10ch)** |  |  |  |  |  |  |  |  |  |  |  |  |
|  | 3 | **Drainage** |  |  | 2020-10-05 | 2020-11-13 |  |  |  |  |  |  |  |  |
| A68720 |  | Compile Draft Report |  | 10d | 2020-10-05 | 2020-10-16 | A65930, A65940, A66100, A66110, A66250, A75690, A81340 | 150d | 0d | A02 5 Day Workweek (BH as Work & Xmas as Non-Work) | Reports | Drainage | Lanes4Drains |  |
| A68730 |  | Designers Review Draft Report |  | 10d | 2020-10-19 | 2020-10-30 | A68720 | 150d | 0d | A02 5 Day Workweek (BH as Work & Xmas as Non-Work) | Reports | Drainage | Design |  |
| A68740 |  | Compile Final Report |  | 10d | 2020-11-02 | 2020-11-13 | A68730 | 150d | 0d | A02 5 Day Workweek (BH as Work & Xmas as Non-Work) | Reports | Drainage | Lanes4Drains |  |
| A68750 |  | Final Report Complete & Submitted To Design | milestone | 0d | 2020-11-13 | 2020-11-13 | A68740 | 150d | 0d | A02 5 Day Workweek (BH as Work & Xmas as Non-Work) | Reports | Drainage | Lanes4Drains |  |
|  | 12 | **Survey Factual Reports - SECTION C - 39m 62ch to 41m 78ch** |  |  | 2020-05-06 | 2020-12-18 |  |  |  |  |  |  |  |  |
|  | 5 | **Geotechnical** |  |  | 2020-05-06 | 2020-12-01 |  |  |  |  |  |  |  |  |
|  | 1 | **ABS** |  |  | 2020-09-07 | 2020-10-16 |  |  |  |  |  |  |  |  |
| A62820 |  | Compile Draft Report |  | 10d | 2020-09-07 | 2020-09-18 | A59710, A59720, A59850, A59860, A59500, A59510, A59520, A59580, A59590, A59600, A59610, A59650, A59660, A59670, A59680, A59700, A59570, A59560, A59550, A59540, A59530, A59480, A60160, A60150, A60140, A60130, A59740, A59730, A59490, A59840, A59830, A59770, A59640, A59630, A59620, A59470, A59450, A59440, A60120, A60110, A60090, A60080, A60070, A60060, A60040, A60020, A59990, A59920, A59900, A59880, A59980, A59970, A59960, A59950, A59940, A59930, A60050, A60030, A60000, A59910, A59890, A59870, A67960, A67970, A67980, A67990, A68000, A75940, A75990, A76000, A76010, A76020 | 32d | 0d | A02 5 Day Workweek (BH as Work & Xmas as Non-Work) | Reports | ABS |  | SURVEY |
| A62830 |  | Designers Review Draft Report |  | 10d | 2020-09-21 | 2020-10-02 | A62820 | 32d | 0d | A02 5 Day Workweek (BH as Work & Xmas as Non-Work) | Reports | ABS |  | SURVEY |
| A62840 |  | Compile Final Report |  | 10d | 2020-10-05 | 2020-10-16 | A62830 | 32d | 0d | A02 5 Day Workweek (BH as Work & Xmas as Non-Work) | Reports | ABS |  | SURVEY |
| A62850 |  | Final Report Complete & Submitted To Design | milestone | 0d | 2020-10-16 | 2020-10-16 | A62840 | 32d | 0d | A02 5 Day Workweek (BH as Work & Xmas as Non-Work) | Reports | ABS |  |  |

| ID | WBS | Activity | Type | Duration | Start | Finish | Predecessors | Remaining | Planned start | Planned finish | Total float | Free float | Calendar | Machines Required | Week Number | Discipline | 04.2 Progress Note |
| --- | --- | --- | --- | --- | --- | --- | --- | --- | --- | --- | --- | --- | --- | --- | --- | --- | --- |
|  | 2 | **Trial Pits** |  |  | 2020-05-06 | 2020-08-14 |  |  |  |  |  |  |  |  |  |  |  |
| A62860 |  | Compile Draft Report |  | 10d | 2020-05-06 A | 2020-07-17 | A60430, A60440, A60450, A60460, A60470, A60480, A60490, A60500, A60180, A60190 | 10d | 2020-05-11 | 2020-05-22 | 45d | 0d | A02 5 Day Workweek (BH as Work & Xmas as Non-Work) | A | Reports | Trial Pit |  |
| A62870 |  | Designers Review Draft Report |  | 10d | 2020-07-20 | 2020-07-31 | A62860 |  |  |  | 45d | 0d | A02 5 Day Workweek (BH as Work & Xmas as Non-Work) |  | Reports | Trial Pit |  |
| A62880 |  | Compile Final Report |  | 10d | 2020-08-03 | 2020-08-14 | A62870 |  |  |  | 45d | 0d | A02 5 Day Workweek (BH as Work & Xmas as Non-Work) |  | Reports | Trial Pit |  |
| A62890 |  | Final Report Complete & Submitted To Design | milestone | 0d | 2020-08-14 | 2020-08-14 | A62880 |  |  |  | 45d | 0d | A02 5 Day Workweek (BH as Work & Xmas as Non-Work) |  | Reports | Trial Pit |  |
|  | 3 | **Window Samples** |  |  | 2020-10-21 | 2020-12-01 |  |  |  |  |  |  |  |  |  |  |  |
| A62900 |  | Compile Draft Report |  | 10d | 2020-10-21 | 2020-11-03 | A60200, A60520, A60210, A60530, A60510, A60560, A60540, A59820, A60010, A59750, A59690, A60100, A59780, A59760, A60170, A59810, A59790, A59460, A59430 |  |  |  | 0d |  | A02 5 Day Workweek (BH as Work & Xmas as Non-Work) |  | Reports | Window Sample |  |
| A62910 |  | Designers Review Draft Report |  | 10d | 2020-11-04 | 2020-11-17 | A62900 |  |  |  | 0d |  | A02 5 Day Workweek (BH as Work & Xmas as Non-Work) |  | Reports | Window Sample |  |
| A62920 |  | Compile Final Report |  | 10d | 2020-11-18 | 2020-12-01 | A62910 |  |  |  | 0d |  | A02 5 Day Workweek (BH as Work & Xmas as Non-Work) |  | Reports | Window Sample |  |
| A62930 |  | Final Report Complete & Submitted To Design | milestone | 0d | 2020-12-01 | 2020-12-01 | A62920 |  |  |  | 0d |  | A02 5 Day Workweek (BH as Work & Xmas as Non-Work) |  | Reports | Window Sample | SURVEY |
|  | 4 | **Structures** |  |  | 2020-05-11 | 2020-10-02 |  |  |  |  |  |  |  |  |  |  |  |
|  | 1 | **MDL1/40 - CHURWELL VIADUCT** |  |  | 2020-08-24 | 2020-10-02 |  |  |  |  |  |  |  |  |  |  |  |
|  | 1 | **Coring** |  |  | 2020-08-24 | 2020-10-02 |  |  |  |  |  |  |  |  |  |  |  |
| A63780 |  | Compile Draft Report |  | 10d | 2020-08-24 | 2020-09-04 | A61470, A61480, A61490, A61500, A61510, A61520, A61530, A61460 |  |  |  | 180d | 0d | A02 5 Day Workweek (BH as Work & Xmas as Non-Work) |  | Reports | Coring |  |
| A63790 |  | Designers Review Draft Report |  | 10d | 2020-09-07 | 2020-09-18 | A63780 |  |  |  | 180d | 0d | A02 5 Day Workweek (BH as Work & Xmas as Non-Work) |  | Reports | Coring |  |
| A63800 |  | Compile Final Report |  | 10d | 2020-09-21 | 2020-10-02 | A63790 |  |  |  | 180d | 0d | A02 5 Day Workweek (BH as Work & Xmas as Non-Work) |  | Reports | Coring |  |
| A63810 |  | Final Report Complete & Submitted To Design | milestone | 0d | 2020-10-02 | 2020-10-02 | A63800 |  |  |  | 180d | 0d | A02 5 Day Workweek (BH as Work & Xmas as Non-Work) |  | Reports | Coring |  |
|  | 2 | **MDL1/41 RETAINING WALL** |  |  | 2020-05-11 | 2020-08-21 |  |  |  |  |  |  |  |  |  |  |  |
|  | 3 | **Coring** |  |  | 2020-07-13 | 2020-08-21 |  |  |  |  |  |  |  |  |  |  |  |
| A68920 |  | Compile Draft Report |  | 10d | 2020-07-13 | 2020-07-24 | A67390, A67400, A67410, A67420, A67430, A67440, A67450, A67460, A67470, A67480, A67490, A67500, A67510, A67520, A67530, A67540, A67550, A67560, A67570, A67580 |  |  |  | 210d | 0d | A02 5 Day Workweek (BH as Work & Xmas as Non-Work) |  | Reports | Coring |  |
| A68930 |  | Designers Review Draft Report |  | 10d | 2020-07-27 | 2020-08-07 | A68920 |  |  |  | 210d | 0d | A02 5 Day Workweek (BH as Work & Xmas as Non-Work) |  | Reports | Coring |  |
| A68940 |  | Compile Final Report |  | 10d | 2020-08-10 | 2020-08-21 | A68930 |  |  |  | 210d | 0d | A02 5 Day Workweek (BH as Work & Xmas as Non-Work) |  | Reports | Coring |  |
| A68950 |  | Final Report Complete & Submitted To Design | milestone | 0d | 2020-08-21 | 2020-08-21 | A68940 |  |  |  | 210d | 30d | A02 5 Day Workweek (BH as Work & Xmas as Non-Work) |  | Reports | Coring |  |
|  | 2 | **Paint Sample** |  |  |  |  |  |  |  |  |  |  |  |  |  |  |  |
|  | 1 | **Trial Pits** |  |  | 2020-05-11 | 2020-08-14 |  |  |  |  |  |  |  |  |  |  |  |
| A63540 |  | Compile Draft Report |  | 10d | 2020-05-11 A | 2020-07-17 | A67710, A67720, A67730, A67740 | 10d | 2020-05-11 | 2020-05-22 | 215d | 0d | A02 5 Day Workweek (BH as Work & Xmas as Non-Work) | A | Reports | Trial Pit |  |
| A63550 |  | Designers Review Draft Report |  | 10d | 2020-07-20 | 2020-07-31 | A63540 |  |  |  | 215d | 0d | A02 5 Day Workweek (BH as Work & Xmas as Non-Work) |  | Reports | Trial Pit |  |
| A63560 |  | Compile Final Report |  | 10d | 2020-08-03 | 2020-08-14 | A63550 |  |  |  | 215d | 0d | A02 5 Day Workweek (BH as Work & Xmas as Non-Work) |  | Reports | Trial Pit |  |
| A63570 |  | Final Report Complete & Submitted To Design | milestone | 0d | 2020-08-14 | 2020-08-14 | A63560 |  |  |  | 215d | 0d | A02 5 Day Workweek (BH as Work & Xmas as Non-Work) |  | Reports | Trial Pit |  |

| ID | WBS | Activity | Type | Duration | Start | Finish | Predecessors | Total float | Free float | Calendar | Week Number | Discipline |
| --- | --- | --- | --- | --- | --- | --- | --- | --- | --- | --- | --- | --- |
|  | 6 | **MDL1/43 - GELDERD ROAD** |  |  | 2020-08-05 | 2020-09-15 |  |  |  |  |  |  |
|  | 1 | **Off-Track Drainage Inspection** |  |  | 2020-08-05 | 2020-09-15 |  |  |  |  |  |  |
| A69460 |  | Compile Draft Report |  | 10d | 2020-08-05 | 2020-08-18 | A61680, A81320 | 193d | 0d | A02 5 Day Workweek (BH as Work & Xmas as Non-Work) | Reports | Drainage |
| A69470 |  | Designers Review Draft Report |  | 10d | 2020-08-19 | 2020-09-01 | A69460 | 193d | 0d | A02 5 Day Workweek (BH as Work & Xmas as Non-Work) | Reports | Drainage |
| A69480 |  | Compile Final Report |  | 10d | 2020-09-02 | 2020-09-15 | A69470 | 193d | 0d | A02 5 Day Workweek (BH as Work & Xmas as Non-Work) | Reports | Drainage |
| A69490 |  | Final Report Complete & Submitted To Design | milestone | 0d | 2020-09-15 | 2020-09-15 | A69480 FF | 193d |  | A02 5 Day Workweek (BH as Work & Xmas as Non-Work) | Reports | Drainage |
|  | 3 | **MDL1/47 - WHITEHALL ROAD / DRAGON BRIDGE OB** |  |  | 2020-07-06 | 2020-10-02 |  |  |  |  |  |  |
|  | 1 | **Coring** |  |  | 2020-08-24 | 2020-10-02 |  |  |  |  |  |  |
| A63660 |  | Compile Draft Report |  | 10d | 2020-08-24 | 2020-09-04 | A60950, A60980, A60990, A61010, A61040, A61050, A61060, A61000, A60960, A60970, A61020, A61030 | 180d | 0d | A02 5 Day Workweek (BH as Work & Xmas as Non-Work) | Reports | Coring |
| A63670 |  | Designers Review Draft Report |  | 10d | 2020-09-07 | 2020-09-18 | A63660 | 180d | 0d | A02 5 Day Workweek (BH as Work & Xmas as Non-Work) | Reports | Coring |
| A63680 |  | Compile Final Report |  | 10d | 2020-09-21 | 2020-10-02 | A63670 | 180d | 0d | A02 5 Day Workweek (BH as Work & Xmas as Non-Work) | Reports | Coring |
| A63690 |  | Final Report Complete & Submitted To Design | milestone | 0d | 2020-10-02 | 2020-10-02 | A63680 | 180d | 0d | A02 5 Day Workweek (BH as Work & Xmas as Non-Work) | Reports | Coring |
|  | 2 | **Trial Holes** |  |  | 2020-07-06 | 2020-08-14 |  |  |  |  |  |  |
| A63620 |  | Compile Draft Report |  | 10d | 2020-07-06 | 2020-07-17 | A61260, A61270, A61240, A61250 | 215d | 0d | A02 5 Day Workweek (BH as Work & Xmas as Non-Work) | Reports | Trial Pit |
| A63630 |  | Designers Review Draft Report |  | 10d | 2020-07-20 | 2020-07-31 | A63620 | 215d | 0d | A02 5 Day Workweek (BH as Work & Xmas as Non-Work) | Reports | Trial Pit |
| A63640 |  | Compile Final Report |  | 10d | 2020-08-03 | 2020-08-14 | A63630 | 215d | 0d | A02 5 Day Workweek (BH as Work & Xmas as Non-Work) | Reports | Trial Pit |
| A63650 |  | Final Report Complete & Submitted To Design | milestone | 0d | 2020-08-14 | 2020-08-14 | A63640 | 215d | 0d | A02 5 Day Workweek (BH as Work & Xmas as Non-Work) | Reports | Trial Pit |
|  | 3 | **Off-Track Drainage Inspection** |  |  | 2020-08-10 | 2020-09-18 |  |  |  |  |  |  |
| A69500 |  | Compile Draft Report |  | 10d | 2020-08-10 | 2020-08-21 | A61690, A81330 | 190d | 0d | A02 5 Day Workweek (BH as Work & Xmas as Non-Work) | Reports | Coring |
| A69510 |  | Designers Review Draft Report |  | 10d | 2020-08-24 | 2020-09-04 | A69500 | 190d | 0d | A02 5 Day Workweek (BH as Work & Xmas as Non-Work) | Reports | Coring |
| A69520 |  | Compile Final Report |  | 10d | 2020-09-07 | 2020-09-18 | A69510 | 190d | 0d | A02 5 Day Workweek (BH as Work & Xmas as Non-Work) | Reports | Coring |
| A69530 |  | Final Report Complete & Submitted To Design | milestone | 0d | 2020-09-18 | 2020-09-18 | A69520 | 190d | 0d | A02 5 Day Workweek (BH as Work & Xmas as Non-Work) | Reports | Coring |
|  | 4 | **MDL1/51 - WALKERS FOOTBRIDGE, COPLEY OB** |  |  | 2020-08-10 | 2020-09-18 |  |  |  |  |  |  |
|  | 1 | **Paint Samples** |  |  | 2020-08-10 | 2020-09-18 |  |  |  |  |  |  |
| A63700 |  | Compile Draft Report |  | 10d | 2020-08-10 | 2020-08-21 | A61360 | 190d | 0d | A02 5 Day Workweek (BH as Work & Xmas as Non-Work) | Reports | Paint Sample |
| A63710 |  | Designers Review Draft Report |  | 10d | 2020-08-24 | 2020-09-04 | A63700 | 190d | 0d | A02 5 Day Workweek (BH as Work & Xmas as Non-Work) | Reports | Paint Sample |
| A63720 |  | Compile Final Report |  | 10d | 2020-09-07 | 2020-09-18 | A63710 | 190d | 0d | A02 5 Day Workweek (BH as Work & Xmas as Non-Work) | Reports | Paint Sample |
| A63730 |  | Final Report Complete & Submitted To Design | milestone | 0d | 2020-09-18 | 2020-09-18 | A63720 | 190d | 10d | A02 5 Day Workweek (BH as Work & Xmas as Non-Work) | Reports | Paint Sample |

| ID | WBS | Activity | Type | Duration | Start | Finish | Predecessors | Complete | Remaining | Planned start | Planned finish | Total float | Free float | Constraint | Calendar | Company Responsible | Location / ELR | Week Number | Weekend/Midweek | Responsibility | Discipline | GI Reference Number |
| --- | --- | --- | --- | --- | --- | --- | --- | --- | --- | --- | --- | --- | --- | --- | --- | --- | --- | --- | --- | --- | --- | --- |
|  | 9 | **Topographical Survey** |  |  | 2020-06-29 | 2020-12-18 |  |  |  |  |  |  |  |  |  |  |  |  |  |  |  |  |
|  | 4 | **Track Survey - 39m 60ch to 40m 30ch Churwell Viaduct** |  |  | 2020-06-29 | 2020-09-18 |  |  |  |  |  |  |  |  |  |  |  |  |  |  |  |  |
| A69960 |  | Rail String & Gauging Data Release |  | 10d | 2020-06-29 A | 2020-07-24 |  |  | 15d | 2020-06-22 | 2020-07-03 | 190d | 0d | start on or after 2020-06-22 | A03 5 Day Workweek (BH & Xmas as Work) | SEP | matt | Reports | Section C | Matt Levine | Topographical |  |
| A69970 |  | Lineside Detail Data & SCO Gauging File Release |  | 10d | 2020-07-27 | 2020-08-07 | A69960 |  |  |  |  | 190d | 0d |  | A03 5 Day Workweek (BH & Xmas as Work) | SEP | matt | Reports | Section C | Matt Levine | Topographical |  |
| A69980 |  | Designers Review Draft Topographical Survey Report |  | 10d | 2020-08-10 | 2020-08-21 | A69970 |  |  |  |  | 190d | 0d |  | A03 5 Day Workweek (BH & Xmas as Work) | Design Team | matt | Reports | Section C | Matt Levine | Topographical |  |
| A69990 |  | Compile Final Topographical Survey Wireframe |  | 10d | 2020-08-24 | 2020-09-04 | A69980 |  |  |  |  | 190d | 0d |  | A03 5 Day Workweek (BH & Xmas as Work) | SEP | matt | Reports | Section C | Matt Levine | Topographical |  |
| A70000 |  | Completion Of Survey Deliverables | milestone | 0d | 2020-09-04 | 2020-09-04 | A69990 |  |  |  |  | 190d | 0d |  | A03 5 Day Workweek (BH & Xmas as Work) | SEP | matt | Reports | Section C | Matt Levine | Topographical | GIVE |
| A70010 |  | Resolution Of CRS Comments & Submittal Of Final Survey Deliverables |  | 10d | 2020-09-07 | 2020-09-18 | A70000 |  |  |  |  | 190d |  |  | A03 5 Day Workweek (BH & Xmas as Work) | SEP | matt | Reports | Section C | Matt Levine | Topographical |  |
|  | 5 | **Off-Track Survey - MDL1/40 Churwell Viaduct** |  |  | 2020-07-20 | 2020-09-18 |  |  |  |  |  |  |  |  |  |  |  |  |  |  |  |  |
| A70030 |  | Topographical Survey Data Release |  | 15d | 2020-07-20 | 2020-08-07 |  |  |  |  |  | 190d | 0d | start on or after 2020-07-20 | A03 5 Day Workweek (BH & Xmas as Work) | SEP | matt | Reports | Section C | Matt Levine | Topographical |  |
| A70040 |  | Designers Review Draft Topographical Survey Report |  | 10d | 2020-08-10 | 2020-08-21 | A70030 |  |  |  |  | 190d | 0d |  | A03 5 Day Workweek (BH & Xmas as Work) | Design Team | matt | Reports | Section C | Matt Levine | Topographical |  |
| A70050 |  | Compile Final Topographical Survey Wireframe |  | 10d | 2020-08-24 | 2020-09-04 | A70040 |  |  |  |  | 190d | 0d |  | A03 5 Day Workweek (BH & Xmas as Work) | SEP | matt | Reports | Section C | Matt Levine | Topographical |  |
| A70060 |  | Completion Of Survey Deliverables | milestone | 0d | 2020-09-04 | 2020-09-04 | A70050 |  |  |  |  | 190d | 0d |  | A03 5 Day Workweek (BH & Xmas as Work) | SEP | matt | Reports | Section C | Matt Levine | Topographical | GIVE |
| A70070 |  | Resolution Of CRS Comments & Submittal Of Final Survey Deliverables |  | 10d | 2020-09-07 | 2020-09-18 | A70060 |  |  |  |  | 190d |  |  | A03 5 Day Workweek (BH & Xmas as Work) | SEP | matt | Reports | Section C | Matt Levine | Topographical |  |
|  | 6 | **Off-Track Survey - MDL1/41A Cottingley Footbridge** |  |  | 2020-07-17 | 2020-09-17 |  |  |  |  |  |  |  |  |  |  |  |  |  |  |  |  |
| A70090 |  | Topographical Survey Data Release |  | 15d | 2020-07-17 | 2020-08-06 |  |  |  |  |  | 191d | 0d | start on or after 2020-07-17 | A03 5 Day Workweek (BH & Xmas as Work) | SEP | matt | Reports | Section C | Matt Levine | Topographical |  |
| A70100 |  | Designers Review Draft Topographical Survey Report |  | 10d | 2020-08-07 | 2020-08-20 | A70090 |  |  |  |  | 191d | 0d |  | A03 5 Day Workweek (BH & Xmas as Work) | Design Team | matt | Reports | Section C | Matt Levine | Topographical |  |
| A70110 |  | Compile Final Topographical Survey Wireframe |  | 10d | 2020-08-21 | 2020-09-03 | A70100 |  |  |  |  | 191d | 0d |  | A03 5 Day Workweek (BH & Xmas as Work) | SEP | matt | Reports | Section C | Matt Levine | Topographical |  |
| A70120 |  | Completion Of Survey Deliverables | milestone | 0d | 2020-09-03 | 2020-09-03 | A70110 |  |  |  |  | 191d | 0d |  | A03 5 Day Workweek (BH & Xmas as Work) | SEP | matt | Reports | Section C | Matt Levine | Topographical | GIVE |
| A70130 |  | Resolution Of CRS Comments & Submittal Of Final Survey Deliverables |  | 10d | 2020-09-04 | 2020-09-17 | A70120 |  |  |  |  | 191d |  |  | A03 5 Day Workweek (BH & Xmas as Work) | SEP | matt | Reports | Section C | Matt Levine | Topographical |  |
|  | 7 | **Track Survey - 40m 30ch to 41m 10ch** |  |  | 2020-06-29 | 2020-09-04 |  |  |  |  |  |  |  |  |  |  |  |  |  |  |  |  |
| A70140 |  | Rail String & Gauging Data Release |  | 20d | 2020-06-29 A | 2020-07-24 |  | 25% | 15d |  |  | 200d | 0d | start on or after 2020-06-29 | A03 5 Day Workweek (BH & Xmas as Work) | SEP | matt | Reports | Section C | Matt Levine | Topographical |  |
| A70150 |  | Lineside Detail Data & SCO Gauging File Release | milestone | 0d | 2020-07-24 | 2020-07-24 | A70140 |  |  |  |  | 200d | 0d |  | A03 5 Day Workweek (BH & Xmas as Work) | SEP | matt | Reports | Section C | Matt Levine | Topographical |  |
| A70160 |  | Designers Review Draft Topographical Survey Report |  | 10d | 2020-07-27 | 2020-08-07 | A70150 |  |  |  |  | 200d | 0d |  | A03 5 Day Workweek (BH & Xmas as Work) | Design Team | matt | Reports | Section C | Matt Levine | Topographical |  |
| A70170 |  | Compile Final Topographical Survey Wireframe |  | 10d | 2020-08-10 | 2020-08-21 | A70160 |  |  |  |  | 200d | 0d |  | A03 5 Day Workweek (BH & Xmas as Work) | SEP | matt | Reports | Section C | Matt Levine | Topographical |  |
| A70180 |  | Completion Of Survey Deliverables | milestone | 0d | 2020-08-21 | 2020-08-21 | A70170 |  |  |  |  | 200d | 0d |  | A03 5 Day Workweek (BH & Xmas as Work) | SEP | matt | Reports | Section C | Matt Levine | Topographical | GIVE |
| A70190 |  | Resolution Of CRS Comments & Submittal Of Final Survey Deliverables |  | 10d | 2020-08-24 | 2020-09-04 | A70180 |  |  |  |  | 200d |  |  | A03 5 Day Workweek (BH & Xmas as Work) | SEP | matt | Reports | Section C | Matt Levine | Topographical |  |

Notes:
- A69960: Comments: 10.07 - Track survey delayed due to week 11 confliction with ASPRO works. Track survey completed week 13, processing 2 weeks behind.
- A70030: Comments: 10.07 - No movement on dates since last period
- A70090: Comments: 10.07 - No movement on dates since last period
- A70140: Comments: 10.07 - Track survey delayed due to week 11 confliction with ASPRO works. Track survey completed week 13, processing 2 weeks behind.

| ID | WBS | Activity | Type | Duration | Start | Finish | Predecessors | Remaining | Planned start | Planned finish | Total float | Free float | Constraint | Calendar | Company Responsible | Location / ELR | Week Number | Weekend/Midweek | Responsibility | Discipline | GI Reference Number |
| --- | --- | --- | --- | --- | --- | --- | --- | --- | --- | --- | --- | --- | --- | --- | --- | --- | --- | --- | --- | --- | --- |
|  | 8 | **Track Survey - 41m 10ch to 41m 40ch & Off Track - MDL1/47 Whitehall Road / Dragon bridge** |  |  | 2020-06-29 | 2020-09-04 |  |  |  |  |  |  |  |  |  |  |  |  |  |  |  |
| A69900 |  | Rail String & Gauging Data Release |  | 10d | 2020-06-29 A | 2020-07-24 |  | 15d | 2020-06-29 | 2020-07-10 | 200d | 0d | start on or after 2020-06-29 | A03 5 Day Workweek (BH & Xmas as Work) | SEP | matt | Reports | Section C | Matt Levine | Topographical |  |
| A69910 |  | Lineside Detail Data & SCO Gauging File Release | milestone | 0d | 2020-07-24 | 2020-07-24 | A69900 |  |  |  | 200d | 0d |  | A03 5 Day Workweek (BH & Xmas as Work) | SEP | matt | Reports | Section C | Matt Levine | Topographical |  |
| A69920 |  | Designers Review Draft Topographical Survey Report |  | 10d | 2020-07-27 | 2020-08-07 | A69910 |  |  |  | 200d | 0d |  | A03 5 Day Workweek (BH & Xmas as Work) | Design Team | matt | Reports | Section C | Matt Levine | Topographical |  |
| A69930 |  | Compile Final Topographical Survey Wireframe |  | 10d | 2020-08-10 | 2020-08-21 | A69920 |  |  |  | 200d | 0d |  | A03 5 Day Workweek (BH & Xmas as Work) | SEP | matt | Reports | Section C | Matt Levine | Topographical |  |
| A69940 |  | Completion Of Survey Deliverables | milestone | 0d | 2020-08-21 | 2020-08-21 | A69930 |  |  |  | 200d | 0d |  | A03 5 Day Workweek (BH & Xmas as Work) | SEP | matt | Reports | Section C | Matt Levine | Topographical | GIVE |
| A69950 |  | Resolution Of CRS Comments & Submittal Of Final Survey Deliverables |  | 10d | 2020-08-24 | 2020-09-04 | A69940 |  |  |  | 200d |  |  | A03 5 Day Workweek (BH & Xmas as Work) | SEP | matt | Reports | Section C | Matt Levine | Topographical |  |
|  | 1 | **Track Survey - MDL1/49 to DOL2/41** |  |  | 2020-10-12 | 2020-12-18 |  |  |  |  |  |  |  |  |  |  |  |  |  |  |  |
| A66790 |  | DOL Tertiary Control Report |  | 10d | 2020-10-12 | 2020-10-23 | A66560, A66570, A66580, A66590 |  |  |  | 125d | 0d | start on or after 2020-10-12 | A03 5 Day Workweek (BH & Xmas as Work) | SEP | matt | Reports | Section C | Matt Levine | Topographical |  |
| A66730 |  | Rail String & Gauging Data Release |  | 10d | 2020-10-26 | 2020-11-06 | A66790 |  |  |  | 125d | 0d |  | A03 5 Day Workweek (BH & Xmas as Work) | SEP | matt | Reports | Section C | Matt Levine | Topographical |  |
| A66740 |  | Lineside Detail Data & SCO Gauging File Release | milestone | 0d | 2020-11-06 | 2020-11-06 | A66730 |  |  |  | 125d | 0d |  | A03 5 Day Workweek (BH & Xmas as Work) | SEP | matt | Reports | Section C | Matt Levine | Topographical |  |
| A66750 |  | Designers Review Draft Topographical Survey Report |  | 10d | 2020-11-09 | 2020-11-20 | A66740 |  |  |  | 125d | 0d |  | A03 5 Day Workweek (BH & Xmas as Work) | Design Team | matt | Reports | Section C | Matt Levine | Topographical |  |
| A66760 |  | Compile Final Topographical Survey Wireframe |  | 10d | 2020-11-23 | 2020-12-04 | A66750 |  |  |  | 125d | 0d |  | A03 5 Day Workweek (BH & Xmas as Work) | SEP | matt | Reports | Section C | Matt Levine | Topographical |  |
| A66770 |  | Completion Of Survey Deliverables | milestone | 0d | 2020-12-04 | 2020-12-04 | A66760 |  |  |  | 125d | 0d |  | A03 5 Day Workweek (BH & Xmas as Work) | SEP | matt | Reports | Section C | Matt Levine | Topographical | GIVE |
| A66780 |  | Resolution Of CRS Comments & Submittal Of Final Survey Deliverables |  | 10d | 2020-12-07 | 2020-12-18 | A66770 |  |  |  | 125d | 0d |  | A03 5 Day Workweek (BH & Xmas as Work) | SEP | matt | Reports | Section C | Matt Levine | Topographical |  |
|  | 2 | **Off-Track Survey - MDL1/48 Search's Footbridge** |  |  | 2020-08-03 | 2020-10-02 |  |  |  |  |  |  |  |  |  |  |  |  |  |  |  |
| A70210 |  | Topographical Survey Data Release |  | 15d | 2020-08-03 | 2020-08-21 |  |  |  |  | 180d | 0d | start on or after 2020-08-03 | A03 5 Day Workweek (BH & Xmas as Work) | SEP | matt | Reports | Section C | Matt Levine | Topographical |  |
| A70220 |  | Designers Review Draft Topographical Survey Report |  | 10d | 2020-08-24 | 2020-09-04 | A70210 |  |  |  | 180d | 0d |  | A03 5 Day Workweek (BH & Xmas as Work) | Design Team | matt | Reports | Section C | Matt Levine | Topographical |  |
| A70230 |  | Compile Final Topographical Survey Wireframe |  | 10d | 2020-09-07 | 2020-09-18 | A70220 |  |  |  | 180d | 0d |  | A03 5 Day Workweek (BH & Xmas as Work) | SEP | matt | Reports | Section C | Matt Levine | Topographical |  |
| A70240 |  | Completion Of Survey Deliverables | milestone | 0d | 2020-09-18 | 2020-09-18 | A70230 |  |  |  | 180d | 0d |  | A03 5 Day Workweek (BH & Xmas as Work) | SEP | matt | Reports | Section C | Matt Levine | Topographical | GIVE |
| A70250 |  | Resolution Of CRS Comments & Submittal Of Final Survey Deliverables |  | 10d | 2020-09-21 | 2020-10-02 | A70240 |  |  |  | 180d |  |  | A03 5 Day Workweek (BH & Xmas as Work) | SEP | matt | Reports | Section C | Matt Levine | Topographical |  |
|  | 3 | **Track Survey - 41m40ch to 42m20ch** |  |  | 2020-10-05 | 2020-12-11 |  |  |  |  |  |  |  |  |  |  |  |  |  |  |  |
| A66670 |  | Rail String & Gauging Data Release |  | 10d | 2020-10-05 | 2020-10-16 | A66590, A66560, A66570, A66580 |  |  |  | 130d | 0d | start on or after 2020-10-05 | A03 5 Day Workweek (BH & Xmas as Work) | SEP | matt | Reports | Section C | Matt Levine | Topographical |  |
| A66680 |  | Lineside Detail Data & SCO Gauging File Release |  | 10d | 2020-10-19 | 2020-10-30 | A66670 |  |  |  | 130d | 0d |  | A03 5 Day Workweek (BH & Xmas as Work) | SEP | matt | Reports | Section C | Matt Levine | Topographical |  |
| A66690 |  | Designers Review Draft Topographical Survey Report |  | 10d | 2020-11-02 | 2020-11-13 | A66680 |  |  |  | 130d | 0d |  | A03 5 Day Workweek (BH & Xmas as Work) | Design Team | matt | Reports | Section C | Matt Levine | Topographical |  |
| A66700 |  | Compile Final Topographical Survey Wireframe |  | 10d | 2020-11-16 | 2020-11-27 | A66690 |  |  |  | 130d | 0d |  | A03 5 Day Workweek (BH & Xmas as Work) | SEP | matt | Reports | Section C | Matt Levine | Topographical |  |
| A66710 |  | Completion Of Survey Deliverables | milestone | 0d | 2020-11-27 | 2020-11-27 | A66700 |  |  |  | 130d | 0d |  | A03 5 Day Workweek (BH & Xmas as Work) | SEP | matt | Reports | Section C | Matt Levine | Topographical | GIVE |
| A66720 |  | Resolution Of CRS Comments & Submittal Of Final Survey Deliverables |  | 10d | 2020-11-30 | 2020-12-11 | A66710 |  |  |  | 130d | 5d |  | A03 5 Day Workweek (BH & Xmas as Work) | SEP | matt | Reports | Section C | Matt Levine | Topographical |  |

Notes:
- A69900: Comments: 10.07 - Track survey delayed due to week 11 confliction with ASPRO works. Track survey completed week 13, processing 2 weeks behind.
- A66790: Comments: 10.07 - delayed due to possession access issues week 10. 60% complete awaiting possession week 27 for 100% completion.
- A70210: Comments: 10.07 - No movement on dates since last period
- A66670: Comments: 10.07 - Possession required to install additional control from 42m to 42m 30ch. Track survey after that from 41m36ch to 41m74ch complete and being processed. 42m+ wasn't originally in scope, and the control in the area was not sufficient

| ID | WBS | Activity | Type | Duration | Start | Finish | Predecessors | Total float | Free float | Calendar | Company Responsible | Week Number | Discipline | user_text 1 |
| --- | --- | --- | --- | --- | --- | --- | --- | --- | --- | --- | --- | --- | --- | --- |
|  | 6 | **Drainage** |  |  | 2020-09-14 | 2020-10-23 |  |  |  |  |  |  |  |  |
| A66360 |  | Compile Draft Report |  | 10d | 2020-09-14 | 2020-09-25 | A66190, A66040, A66050, A66020, A66030, A66220, A66210, A66200, A66290, A66300, A75730, A75740 | 35d | 0d | A02 5 Day Workweek (BH as Work & Xmas as Non-Work) | Lanes4Drains | Reports | Drainage |  |
| A66380 |  | Designers Review Draft Report |  | 10d | 2020-09-28 | 2020-10-09 | A66360 | 35d | 0d | A02 5 Day Workweek (BH as Work & Xmas as Non-Work) | Design | Reports | Drainage |  |
| A66370 |  | Compile Final Report |  | 10d | 2020-10-12 | 2020-10-23 | A66380 | 35d | 0d | A02 5 Day Workweek (BH as Work & Xmas as Non-Work) | Lanes4Drains | Reports | Drainage |  |
| A66390 |  | Final Report Complete & Submitted To Design | milestone | 0d | 2020-10-23 | 2020-10-23 | A66370 | 35d | 0d | A02 5 Day Workweek (BH as Work & Xmas as Non-Work) | Lanes4Drains | Reports | Drainage |  |
|  | 1 | **Survey Factual Reports - FULL W4 MILEAGE - 33m 42ch to 41m 78ch** |  |  | 2020-05-25 | 2021-06-11 |  |  |  |  |  |  |  |  |
|  | 1 | **OLE** |  |  | 2020-08-10 | 2021-06-11 |  |  |  |  |  |  |  |  |
|  | 2 | **OLE Trial Holes *PROVISIONAL*** |  |  | 2021-05-03 | 2021-06-11 |  |  |  |  |  |  |  |  |
| A68980 |  | Compile Draft Report |  | 10d | 2021-05-03 | 2021-05-14 | A68970 | 0d |  | A02 5 Day Workweek (BH as Work & Xmas as Non-Work) |  | Reports | OLE Trial Hole | 11th Jan |
| A68990 |  | Designers Review Draft Report |  | 10d | 2021-05-17 | 2021-05-28 | A68980 | 0d |  | A02 5 Day Workweek (BH as Work & Xmas as Non-Work) |  | Reports | OLE Trial Hole |  |
| A69000 |  | Compile Final Report |  | 10d | 2021-05-31 | 2021-06-11 | A68990 | 0d |  | A02 5 Day Workweek (BH as Work & Xmas as Non-Work) |  | Reports | OLE Trial Hole |  |
| A69010 |  | Final Report Complete & Submitted To Design | milestone | 0d | 2021-06-11 | 2021-06-11 | A69000 | 0d |  | A02 5 Day Workweek (BH as Work & Xmas as Non-Work) |  | Reports | OLE Trial Hole |  |
|  | 1 | **Powerline Crossing / Heights & Stagger / Bonding** |  |  | 2020-08-10 | 2020-09-18 |  |  |  |  |  |  |  |  |
| A69020 |  | Compile Draft Report |  | 10d | 2020-08-10 | 2020-08-21 | A62590, A62610, A62600, A62620, A62630, A62640, A62650 | 187d | 0d | A02 5 Day Workweek (BH as Work & Xmas as Non-Work) |  | Reports | OLE Initiatives | 11th Jan |
| A69030 |  | Designers Review Draft Report |  | 10d | 2020-08-24 | 2020-09-04 | A69020 | 187d | 0d | A02 5 Day Workweek (BH as Work & Xmas as Non-Work) |  | Reports | OLE Initiatives |  |
| A69040 |  | Compile Final Report |  | 10d | 2020-09-07 | 2020-09-18 | A69030 | 187d | 0d | A02 5 Day Workweek (BH as Work & Xmas as Non-Work) |  | Reports | OLE Initiatives |  |
| A69050 |  | Final Report Complete & Submitted To Design | milestone | 0d | 2020-09-18 | 2020-09-18 | A69040 | 187d | 0d | A02 5 Day Workweek (BH as Work & Xmas as Non-Work) |  | Reports | OLE Initiatives |  |
|  | Geotech TBI | **Gauging Surveys** |  |  | 2020-07-06 | 2020-08-14 |  |  |  |  |  |  |  |  |
| A70590 |  | Compile Draft Report |  | 10d | 2020-07-06 | 2020-07-17 | A70420 | 73d | 0d | A02 5 Day Workweek (BH as Work & Xmas as Non-Work) |  | Reports | Drainage |  |
| A70600 |  | Designers Review Draft Report |  | 10d | 2020-07-20 | 2020-07-31 | A70590 | 73d | 0d | A02 5 Day Workweek (BH as Work & Xmas as Non-Work) | Design | Reports | Drainage |  |
| A70610 |  | Compile Final Report |  | 10d | 2020-08-03 | 2020-08-14 | A70600 | 73d | 0d | A02 5 Day Workweek (BH as Work & Xmas as Non-Work) |  | Reports | Drainage |  |
| A70620 |  | Final Report Complete & Submitted To Design | milestone | 0d | 2020-08-14 | 2020-08-14 | A70610 | 73d | 0d | A02 5 Day Workweek (BH as Work & Xmas as Non-Work) |  | Reports | Drainage |  |
|  | 2 | **Pedestrian Flow Surveys** |  |  | 2020-07-06 | 2020-08-14 |  |  |  |  |  |  |  |  |
| A70550 |  | Compile Draft Report |  | 10d | 2020-07-06 | 2020-07-17 | A70400 | 191d | 0d | A02 5 Day Workweek (BH as Work & Xmas as Non-Work) |  | Reports | Drainage |  |
| A70560 |  | Designers Review Draft Report |  | 10d | 2020-07-20 | 2020-07-31 | A70550 | 191d | 0d | A02 5 Day Workweek (BH as Work & Xmas as Non-Work) | Design | Reports | Drainage |  |
| A70570 |  | Compile Final Report |  | 10d | 2020-08-03 | 2020-08-14 | A70560 | 191d | 0d | A02 5 Day Workweek (BH as Work & Xmas as Non-Work) |  | Reports | Drainage |  |
| A70580 |  | Final Report Complete & Submitted To Design | milestone | 0d | 2020-08-14 | 2020-08-14 | A70570 | 191d | 0d | A02 5 Day Workweek (BH as Work & Xmas as Non-Work) |  | Reports | Drainage |  |

| ID | WBS | Activity | Type | Duration | Start | Finish | Predecessors | Remaining | Planned start | Planned finish | Total float | Free float | Calendar | Week Number | Discipline | Company Responsible |
| --- | --- | --- | --- | --- | --- | --- | --- | --- | --- | --- | --- | --- | --- | --- | --- | --- |
|  | 8 | **Off-Track Culvert Surveys** |  |  | 2020-07-20 | 2020-08-28 |  |  |  |  |  |  |  |  |  |  |
| A70510 |  | Compile Draft Report |  | 10d | 2020-07-20 | 2020-07-31 | A70380 |  |  |  | 205d | 0d | A02 5 Day Workweek (BH as Work & Xmas as Non-Work) | Reports | Drainage |  |
| A70520 |  | Designers Review Draft Report |  | 10d | 2020-08-03 | 2020-08-14 | A70510 |  |  |  | 205d | 0d | A02 5 Day Workweek (BH as Work & Xmas as Non-Work) | Reports | Drainage | Design |
| A70530 |  | Compile Final Report |  | 10d | 2020-08-17 | 2020-08-28 | A70520 |  |  |  | 205d | 0d | A02 5 Day Workweek (BH as Work & Xmas as Non-Work) | Reports | Drainage |  |
| A70540 |  | Final Report Complete & Submitted To Design | milestone | 0d | 2020-08-28 | 2020-08-28 | A70530 |  |  |  | 205d | 0d | A02 5 Day Workweek (BH as Work & Xmas as Non-Work) | Reports | Drainage |  |
|  | 11 | **Point Cloud/Laser Scan** |  |  |  |  |  |  |  |  |  |  |  |  |  |  |
|  | 5 | **E & P** |  |  | 2020-07-30 | 2020-09-09 |  |  |  |  |  |  |  |  |  |  |
| A70470 |  | Compile Draft Report |  | 10d | 2020-07-30 | 2020-08-12 | A70410 |  |  |  | 192d | 0d | A02 5 Day Workweek (BH as Work & Xmas as Non-Work) | Reports | Drainage |  |
| A70480 |  | Designers Review Draft Report |  | 10d | 2020-08-13 | 2020-08-26 | A70470 |  |  |  | 192d | 0d | A02 5 Day Workweek (BH as Work & Xmas as Non-Work) | Reports | Drainage | Design |
| A70490 |  | Compile Final Report |  | 10d | 2020-08-27 | 2020-09-09 | A70480 |  |  |  | 192d | 0d | A02 5 Day Workweek (BH as Work & Xmas as Non-Work) | Reports | Drainage |  |
| A70500 |  | Final Report Complete & Submitted To Design | milestone | 0d | 2020-09-09 | 2020-09-09 | A70490 |  |  |  | 192d | 0d | A02 5 Day Workweek (BH as Work & Xmas as Non-Work) | Reports | Drainage |  |
|  | 6 | **Telecoms** |  |  | 2020-05-25 | 2020-09-11 |  |  |  |  |  |  |  |  |  |  |
|  | 1 | **Cable Route Survey** |  |  | 2020-05-25 | 2020-08-14 |  |  |  |  |  |  |  |  |  |  |
| A69340 |  | Compile Draft Report |  | 10d | 2020-05-25 A | 2020-07-17 | A66830, A76080 | 10d | 2020-05-25 | 2020-06-05 | 48d | 0d | A02 5 Day Workweek (BH as Work & Xmas as Non-Work) | Reports | Drainage |  |
| A69350 |  | Designers Review Draft Report |  | 10d | 2020-07-20 | 2020-07-31 | A69340 |  |  |  | 48d | 0d | A02 5 Day Workweek (BH as Work & Xmas as Non-Work) | Reports | Drainage | Design |
| A69360 |  | Compile Final Report |  | 10d | 2020-08-03 | 2020-08-14 | A69350 |  |  |  | 48d | 0d | A02 5 Day Workweek (BH as Work & Xmas as Non-Work) | Reports | Drainage |  |
| A69370 |  | Final Report Complete & Submitted To Design | milestone | 0d | 2020-08-14 | 2020-08-14 | A69360 |  |  |  | 48d | 0d | A02 5 Day Workweek (BH as Work & Xmas as Non-Work) | Reports | Drainage |  |
|  | 2 | **SISS, Cable Verification & Fringe Signal Box Surveys** |  |  | 2020-08-03 | 2020-09-11 |  |  |  |  |  |  |  |  |  |  |
| A70430 |  | Compile Draft Report |  | 10d | 2020-08-03 | 2020-08-14 | A70390 |  |  |  | 68d | 0d | A02 5 Day Workweek (BH as Work & Xmas as Non-Work) | Reports | Drainage |  |
| A70440 |  | Designers Review Draft Report |  | 10d | 2020-08-17 | 2020-08-28 | A70430 |  |  |  | 68d | 0d | A02 5 Day Workweek (BH as Work & Xmas as Non-Work) | Reports | Drainage | Design |
| A70450 |  | Compile Final Report |  | 10d | 2020-08-31 | 2020-09-11 | A70440 |  |  |  | 68d | 0d | A02 5 Day Workweek (BH as Work & Xmas as Non-Work) | Reports | Drainage |  |
| A70460 |  | Final Report Complete & Submitted To Design | milestone | 0d | 2020-09-11 | 2020-09-11 | A70450 |  |  |  | 68d | 0d | A02 5 Day Workweek (BH as Work & Xmas as Non-Work) | Reports | Drainage |  |
|  | 7 | **Signalling** |  |  |  |  |  |  |  |  |  |  |  |  |  |  |

# Project W4 GRIP 4 Section Proposal Schedule

Schedule from Primavera P6, 2020-05-11 to 2021-06-11, data date 2020-06-28, A marks actual dates.

## Calendars

- A04 7 Day Workweek (BH & Xmas as Work): Mon-Sun 08:00-12:00, 13:00-17:00.
- A03 5 Day Workweek (BH & Xmas as Work): Mon-Fri 08:00-12:00, 13:00-17:00; Sat-Sun off.

## Schedule

| ID | WBS | Activity | Type | Duration | Start | Finish | Predecessors | Complete | Total float | Free float | Calendar |
| --- | --- | --- | --- | --- | --- | --- | --- | --- | --- | --- | --- |
|  | 9 | **Morley Station Key Milestones** |  |  |  |  |  |  |  |  |  |
|  | 1 | **Strategic Milestones** |  |  |  |  |  |  |  |  |  |
|  | 1 | **Milestones** |  |  |  |  |  |  |  |  |  |
|  | 1 | **Strategic Milestones** |  |  |  |  |  |  |  |  |  |
|  | 2 | **Key Tactical Milestones** |  |  |  |  |  |  |  |  |  |
|  | 3 | **Section Proposal Milestones** |  |  |  |  |  |  |  |  |  |
|  | 4 | **SP_C Milestones** |  |  |  |  |  |  |  |  |  |
|  | SPC2 | **Interface Management** |  |  | 2020-05-11 | 2021-06-11 |  |  |  |  |  |
|  | 1 | **External Interfaces** |  |  | 2020-05-11 | 2021-06-11 |  |  |  |  |  |
|  | 3 | **EXT IN New 16042020** |  |  | 2020-05-11 | 2021-06-11 |  |  |  |  |  |
|  | 1 | **SECTION A - 33m 42ch to 34m 54ch** |  |  | 2020-05-11 | 2020-11-13 |  |  |  |  |  |
| A65330.271 |  | [EXT IN] Structural Off-Track Drainage - Survey Info Available - DESCOPED | milestone | 0d | 2020-05-11 A | 2020-05-11 A | A65330.271 (other project) | 100% |  |  |  |
| A65330.431 |  | [EXT IN] Off-Track Survey - Dewsbury Station inc. Roads & MDL1/16 George St, MDL1/17 Ashworth Gardens - Data Available | milestone | 0d | 2020-07-01 | 2020-07-01 | A65330.431 (other project) |  | 562d | 149d |  |
| A65330.141 |  | [EXT IN] ABS - Survey Info Available | milestone | 0d | 2020-07-17 | 2020-07-17 | A65330.141 (other project) |  | 137d | 0d |  |
| A65330.441 |  | [EXT IN] Track Survey - 34m 10ch to 34m 30ch // Off-Track - Dewsbury Disused Tunnel, MDL1/23 Wood Lane - Data Available | milestone | 0d | 2020-07-17 | 2020-07-17 | A65330.441 (other project) |  | 546d | 133d |  |
| A65330.451 |  | [EXT IN] Track Survey - 34m 30ch to 34m 60ch // Off-Track - MDL1/24 Jack Lane - Data Available | milestone | 0d | 2020-07-17 | 2020-07-17 | A65330.451 (other project) |  | 230d | 110d |  |
| A65330.361 |  | [EXT IN] Dewsbury Station GPR - Survey Info Available | milestone | 0d | 2020-07-31 | 2020-07-31 | A65330.361 (other project) |  | 166d | 0d |  |
| A65330.371 |  | [EXT IN] Dewsbury Station Asbestos - Survey Info Available | milestone | 0d | 2020-08-03 | 2020-08-03 | A65330.371 (other project) |  | 163d | 60d |  |
| A65330.381 |  | [EXT IN] Dewsbury Station Off-Track Drainage - Survey Info Available | milestone | 0d | 2020-08-03 | 2020-08-03 | A65330.381 (other project) |  | 163d | 0d |  |
| A65330.161 |  | [EXT IN] Trial Pits - Survey Info Available | milestone | 0d | 2020-08-20 | 2020-08-20 | A65330.161 (other project) |  | 59d | 0d |  |
| A65330.251 |  | [EXT IN] Structural Trial Pits - Survey Info Available | milestone | 0d | 2020-09-04 | 2020-09-04 | A65330.251 (other project) |  | 497d | 84d |  |
| A65330.351 |  | [EXT IN] Dewsbury Station: Coring, Trial Pits & Paint Samples - Survey Info Available | milestone | 0d | 2020-10-02 | 2020-10-02 | A65330.351 (other project) |  | 103d | 0d |  |
| A68630 |  | [EXT IN] Drainage Complete - Area A Surveys | milestone | 0d | 2020-10-05 | 2020-10-05 | A68630 (other project) |  | 10d | 0d | A03 5 Day Workweek (BH & Xmas as Work) |
| A65330.151 |  | [EXT IN] Window Samples - Survey Info Available | milestone | 0d | 2020-10-23 | 2020-10-23 | A65330.151 (other project) |  | 39d | 0d |  |
| A65330.261 |  | [EXT IN] Structural Coring & Paint Samples - Survey Info Available | milestone | 0d | 2020-10-30 | 2020-10-30 | A65330.261 (other project) |  | 441d | 28d |  |
| A65330.171 |  | [EXT IN] Boreholes - Survey Info Available | milestone | 0d | 2020-11-13 | 2020-11-13 | A65330.171 (other project) |  | 23d | 0d |  |
| A65330.591 |  | [EXT IN] Drainage - Survey Info Available | milestone | 0d | 2020-11-13 | 2020-11-13 | A65330.591 (other project) |  | 235d | 0d |  |

| ID | WBS | Activity | Type | Duration | Start | Finish | Predecessors | Total float | Free float | Calendar |
| --- | --- | --- | --- | --- | --- | --- | --- | --- | --- | --- |
|  | 2 | **SECTION B - 34m 54ch to 38m 10ch** |  |  | 2020-07-07 | 2020-12-01 |  |  |  |  |
| A65330.471 |  | [EXT IN] Batley Station On & Off Track Survey & MDL1/27, MDL1/28, MDL1/29 - Data Available | milestone | 0d | 2020-07-07 | 2020-07-07 | A65330.471 (other project) | 246d | 0d |  |
| A65330.461 |  | [EXT IN] Track Survey - 34m70ch - 35m30ch - Fence to Fence Where Possible inc. Platforms - Data Available | milestone | 0d | 2020-07-15 | 2020-07-15 | A65330.461 (other project) | 548d | 135d |  |
| A65330.481 |  | [EXT IN] Track Survey 35m 30ch to 35m 70ch - Data Available | milestone | 0d | 2020-07-22 | 2020-07-22 | A65330.481 (other project) | 541d | 128d |  |
| A65330.281 |  | [EXT IN] Structural Trial Pits - Survey Info Available | milestone | 0d | 2020-07-31 | 2020-07-31 | A65330.281 (other project) | 532d | 119d |  |
| A65330.311 |  | [EXT IN] Structural Slit Trench/GPR - Survey Info Available | milestone | 0d | 2020-07-31 | 2020-07-31 | A65330.311 (other project) | 532d | 119d |  |
| A65330.401 |  | [EXT IN] Batley Station GPR - Survey Info Available | milestone | 0d | 2020-07-31 | 2020-07-31 | A65330.401 (other project) | 222d | 0d |  |
| A65330.421 |  | [EXT IN] Batley Station Off-Track Drainage - Survey Info Available | milestone | 0d | 2020-08-03 | 2020-08-03 | A65330.421 (other project) | 219d | 0d |  |
| A65330.491 |  | [EXT IN] Track Survey 35m 70ch to 36m 20ch inc. MDL1/34, MDL1/35 - Data Available | milestone | 0d | 2020-08-19 | 2020-08-19 | A65330.491 (other project) | 513d | 100d |  |
| A65330.631 |  | [EXT IN] Morley Tunnel Trial Pits - Survey Info Available | milestone | 0d | 2020-08-21 | 2020-08-21 | A65330.631 (other project) | 511d | 98d |  |
| A65330.241 |  | [EXT IN] Boreholes - Survey Info Available | milestone | 0d | 2020-09-18 | 2020-09-18 | A65330.241 (other project) | 30d | 0d |  |
| A65330.411 |  | [EXT IN] Batley Station Asbestos - Survey Info Available | milestone | 0d | 2020-09-18 | 2020-09-18 | A65330.411 (other project) | 173d | 28d |  |
| A65330.601 |  | [EXT IN] Drainage - Survey Info Available | milestone | 0d | 2020-09-24 | 2020-09-24 | A65330.601 (other project) | 285d | 10d |  |
| A65330.651 |  | [EXT IN] Morley Tunnel Geophysics - Survey Info Available | milestone | 0d | 2020-10-02 | 2020-10-02 | A65330.651 (other project) | 135d | 0d |  |
| A68650 |  | [EXT IN] Drainage Complete - Area B Surveys | milestone | 0d | 2020-10-05 | 2020-10-05 | A68650 (other project) | 10d | 0d | A03 5 Day Workweek (BH & Xmas as Work) |
| A65330.501 |  | [EXT IN] Morley Tunnel Survey 36m 20ch to 38m 20ch - Data Available | milestone | 0d | 2020-10-07 | 2020-10-07 | A65330.501 (other project) | 464d | 51d |  |
| A65330.181 |  | [EXT IN] ABS (On Track) - Survey Info Available | milestone | 0d | 2020-10-16 | 2020-10-16 | A65330.181 (other project) | 9d | 0d |  |
| A65330.391 |  | [EXT IN] Batley Station: Coring & Paint Samples - Survey Info Available | milestone | 0d | 2020-10-16 | 2020-10-16 | A65330.391 (other project) | 145d | 0d |  |
| A65330.291 |  | [EXT IN] Structural Coring - Survey Info Available | milestone | 0d | 2020-10-23 | 2020-10-23 | A65330.291 (other project) | 448d | 35d |  |
| A65330.641 |  | [EXT IN] Morley Tunnel Drainage (Tunnel Bore & Portals) - Survey Info Available | milestone | 0d | 2020-11-13 | 2020-11-13 | A65330.641 (other project) | 427d | 14d |  |
| A65330.621 |  | [EXT IN] Morley Tunnel Coring - Survey Info Available | milestone | 0d | 2020-11-27 | 2020-11-27 | A65330.621 (other project) | 413d | 0d |  |
| A65330.191 |  | [EXT IN] Window Samples - Survey Info Available | milestone | 0d | 2020-12-01 | 2020-12-01 | A65330.191 (other project) | 5d | 0d |  |
|  | 3 | **SECTION C - 39m 62ch to 41m 78ch** |  |  | 2020-07-03 | 2020-12-03 |  |  |  |  |
| A65330.511 |  | [EXT IN] Track Survey - 39m 60ch to 40m 30ch Churwell Viaduct - Data Available | milestone | 0d | 2020-07-03 | 2020-07-03 | A65330.511 (other project) | 560d | 147d |  |
| A65330.581 |  | [EXT IN] Track Survey - 41m40ch to 42m20ch - Data Available | milestone | 0d | 2020-07-03 | 2020-07-03 | A65330.581 (other project) | 560d | 147d |  |
| A65330.541 |  | [EXT IN] Track Survey - 40m 30ch to 41m 10ch - Data Available | milestone | 0d | 2020-07-17 | 2020-07-17 | A65330.541 (other project) | 546d | 133d |  |
| A65330.231 |  | [EXT IN] Trial Pits - Survey Info Available | milestone | 0d | 2020-07-31 | 2020-07-31 | A65330.231 (other project) | 79d | 0d |  |
| A65330.321 |  | [EXT IN] Structural Trial Pits - Survey Info Available | milestone | 0d | 2020-07-31 | 2020-07-31 | A65330.321 (other project) | 532d | 119d |  |
| A65330.531 |  | [EXT IN] Off-Track Survey - MDL1/41A Cottingley Footbridge - Data Available | milestone | 0d | 2020-08-06 | 2020-08-06 | A65330.531 (other project) | 526d | 113d |  |
| A65330.551 |  | [EXT IN] Track Survey - 41m 10ch to 41m 40ch & Off Track - MDL1/47 Whitehall Road / Dragon bridge - Data Available | milestone | 0d | 2020-08-06 | 2020-08-06 | A65330.551 (other project) | 526d | 113d |  |
| A65330.521 |  | [EXT IN] Off-Track Survey - MDL1/40 Churwell Viaduct - Data Available | milestone | 0d | 2020-08-07 | 2020-08-07 | A65330.521 (other project) | 525d | 112d |  |
| A65330.571 |  | [EXT IN] Off-Track Survey - MDL1/48 Search's Footbridge - Data Available | milestone | 0d | 2020-08-21 | 2020-08-21 | A65330.571 (other project) | 511d | 98d |  |
| A65330.561 |  | [EXT IN] Track Survey - MDL1/49 to DOL2/41 - Data Available | milestone | 0d | 2020-08-27 | 2020-08-27 | A65330.561 (other project) | 505d | 92d |  |
| A68700 |  | [EXT IN] Drainage Complete - Area C Surveys | milestone | 0d | 2020-09-11 | 2020-09-11 | A68700 (other project) | 65d | 0d | A03 5 Day Workweek (BH & Xmas as Work) |
| A65330.341 |  | [EXT IN] Structural Off-Track Drainage - Survey Info Available | milestone | 0d | 2020-09-18 | 2020-09-18 | A65330.341 (other project) | 483d | 70d |  |
| A65330.331 |  | [EXT IN] Structural Coring & Paint Samples - Survey Info Available | milestone | 0d | 2020-10-02 | 2020-10-02 | A65330.331 (other project) | 469d | 56d |  |
| A65330.211 |  | [EXT IN] ABS (On Track) - Survey Info Available C | milestone | 0d | 2020-10-16 | 2020-10-16 | A65330.211 (other project) | 46d | 0d |  |
| A65330.611 |  | [EXT IN] Drainage - Survey Info Available | milestone | 0d | 2020-10-23 | 2020-10-23 | A65330.611 (other project) | 49d | 0d |  |
| A65330.221 |  | [EXT IN] Window Samples - Survey Info Available | milestone | 0d | 2020-12-03 | 2020-12-03 | A65330.221 (other project) | -2d | 0d |  |

| ID | WBS | Activity | Type | Duration | Start | Finish | Predecessors | Total float | Free float |
| --- | --- | --- | --- | --- | --- | --- | --- | --- | --- |
|  | 4 | **FULL W4 MILEAGE - 33m 42ch to 41m 78ch** |  |  | 2020-07-31 | 2021-06-11 |  |  |  |
| A65330.721 |  | [EXT IN] Telecoms: Cable Route - Survey Info Available | milestone | 0d | 2020-07-31 | 2020-07-31 | A65330.721 (other project) | 82d | 2d |
| A65330.681 |  | [EXT IN] Gauging - Survey Info Available | milestone | 0d | 2020-08-14 | 2020-08-14 | A65330.681 (other project) | 103d | 0d |
| A65330.691 |  | [EXT IN] Pedestrian Flow - Survey Info Available | milestone | 0d | 2020-08-14 | 2020-08-14 | A65330.691 (other project) | 269d | 0d |
| A65330.701 |  | [EXT IN] Off-Track Culvert Inspections - Survey Info Available | milestone | 0d | 2020-08-28 | 2020-08-28 | A65330.701 (other project) | 312d | 0d |
| A65330.711 |  | [EXT IN] E&P - Survey Info Available | milestone | 0d | 2020-09-09 | 2020-09-09 | A65330.711 (other project) | 270d | 0d |
| A65330.731 |  | [EXT IN] Telecoms: SISS, Cable Verification & Fringe Signal Box - Survey Info Available | milestone | 0d | 2020-09-11 | 2020-09-11 | A65330.731 (other project) | 96d | 0d |
| A65330.671 |  | [EXT IN] Powerline Crossings / Heights & Staggers / Bonding - Survey Info Available | milestone | 0d | 2020-09-18 | 2020-09-18 | A65330.671 (other project) | 263d | 0d |
| A65330.661 |  | [EXT IN] OLE Trial Holes - Survey Info Available | milestone | 0d | 2021-06-11 | 2021-06-11 | A65330.661 (other project) | 217d | 0d |
|  | 4 | **EXT IN (SP_C)** |  |  |  |  |  |  |  |
|  | 2 | **EXT OUT (SP_C)** |  |  |  |  |  |  |  |
|  | 2 | **Internal Interfaces** |  |  |  |  |  |  |  |
|  | 1 | **INT** |  |  |  |  |  |  |  |
|  | 1 | **Signalling** |  |  |  |  |  |  |  |
|  | 2 | **E&P** |  |  |  |  |  |  |  |
|  | 3 | **Networks** |  |  |  |  |  |  |  |
|  | 4 | **Control Systems** |  |  |  |  |  |  |  |
|  | 5 | **Telecoms** |  |  |  |  |  |  |  |
|  | 2 | **Project Team** |  |  |  |  |  |  |  |
|  | 1 | **Reviews, Meetings and Reports** |  |  |  |  |  |  |  |
|  | 2 | **Validation & Early GRIP 4** |  |  |  |  |  |  |  |
|  | 1 | **GRIP 4 Schedule Development** |  |  |  |  |  |  |  |
|  | 3 | **GRIP 4 - AIP Design** |  |  |  |  |  |  |  |
|  | 22 | **Morley Station Validation New Scope** |  |  |  |  |  |  |  |
|  | 1 | **W5 General** |  |  |  |  |  |  |  |
|  | 4 | **W5 TQ's & RFI's** |  |  |  |  |  |  |  |
|  | 6 | **01 Track Design** |  |  |  |  |  |  |  |
|  | 1 | **General** |  |  |  |  |  |  |  |
|  | 1 | **Input** |  |  |  |  |  |  |  |
|  | 1 | **Key Survey Dates - Area A** |  |  |  |  |  |  |  |
|  | 2 | **Key Survey Dates - Area B** |  |  |  |  |  |  |  |
|  | 3 | **Key Survey Dates - Area C** |  |  |  |  |  |  |  |
|  | 2 | **Reports/Assessments** |  |  |  |  |  |  |  |
|  | 6 | **Area M - Morley Station Track** |  |  |  |  |  |  |  |
|  | 2 | **Area A - Dewsbury to Batley Track Design** |  |  |  |  |  |  |  |
|  | 4 | **PWay AIP** |  |  |  |  |  |  |  |
|  | 1 | **PWay AIP DELETE AFTER LOGIC TRACING** |  |  |  |  |  |  |  |
|  | 2 | **Reports** |  |  |  |  |  |  |  |
|  | 3 | **Update Track Design - Dewsbury to Batley** |  |  |  |  |  |  |  |
|  | 3 | **Area B - Batley to Morley Track Design** |  |  |  |  |  |  |  |
|  | 4 | **PWay AIP** |  |  |  |  |  |  |  |
|  | 1 | **PWay AIP DELETE AFTER LOGIC TRACING** |  |  |  |  |  |  |  |
|  | 2 | **Reports** |  |  |  |  |  |  |  |
|  | 3 | **Update Track Design - Batley to Morley** |  |  |  |  |  |  |  |
|  | 4 | **Area C - Morley to Copley Hill Track Design-** |  |  |  |  |  |  |  |
|  | 4 | **PWay AIP** |  |  |  |  |  |  |  |
|  | 1 | **PWay AIP DELETE AFTER LOGIC TRACING** |  |  |  |  |  |  |  |
|  | 2 | **Reports** |  |  |  |  |  |  |  |
|  | 3 | **Update Track Design - Morley to Copley Hill** |  |  |  |  |  |  |  |
|  | 5 | **Area D - Copley Hill to Leeds Central Track Design - TBC (Scope not yet Authorised)** |  |  |  |  |  |  |  |
|  | 4 | **PWay AIP new actys** |  |  |  |  |  |  |  |
|  | 1 | **PWay AIP DELETE AFTER LOGIC TRACING** |  |  |  |  |  |  |  |
|  | 2 | **Reports** |  |  |  |  |  |  |  |
|  | 3 | **Update Track Design - Copley Hill to Leeds Central** |  |  |  |  |  |  |  |
|  | 2 | **02 OLE** |  |  |  |  |  |  |  |
|  | 23 | **02 OLE Design** |  |  |  |  |  |  |  |
|  | 8 | **General** |  |  |  |  |  |  |  |
|  | 2 | **Inputs** |  |  |  |  |  |  |  |
|  | 1 | **Reports / Assesments** |  |  |  |  |  |  |  |
|  | 1 | **Area M - Morley Station OLE** |  |  |  |  |  |  |  |
|  | 5 | **Area A - Dewsbury to Batley OLE** |  |  |  |  |  |  |  |
|  | 1 | **Design Development** |  |  |  |  |  |  |  |
|  | 6 | **Area B - Batley to Morley OLE** |  |  |  |  |  |  |  |
|  | 1 | **Design Development** |  |  |  |  |  |  |  |
|  | 7 | **Area C - Morley to Copley Hill OLE** |  |  |  |  |  |  |  |
|  | 1 | **Design Development** |  |  |  |  |  |  |  |
|  | 2 | **Area A - Dewsbury to Batley OLE Design** |  |  |  |  |  |  |  |
|  | 1 | **OLE Design** |  |  |  |  |  |  |  |
|  | 2 | **Layout Design** |  |  |  |  |  |  |  |
|  | 3 | **Form A** |  |  |  |  |  |  |  |

| WBS | Activity |
| --- | --- |
| 4 | **Update OLE Design - Dewsbury to Batley** |
| 4 | **Area B - Batley to Morley OLE Design** |
| 1 | **OLE Design** |
| 2 | **Layout Design** |
| 3 | **Form A** |
| 4 | **Update OLE Design - Batley to Morley** |
| 3 | **Area C - Morley to Copley Hill OLE Design** |
| 1 | **OLE Design** |
| 2 | **Layout Design** |
| 3 | **Form A** |
| 4 | **Update OLE Design - Morley to Copley Hill** |
| 3 | **03 Telecoms** |
| 11 | **Telecoms Morley Station** |
| 2 | **System Architecture** |
| 4 | **Testing Strategy** |
| 3 | **AiP - SISS Telecoms** |
| 1 | **AiP - Ops Comms** |
| 8 | **Input** |
| 2 | **Reference System Design (SISS)** |
| 1 | **Dewsbury Station** |
| 2 | **Batley Station** |
| 1 | **Reference System Design (SCADA)** |
| 10 | **High Level Design (SCADA)** |
| 9 | **SCADA** |
| 1 | **SCADA - Design** |
| 5 | **Update SCADA (following Multid IDC)** |
| 3 | **Reference System Design (Ops)** |
| 4 | **Route Wide Security plan** |
| 6 | **Route Wide Cable Route Strategy** |
| 7 | **Telecoms Testing Strategy** |
| 5 | **TENE FTN Scheme Outline Design** |
| 34 | **Update Telecomms AiP** |
| 16 | **03 Telecoms SP_C** |
| 1 | **Surveys** |
| 1 | **Grip 4 Surveys** |
| 2 | **Telecoms Survey Report** |
| 3 | **Cable Route Report** |
| 2 | **Circuit Allocation Spreadsheet [CAS]** |
| 3 | **Outline Telecoms Cable & Route Design** |
| 4 | **Siting Information** |
| 5 | **Straight Line Diagrams** |
| 6 | **HMI Layouts** |
| 1 | **NR Review** |
| 2 | **LOM Review** |
| 7 | **Telecoms Reference System Design** |
| 8 | **Auto Reconfigurable Power Suppiy [ARPS]** |
| 9 | **NRT SOD Production** |
| 10 | **Test Strategy** |
| 13 | **04 Distribution** |
| 10 | **Routewide Design Documents - Form A** |
| 11 | **Update W4 Routewide Distribution Design Documents** |
| 2 | **Distribution at Leeds MPTSC** |
| 1 | **Input** |
| 2 | **Design Subcontractor Surveys** |
| 3 | **Distribution - Form A** |
| 4 | **Update W4 Distribution Design** |
| 5 | **Building Services - Form 001** |
| 6 | **Update W4 Building Services Design** |
| 3 | **Distribution at Batley TSL** |
| 1 | **Input** |
| 2 | **Design Subcontractor Surveys** |
| 3 | **Distribution - Form A** |
| 4 | **Update W4 Distribution Design** |
| 5 | **Building Services - Form 001** |
| 6 | **Update W4 Building Services Design** |
| 14 | **04 E&P** |
| 21 | **E&P Morley Station** |
| 4 | **LV Power Supply and Distribution** |
| 2 | **Lighting** |
| 6 | **Station Car Park Lighting** |

| WBS | Activity |
| --- | --- |
| 5 | **EMC** |
| 1 | **Earthing and Bondings** |
| 3 | **Signalling Power** |
| 14 | **E&P Unique Activities** |
| 17 | **LV Supplies to Lineside Signalling REB** |
| 18 | **LV Supplies to Lineside Signalling Axle ACE** |
| 19 | **LV Supplies to Motor Operated Switch (MOS) Batley** |
| 20 | **LV Supplies to Traction Power Site (Leeds MPTSC)** |
| 3 | **Station LV Surveys & Reports (including lighting survey report) (3no)** |
| 1 | **Points Heating - Form A** |
| 4 | **LV Supplies to Lineside Telecoms** |
| 1 | **Dewsbury Station** |
| 2 | **Batley Station** |
| 5 | **Station E&P LV** |
| 1 | **Dewsbury Station** |
| 2 | **Batley Station** |
| 6 | **Station lightning risk assessment (Dewsbury)** |
| 7 | **LV supplies to signalling - Form A** |
| 8 | **Station Lighting** |
| 1 | **Dewsbury Station** |
| 2 | **Batley Station** |
| 9 | **Station Earthing & Bonding** |
| 1 | **Batley Station** |
| 2 | **Dewsbury Station** |
| 3 | **Morley to Copley Hill** |
| 10 | **EMC Control Plan** |
| 11 | **EMC Hazard Report** |
| 12 | **Signalling Power - Form A** |
| 13 | **Station Lift Schedule by Manufacturer** |
| 15 | **Junction Lighting Requirement Assessment** |
| 2 | **E&P Design** |
| 16 | **E&P Update following Multidisc IDC** |
| 15 | **04 E&P SP_C** |
| 1 | **E&P Site Surveys** |
| 1 | **Points Heating** |
| 2 | **Signalling Power** |
| 3 | **Signalling Power** |
| 3 | **W4 Signalling Power Form A AIP Package** |
| 1 | **Feeder Diagram** |
| 2 | **Block Cable Diagram** |
| 4 | **DNO Quotations** |
| 44 | **PSP** |
| 5 | **Feeder Design** |
| 9 | **E&P Staging Test Strategy** |
| 6 | **Points Heating Form A** |
| 7 | **Junction Lighting Form A** |
| 8 | **E & B Strategy** |
| 17 | **05 Signalling SP_C** |
| 41 | **Signal Sighting Model** |
| 40 | **Signalling Morley Station** |
| 2 | **Signal Sighting Forms** |
| 4 | **Signalling Scheme Plan to AiP** |
| 10 | **Sign Sighting Forms** |
| 3 | **Signal Sighting Report** |
| 9 | **General Management** |
| 1 | **Source Record Assessment / Request** |
| 2 | **Source Record Management Plan** |
| 3 | **Drawing Register** |
| 4 | **Clearance Point Survey** |
| 5 | **Correlation Spec** |
| 6 | **Correlation Prep and Issue sets** |
| 7 | **Signal Sighting** |
| 1 | **Signal Sighting Forms - Area A** |
| 2 | **Sign Sighting Forms - Area A** |
| 3 | **Signal Sighting Report - Area A** |
| 4 | **Signal Sighting Forms - Area B** |
| 5 | **Sign Sighting Forms - Area B** |
| 6 | **Signal Sighting Report - Area B** |
| 7 | **Signal Sighting Forms - Area C** |
| 9 | **Sign Sighting Forms - Area C** |

| WBS | Activity |
| --- | --- |
| 8 | **Signal Sighting Report - Area C** |
| 8 | **Asset Condition Assessment** |
| 9 | **Technology and Compliance Report** |
| 10 | **Signalling Project Risk Assessment Plan** |
| 11 | **Signalling Design Specification** |
| 12 | **Signalling Project Specification** |
| 13 | **Technical Interface Definition Specification** |
| 14 | **Signalling Scheme Plan To AIP** |
| 15 | **Scheme Plan Supporting Documents** |
| 1 | **Braking Calculations / Signal Spacing** |
| 2 | **Aspect Sequence Charts** |
| 3 | **TPWS Effectiveness Calculations** |
| 4 | **Headway Modelling [Calcs & Report]** |
| 5 | **Design Log / Design Risk Log / Design Risk Assessment** |
| 16 | **Stage Scheme Sketches** |
| 17 | **Risk Assessment Planning** |
| 1 | **SORAT [RSK]** |
| 2 | **Workshops [RSK]** |
| 3 | **Plans / Reports [RSK]** |
| 1 | **SORAT** |
| 2 | **Driveability** |
| 4 | **Signalling Risk Assessments** |
| 18 | **Operational Requirements** |
| 19 | **High Level System Architecture** |
| 20 | **Interlocking Requirements Specification** |
| 21 | **Cable Route Design Input** |
| 22 | **Location Area Plan [LAP]** |
| 23 | **Train Detection Strategy [Incl. IRJ Recovery]** |
| 24 | **Bonding Plan** |
| 25 | **IOM Allocations/ WTS Schematic** |
| 26 | **Fringe Requirements Spec - Thornhill LNW RRI** |
| 27 | **Fringe Requirements Spec - Leeds Smartlock** |
| 28 | **Axle Counter Schedule** |
| 29 | **Clamplock Pump Unit & Point Machine Schedule** |
| 30 | **Points Equipment Cupboards Siting Forms** |
| 31 | **Staff Protection Siting Forms** |
| 32 | **Equipment Housing Siting Forms** |
| 33 | **Signalling Power Loading - Input For E&P Form A** |
| 34 | **Interlocking Data Development Plan [IDDP]** |
| 35 | **Control Tables** |
| 36 | **Compatibility Report** |
| 37 | **Digital Ready NR11711** |
| 38 | **HAZiD Report** |
| 39 | **Product Acceptance Strategy** |
| 18 | **05 Test SP_C** |
| 1 | **Correlation** |
| 2 | **Test Strategy** |
| 19 | **05 Control Systems SP_C** |
| 1 | **Control Systems Design Spec** |
| 2 | **YROC Operation and Control Spec** |
| 3 | **YROC VDU Screen Layouts** |
| 4 | **YROC Alarm Strategy / Specification** |
| 5 | **YROC Ergonomic / Workload Assessment** |
| 6 | **YROC ARS ORS Requirements Spec** |
| 7 | **Fringe TD / EA Report** |
| 8 | **IP Addressing - Systems** |
| 20 | **05 Installation SP_C** |
| 1 | **WPP** |
| 2 | **Site Investigations** |
| 3 | **Constructability Report** |
| 4 | **Construction Strategy** |
| 5 | **Siting Forms** |
| 1 | **Staff Protection Siting Forms** |
| 2 | **Point Cabinet Siting Forms** |
| 3 | **Axle Counter Siting Forms** |
| 4 | **Equipment Housing Siting Forms** |
| 6 | **Surveys** |
| 1 | **Point Condition Assessment** |
| 2 | **Cross Track Cable Management** |
| 3 | **Cable Route Survey** |

| WBS | Activity |
| --- | --- |
| 21 | **05 Networks SP_C** |
| 1 | **Network Design Architecture** |
| 2 | **Network Design Description Schedule / Report** |
| 3 | **Network Design Specification** |
| 4 | **Network Management Design** |
| 5 | **Network IP Addressing** |
| 6 | **Network Test Strategy** |
| 11 | **06 Lineside Civils** |
| 16 | **Morley Station** |
| 00 | **Inputs** |
| 01 | **UTX** |
| 02 | **Cable Containment** |
| 03 | **Access Point** |
| 04 | **Signalling Equipment** |
| 05 | **Track Equipment (RRAP)** |
| 06 | **Power Equipment** |
| 07 | **Lineside Fencing** |
| 08 | **Standard OLE Foundations** |
| 09 | **Bespoke OLE Foundations** |
| 1 | **Continuous Position of Safety** |
| 2 | **Compound Design** |
| 1 | **Input** |
| 2 | **UTX 01** |
| 3 | **Cable Containment 02** |
| 4 | **Access Point 03** |
| 5 | **Signalling Equipment 04** |
| 6 | **Track Equipment 05** |
| 7 | **Power Equipment 06** |
| 8 | **Lineside Fencing 07** |
| 9 | **GSMR Moves 08** |
| 10 | **Bespoke OLE Foundation (3no) 09** |
| 13 | **Standard OLE Foundation 25** |
| 14 | **Continuous Position of Safety (CPOS)** |
| 15 | **MPTSC design** |
| 11 | **Ancilliary Civils Reports** |
| 12 | **Lineside Civils Approval Process** |
| 1 | **Multidiscipline IDC - Dewsbury to Batley** |
| 2 | **Multidiscipline IDC - Batley to Morley** |
| 3 | **Multidiscipline IDC - Morley to Copley Hill** |
| 9 | **07 Civils Structures** |
| 10 | **Structures Morley Station** |
| 9 | **F001 & F002** |
| 1 | **MDL1/36P2 Valley Road (Parapet Works)** |
| 2 | **MDL1/37AA Natasha Elliot Footbridge (Parapet/Minor Works)** |
| 3 | **MDL1/38 Hardings Footbridge (Parapet)** |
| 10 | **Structural Assessments** |
| 1 | **MDL1/36P2 Valley Road** |
| 2 | **MDL1/39 Structural Assessment** |
| 8 | **MDL1/40 Structural Assessment** |
| 12 | **Diversity Impact Assessments** |
| 13 | **Derailment Assessments** |
| 14 | **CRAS Culvert Assessment** |
| 6 | **MDL1/37A** |
| 1 | **CRAS Culvert Assessment** |
| 15 | **Others** |
| 1 | **Architectural Design** |
| 7 | **Civils Structures Milestones** |
| 1 | **O/B Recon, U/B Recon & Demolition for Electrification** |
| 2 | **MDL1/47 - A58 Whitehall Rd** |
| 8 | **MDL1/34 - West End Footbridge - Footbridge Removal** |
| 9 | **MDL1/16 - George St (Recon) - U/B Recon (Grade II Listed)** |
| 4 | **New Structures** |
| 7 | **Lady Anne Footbridge - New Footbridge** |
| 5 | **Structure Repairs** |
| 10 | **MDL1/28 - Subway bearings, waterproof, minor steel repairs and painting** |
| 2 | **O/B Parapet works & Registration for Electrification** |
| 5 | **MDL1/23 - Wood Ln (Grade II Listed)** |
| 1 | **MDL1/17 Ashworth Rd** |
| 2 | **MDL1/29 - Soothill Lane** |
| 3 | **MDL1/41A - Cottingley Station Footbridge** |

| WBS | Activity |
| --- | --- |
| 4 | **MDL1/43 - Gelderd Rd** |
| 3 | **Parapet Works** |
| 5 | **MDL1/41B - Beeston Royds - Registration for Electrification** |
| 1 | **MDL1/48 - Footbridge & MDL1/48A - Water Pipe Bridge** |
| 6 | **MDL1/48A - Water Pipe Bridge DEL** |
| 2 | **DOL2/41 & MDL1/49 - Intersection Bridge** |
| 3 | **MDL1/51 - Footbridge** |
| 6 | **Attach OLE Portals to Grade II Listed Viaduct** |
| 1 | **MDL1/19 - Dewsbury Viaduct (Grade II Listed)** |
| 2 | **MDL1/27 - Batley Viaduct (Grade II Listed)** |
| 3 | **MDL1/40 - Churwell Viaduct (Grade II Listed)** |
| 11 | **Structural Assessment** |
| 1 | **MDL1/14A UB Structural Assessment** |
| 2 | **MDL1/15 UB Structural Assessment** |
| 3 | **MDL1/19 UB Structural Assessment** |
| 4 | **MDL1/20 UB Structural Assessment** |
| 5 | **MDL1/21 UB Structural Assessment** |
| 6 | **MDL1/24 UB Structural Assessment (Grade II Listed)** |
| 7 | **MDL1/27 UB Structural Assessment** |
| 8 | **MDL1/30 UB Structural Assessment** |
| 9 | **MDL1/35 UB Structural Assessment** |
| 10 | **MDL1/40 UB Structural Assessment** |
| 11 | **MDL1/44A UB Structural Assessment** |
| 12 | **MDL1/52 UB Structural Assessment** |
| 13 | **DOL2/44A UB Structural Assessment** |
| 12 | **Reports / Assessments** |
| 1 | **Diversity Impact Assessments MDL1/17, 23, 29, 34, 41A, 43, 47, 48, 51** |
| 2 | **Road Vehicle Incursions MDL1/17, 29, 43, 47** |
| 3 | **Derailment Assessments MDL1/34, 41A, 48A, 48, 51, DOL2/41** |
| 13 | **Retaining Walls** |
| 1 | **MDL1/34F2 & MDL1/34G1 poor condition/ ballast issues** |
| 4 | **MDL1/34G1 poor condition/ ballast issues** |
| 2 | **MDL1/33 Intersection Bridge Disused Abutments** |
| 3 | **Retaining Walls support ground above track within 2.2m from cess rail** |
| 14 | **Civils Input** |
| 1 | **Input to Environmental** |
| 2 | **Input to OLE CRE for GL/RT1210 Risk Assessments.** |
| 3 | **Input to Surveys** |
| 4 | **Input to Highways Road Safety Audits** |
| 5 | **Input to Heritage** |
| 7 | **Consents - Heritage & Planning** |
| 1 | **LDY ANN** |
| 9 | **MDL 1/16** |
| 3 | **MDL 1/17** |
| 2 | **MDL 1/19** |
| 14 | **MDL 1/23** |
| 13 | **MDL 1/24** |
| 10 | **MDL 1/27** |
| 12 | **MDL 1/29** |
| 5 | **MDL 1/30** |
| 8 | **MDL 1/34** |
| 4 | **MDL 1/35** |
| 16 | **MDL 1/40** |
| 15 | **MDL 1/41A** |
| 11 | **MDL 1/47** |
| 7 | **MDL 1/52** |
| 6 | **DOL 2/44A** |
| 6 | **Input to Schedule** |
| 15 | **Structures IDC & Approval Process** |
| 5 | **08 Earthworks** |
| 15 | **Geotech Morley Station** |
| 1 | **General** |
| 11 | **Ground Investigation Report** |
| 12 | **TBI Interpretive Report** |
| 13 | **Earthworks Assessment** |
| 2 | **Earthwork Stabilisation - Rock Netting 62000 Form 001** |
| 3 | **Earthwork Stabilisation - Cherwell 64300 Form 001** |
| 1 | **Input** |
| 2 | **Ground Investigation / Geotechnical Design Report** |
| 3 | **Track Bed Interpretive Report** |

| WBS | Activity |
| --- | --- |
| 4 | **Earthwork Assessment Report** |
| 5 | **Earthwork Stabilization** |
| 1 | **Area A** |
| 2 | **Area B** |
| 3 | **Area C** |
| 4 | **Area D** |
| 10 | **09 Stations** |
| 13 | **Listed Building Application Morley Station** |
| 8 | **Inputs** |
| 16 | **Morley Station** |
| 4 | **Interfaces** |
| 1 | **Station and Footbridge design** |
| 2 | **Station Capacity Analysis & Fire Engineering Report** |
| 5 | **DIA** |
| 6 | **Architectural Activities** |
| 1 | **Dewsbury Station** |
| 2 | **Dewsbury Station F001/F002/F004** |
| 7 | **Station Footbridge Level 2 Assessment** |
| 4 | **Dewsbury Station Footbridge Form F001/F002** |
| 8 | **Dewsbury Station Footbridge Form F004** |
| 1 | **Assessments & Reports** |
| 1 | **Diversity Impact Assessments** |
| 5 | **Dewsbury Station Consents Inputs** |
| 3 | **Stations Building** |
| 5 | **Dewsbury Station Ancillaries (inc OLE)** |
| 6 | **Update Dewsbury Station AiP** |
| 2 | **Batley Station** |
| 1 | **Inputs** |
| 2 | **Batley Station F001/F002 (inc. OLE Foundations)** |
| 3 | **Lifts Civils** |
| 4 | **Batley Station AiP Approval Process** |
| 1 | **Design Available** |
| 2 | **Multidisc IDC** |
| 3 | **Update following IDC** |
| 12 | **10 Tunnels** |
| 6 | **Tunnels Morley Station** |
| 5 | **NEW** |
| 1 | **Input** |
| 2 | **Morley Tunnel Design** |
| 3 | **Other Reports** |
| 4 | **Update Tunnel AiP Design** |
| 7 | **11 Drainage** |
| 4 | **Drainage Morley Station** |
| 3 | **General** |
| 1 | **Input** |
| 1 | **Drainage Routewide** |
| 2 | **Update Drainage Design** |
| 8 | **12 Utilities** |
| 1 | **C3** |
| 2 | **C4** |
| 4 | **Multi-Discipline IDCs** |
| 5 | **Multi-Discipline IDCs - Routewide** |
| 02 | **03 04 05 Rail Systems Routewide** |
| 01 | **06 09 10 Other Routewide** |
| 1 | **07 Structures Routewide** |
| 6 | **Multi-Discipline IDCs - Areas** |
| 1 | **01 02 08 Area A - Dewsbury to Batley** |
| 2 | **01 02 08 Area B - Batley to Morley** |
| 3 | **01 02 08 Area C - Morley to Copley Hill** |
| 5 | **Project Management Deliverables** |
| 1 | **Construction** |
| 1 | **Constructability & Logisitics Report (inc Engineering Access)** |
| 2 | **Engineering Access** |
| 2 | **Sustainability** |
| 1 | **Environmental & Social Performance Appraisal** |
| 2 | **Environmental Statement and Appendices** |
| 9 | **Environmental & Social Management Plan** |
| 3 | **Environmental Impact Assessment Screening** |
| 4 | **Weather Resilience & Climate Change Risk Report** |
| 10 | **Consultation Report** |

| WBS | Activity |
| --- | --- |
| 5 | **Biodiversity Calculator** |
| 11 | **Future Needs Analysis** |
| 12 | **Heritage Assessment** |
| 13 | **Visual Landscape Assessment** |
| 14 | **Resource Efficiency Workshop and Policy** |
| 15 | **Transport Report** |
| 16 | **Workforce Travel Plan** |
| 17 | **Water Quality** |
| 21 | **Risk and Resilience** |
| 22 | **Socio-Economic Impact Assessment (Including Social Impact Tool)** |
| 23 | **Transpire Access Strategy Report** |
| 24 | **Diversity Impact Assessment Report** |
| 25 | **Community Impact Assessment Report** |
| 6 | **Land and Consents Commitments Register** |
| 7 | **Land and Consents Strategy** |
| 8 | **Statement of Community & Technical Consulation (TWAO schemes)** |
| 3 | **Planning and Controls** |
| 1 | **Project Management Plan** |
| 2 | **LoC Assessment (Mgt LoC)** |
| 3 | **GRIP 5-8 Project Programme/Schedule** |
| 4 | **Programme/Schedule Quantitative Schedule Risk Assessment** |
| 5 | **Quantitative Cost Risk Assessment (QCRA)** |
| 6 | **Assumptions & Deficiencies Register** |
| 7 | **Risk Register** |
| 8 | **Formal Cost Planning Report** |
| 9 | **Cost Analysis Framework** |
| 10 | **LCC GRIP 4 Report** |
| 4 | **Client Services** |
| 1 | **State Gate Checklist & Certficate** |
| 5 | **Health and Safety** |
| 1 | **Safety Risk & Mitigation Log** |
| 6 | **Transformation and Stakeholder** |
| 1 | **VM Lessons Learnt** |
| 7 | **Organisation** |
| 6 | **W4 Engineering Management Deliverables** |
| 1 | **Engineering Assurance** |
| 1 | **Ergonomics AIP Form F005** |
| 2 | **NR/L2/INI/02009 Forms F0037,38,39,40,41,42,43** |
| 3 | **Schedule of Deviations from Standards / Technical Non-Compliance (TNC)** |
| 4 | **VM Value Engineering** |
| 2 | **CDM** |
| 1 | **Health and Safety File** |
| 2 | **Principal Designer Review Summary Report (CDM)** |
| 3 | **CSM** |
| 40 | **Hazid Activities** |
| 1 | **Project Authorisation Strategy** |
| 2 | **System Definition Early GRIP 4** |
| 7 | **System Definition Late GRIP 4** |
| 3 | **System Safety Plan** |
| 4 | **Safety Justification Report** |
| 5 | **Safety Assessment Report** |
| 6 | **Project Hazard Record** |
| 4 | **Asset Management** |
| 1 | **Ergonomics AIP Form F005 (duplicate???)** |
| 2 | **Emergency Response Plan (ERPs)** |
| 3 | **GRIP 4 Survey Specification** |
| 4 | **Predictive Workload Analysis** |
| 5 | **LCC GRIP 4 Report** |
| 6 | **Asset Management Plan (AMP Process)** |
| 7 | **RAM Plan** |
| 8 | **RAM Report** |
| 5 | **Requirements V&V** |
| 1 | **Intervention - Client Requirements Doc (I-CRD)** |
| 2 | **Intervention - Route Requirements Doc (I-RRD)** |
| 3 | **Intervention - Detailed Requirements Doc (I-DRRD)** |
| 4 | **V&V Plan (Sub Programme)** |
| 5 | **V&V Matrix against i-CRD** |
| 6 | **V&V Matrix against i-RRD** |
| 7 | **Design Compliance Verrification Report (I-CRD)** |
| 8 | **Design Compliance Verification Report (I-RRD)** |

| WBS | Activity |
| --- | --- |
| 6 | **Programme Operations** |
| 1 | **Operational and Maintenance Requirements Specification** |
| 2 | **Statement of Capabilities** |
| 7 | **Interfacing and Architecture** |
| 1 | **System Architecture Plan** |
| 2 | **Systems Architecture** |
| 3 | **Technical Interface Register** |
| 8 | **BIM** |
| 1 | **BIM Compliance (CADQA) Report** |
| 2 | **BIM Model** |
| 3 | **Deliverables Matrix or MIDP** |
| 9 | **W5 Engineering Management Deliverables** |
| 1 | **Engineering Assurance** |
| 1 | **Ergonomics AIP Form F005** |
| 2 | **NR/L2/INI/02009 Forms F0037,38,39,40,41,42,43** |
| 3 | **Schedule of Deviations from Standards / Technical Non-Compliance (TNC)** |
| 4 | **VM Value Engineering** |
| 2 | **CDM** |
| 1 | **Health and Safety File** |
| 2 | **Principal Designer Review Summary Report (CDM)** |
| WOL-CSM | **CSM** |
| 1 | **Project Preperation -** |
| 6 | **CSM Deliverables Set** |
| 1 | **Project System Safety Plan (SSP)** |
| 2 | **Project Authorisation Strategy (PAS)** |
| 3 | **Project System Definition Document (SDD)** |
| 4 | **Project System Justification Report (SJR)** |
| 5 | **Project Hazard Record (HR)** |
| 4 | **CSM Document Set** |
| 2 | **AsBo Review** |
| 3 | **Final Submission** |
| 4 | **Asset Management** |
| 1 | **Ergonomics AIP Form F005 (duplicate???)** |
| 2 | **Emergency Response Plan (ERPs)** |
| 3 | **GRIP 4 Survey Specification** |
| 4 | **Predictive Workload Analysis** |
| 5 | **LCC GRIP 4 Report** |
| 6 | **Asset Management Plan (AMP Process)** |
| 7 | **RAM Plan** |
| 8 | **RAM Report** |
| 5 | **Requirements V&V** |
| 1 | **Intervention - Client Requirements Doc (I-CRD)** |
| 2 | **Intervention - Route Requirements Doc (I-RRD)** |
| 3 | **Intervention - Detailed Requirements Doc (I-DRRD)** |
| 4 | **Verification & Validation Plan (Sub Programme)** |
| 5 | **V & V Matrix against i-CRD** |
| 6 | **V & V Matrix against i-RRD** |
| 7 | **Design Compliance Verrification Report (I-CRD)** |
| 8 | **Design Compliance Verification Report (I-RRD)** |
| 6 | **Programme Operations** |
| 1 | **Operational and Maintenance Requirements Specification** |
| 2 | **Statement of Capabilities ???** |
| 7 | **Interfacing and Architecture** |
| 1 | **System Architecture Plan** |
| 2 | **Systems Architecture** |
| 3 | **Technical Interface Register** |
| 8 | **BIM** |
| 1 | **BIM Compliance (CADQA) Report** |
| 2 | **BIM Model** |
| 3 | **Deliverables Matrix or MIDP** |
| SPC3 | **SP&C Project Management** |
| 1 | **Commercial SP_C** |
| 1 | **Sub-Contract Orders SP_C** |
| 1 | **RSK** |
| 2 | **PSP Subcontractor** |
| 2 | **Documentation SP_C** |
| 1 | **Project Management Plan [PMP] SP_C** |
| 1 | **Amey - PMP SP_C** |
| 2 | **Siemens - PMP SP_C** |
| 2 | **Heatth & Safety Plan SP_C** |

| WBS | Activity |
| --- | --- |
| 3 | **Site Inspections Work Package Plan - Surveys SP_C** |
| 4 | **Test WPP - Correlation SP_C** |
| 3 | **Development SP_C** |
| 1 | **Tendering & Estimating SP_C** |
| SPC4 | **SP&C Engineering** |
| 1 | **Engineering Management Plan - Amey SP_C** |
| 2 | **Engineering Management Plan - Siemens SP_C** |
| 3 | **Ops and Maintenance Strategy SP_C** |
| 4 | **Interface Specification SP_C** |
| 5 | **Compatibility Report SP_C** |
| 6 | **Remote Condition Monitoring Plan SP_C** |
| 7 | **Recoveries Report / Plan SP_C** |
| 8 | **Bill Of Materials [BOM] SP_C** |
| 9 | **Signal Sighting Model SP_C** |
| 10 | **Engineering Compliance Report SP_C** |
| 11 | **Engineering Compliance Certificate SP_C** |
| SPC5 | **SP&C Assurance** |
| 1 | **Fracas Report / Plan SP_C** |
| 2 | **Initial Assurance Assessment Report SP_C** |
| 3 | **Initial Reliability Predictions SP_C** |
| 4 | **Safety Assurance Plan SP_C** |
| 11 | **W5 Design Deliverables - Option 5B** |
| 5 | **GRIP 5-8 Target Cost & Governance** |
| M | **Milestones** |
| 2 | **Design** |
| 1 | **Scopes** |
| 1 | **Scope Split** |
| 2 | **Next Section Scope** |
| 3 | **GRIP 5 / 6 Scope** |
| 4 | **Design for Estimating** |
| 5 | **Construction Methodologies** |
| 2 | **Schedule** |
| 1 | **Development** |
| 2 | **Assurance** |
| 3 | **Pricing** |
| 2 | **Bill of Quantities** |
| 3 | **Sub-Participant / Supplier Pricing** |
| 4 | **Indirect Costs (Prelims)** |
| 5 | **Direct Costs** |
| 6 | **Finalise Estimate** |
| 4 | **Risk Report** |
| 1 | **Compilation** |
| 2 | **Analysis** |
| 6 | **Final Governance** |
| 1 | **Alliance Governance** |
| 2 | **NOP Governance** |
| 3 | **Owner Governance** |
| 12 | **W5 PM Deliverables - Option 5B** |
| 8 | **Section 9 Part 1 Section Proposal** |
| M | **Milestones** |
| 1 | **Section Proposal** |
| 2 | **Design** |
| 1 | **Scopes** |
| 1 | **Scope Split** |
| 3 | **GRIP 5 Scope** |
| 2 | **Schedule** |
| 1 | **Development** |
| 2 | **Assurance** |
| 3 | **Pricing** |
| 4 | **Indirect Costs (Prelims)** |
| 5 | **Direct Costs** |
| 6 | **Finalise Estimate** |
| 4 | **Risk Report** |
| 1 | **Compilation** |
| 2 | **Analysis** |
| 5 | **Section Proposal** |
| 1 | **Document Preparation** |
| 2 | **Document Finalisation** |
| 6 | **Final Governance** |
| 1 | **Alliance Governance** |

| WBS | Activity |
| --- | --- |
| 2 | **NOP Governance** |
| 3 | **Owner Governance** |
| 4 | **Stage Gate Estimating** |
| M | **Milestones** |
| 2 | **Design** |
| 1 | **Scopes** |
| 1 | **Scope Split** |
| 2 | **GRIP 5 / 6 Scope** |
| 5 | **Construction Methodologies** |
| 2 | **Schedule** |
| 1 | **Development** |
| 2 | **Assurance** |
| 3 | **Pricing** |
| 3 | **Sub-Participant / Supplier Pricing** |
| 4 | **Indirect Costs (Prelims)** |
| 5 | **Direct Costs** |
| 6 | **Finalise Estimate** |
| 4 | **Risk Report** |
| 1 | **Compilation** |
| 2 | **Analysis** |
| 5 | **Section Proposal** |
| 1 | **Document Preparation** |
| 2 | **Document Finalisation** |
| 6 | **Final Governance** |
| 1 | **Alliance Governance** |
| 2 | **NOP Governance** |
| 3 | **Owner Governance** |
| 5 | **GRIP 4 - iELC** |
| 1 | **iELC Deliverables Available** |
| 2 | **iELC Meeting** |
| 6 | **GRIP 4 - Stage Gate** |
| 1 | **SG Deliverables** |
| 2 | **SG Readiness** |
| 3 | **SG Meeting** |
| 3 | **PMO** |
| 1 | **Intervention** |
| 1 | **ES** |
| 1 | **Asset Management** |
| 1 | **Ergonomics AIP Form F005** |
| 2 | **Emergency Response Plan (ERPs)** |
| 3 | **GRIP 4 Survey Specification** |
| 4 | **Predictive Workload Analysis** |
| 5 | **LCC GRIP 4 Report** |
| 6 | **Asset Management Plan (AMP Process)** |
| 7 | **RAM Plan** |
| 8 | **RAM Report** |
| 2 | **Engineering Services Leads** |
| 58 | **VM Value Engineering** |
| 3 | **CSM** |
| 1 | **Project Authorisation Strategy** |
| 2 | **System Definition** |
| 3 | **Safety Justification Report** |
| 4 | **Safety Assessment Report** |
| 5 | **Project Hazard Record** |
| 4 | **CDM** |
| 1 | **Health and Safety File** |
| 2 | **Principal Designer Review Summary Report (CDM)** |
| 5 | **Interfacing and Architecture** |
| 1 | **Project Level Systems Architecture (Physical)** |
| 2 | **Technical Interface Management Plan (PW)** |
| 3 | **Technical Interface Register** |
| 6 | **Programme Operations** |
| 1 | **Statement of Capabilities** |
| 2 | **Operational and Maintenance Requirements Specification** |
| 7 | **Requirements V&V** |
| 1 | **Client Requirements Doc (I-CRD)** |
| 2 | **Detailed Requirements Doc (I-DRRD)** |
| 3 | **Route Requirements Doc (I-RRD)** |
| 4 | **V&V Matrix (I-CRD)** |
| 5 | **V&V Matrix (I-RRD)** |

| WBS | Activity |
| --- | --- |
| 6 | **V&V Activities Spec-(ICRD)** |
| 7 | **V&V Activities Spec (IRRD)** |
| 8 | **Design Compliance Verrification Report (I-CRD)** |
| 9 | **Design Compliance Verification Report (I-RRD)** |
| 8 | **Engineering Deliverables** |
| 1 | **BIM Compliance Report** |
| 2 | **PMO** |
| 1 | **Engineering Assurance** |
| 1 | **Ergonomics AIP Form F005** |
| 2 | **NR/L2/INI/02009 Forms F0037,38,39,40,41,42,43** |
| 2 | **Construction** |
| 1 | **Constructability Report** |
| 3 | **Health and Safety** |
| 1 | **Safety Strategy** |
| 2 | **Safety Risk & Mitigation Log** |
| 4 | **Planning and Controls** |
| 1 | **Project Management Plan** |
| 2 | **LoC Assessment (Mgt LoC)** |
| 3 | **Project Programme/Schedule** |
| 4 | **Programme/Schedule Quantitative Schedule Risk Assessment** |
| 5 | **Quantitative Cost Risk Assessment (QCRA)** |
| 6 | **Possession Quantitative Schedule Risk Assessment** |
| 7 | **Assumptions & Deficiencies Register** |
| 5 | **Engineering Deliverables** |
| 1 | **Inter Disciplinary Design Review (IDR)** |
| 2 | **Schedule of Deviations from Standards (TNC)** |
| 3 | **Track Position Strategy** |
| 6 | **Client Services** |
| 1 | **Network Change** |
| 2 | **Station Change** |
| 3 | **State Gate Checklist & Certficate** |
| 7 | **Land and Consents** |
| 1 | **Land and Consents Commitments Register** |
| 2 | **Land and Consents Strategy** |
| 8 | **Sustainability** |
| 1 | **Environmental & Social Review Acceptance Form** |
| 2 | **Environmental Appraisal** |
| 3 | **Weather Resilience & Climate Change Risk Report** |
| 4 | **Biodiversity Calculator** |
| 5 | **Diversity Impact Assessment ?** |
| 6 | **Environmental & Social Management Plan** |
| 9 | **Transformation and Stakeholder** |
| 1 | **Stakeholder & Customer Management Plan** |
| 2 | **VM Lessons Learnt** |
| 7 | **DELETED ACTIVITIES** |

# P03 Project W4 GRIP 4 Section Proposal Schedule FINAL v2

Schedule from Primavera P6, 2020-05-11 to 2021-06-11, data date 2020-06-28, A marks actual dates.

## Calendars

- A04 7 Day Workweek (BH & Xmas as Work): Mon-Sun 08:00-12:00, 13:00-17:00.
- A03 5 Day Workweek (BH & Xmas as Work): Mon-Fri 08:00-12:00, 13:00-17:00; Sat-Sun off.

## Schedule

| ID | WBS | Activity | Type | Duration | Start | Finish | Predecessors | Complete | Total float | Free float | Calendar |
| --- | --- | --- | --- | --- | --- | --- | --- | --- | --- | --- | --- |
|  | 9 | **Morley Station Key Milestones** |  |  |  |  |  |  |  |  |  |
|  | 1 | **Strategic Milestones** |  |  |  |  |  |  |  |  |  |
|  | 1 | **Milestones** |  |  |  |  |  |  |  |  |  |
|  | 1 | **Strategic Milestones** |  |  |  |  |  |  |  |  |  |
|  | 2 | **Key Tactical Milestones** |  |  |  |  |  |  |  |  |  |
|  | 3 | **Section Proposal Milestones** |  |  |  |  |  |  |  |  |  |
|  | 4 | **SP_C Milestones** |  |  |  |  |  |  |  |  |  |
|  | SPC2 | **Interface Management** |  |  | 2020-05-11 | 2021-06-11 |  |  |  |  |  |
|  | 1 | **External Interfaces** |  |  | 2020-05-11 | 2021-06-11 |  |  |  |  |  |
|  | 3 | **EXT IN New 16042020** |  |  | 2020-05-11 | 2021-06-11 |  |  |  |  |  |
|  | 1 | **SECTION A - 33m 42ch to 34m 54ch** |  |  | 2020-05-11 | 2020-11-13 |  |  |  |  |  |
| A65330.271 |  | [EXT IN] Structural Off-Track Drainage - Survey Info Available - DESCOPED | milestone | 0d | 2020-05-11 A | 2020-05-11 A | A65330.271 (other project) | 100% |  |  |  |
| A65330.431 |  | [EXT IN] Off-Track Survey - Dewsbury Station inc. Roads & MDL1/16 George St, MDL1/17 Ashworth Gardens - Data Available | milestone | 0d | 2020-07-01 | 2020-07-01 | A65330.431 (other project) |  | 562d | 149d |  |
| A65330.141 |  | [EXT IN] ABS - Survey Info Available | milestone | 0d | 2020-07-17 | 2020-07-17 | A65330.141 (other project) |  | 137d | 0d |  |
| A65330.441 |  | [EXT IN] Track Survey - 34m 10ch to 34m 30ch // Off-Track - Dewsbury Disused Tunnel, MDL1/23 Wood Lane - Data Available | milestone | 0d | 2020-07-17 | 2020-07-17 | A65330.441 (other project) |  | 546d | 133d |  |
| A65330.451 |  | [EXT IN] Track Survey - 34m 30ch to 34m 60ch // Off-Track - MDL1/24 Jack Lane - Data Available | milestone | 0d | 2020-07-17 | 2020-07-17 | A65330.451 (other project) |  | 230d | 110d |  |
| A65330.361 |  | [EXT IN] Dewsbury Station GPR - Survey Info Available | milestone | 0d | 2020-07-31 | 2020-07-31 | A65330.361 (other project) |  | 166d | 0d |  |
| A65330.371 |  | [EXT IN] Dewsbury Station Asbestos - Survey Info Available | milestone | 0d | 2020-08-03 | 2020-08-03 | A65330.371 (other project) |  | 163d | 60d |  |
| A65330.381 |  | [EXT IN] Dewsbury Station Off-Track Drainage - Survey Info Available | milestone | 0d | 2020-08-03 | 2020-08-03 | A65330.381 (other project) |  | 163d | 0d |  |
| A65330.161 |  | [EXT IN] Trial Pits - Survey Info Available | milestone | 0d | 2020-08-20 | 2020-08-20 | A65330.161 (other project) |  | 59d | 0d |  |
| A65330.251 |  | [EXT IN] Structural Trial Pits - Survey Info Available | milestone | 0d | 2020-09-04 | 2020-09-04 | A65330.251 (other project) |  | 497d | 84d |  |
| A65330.351 |  | [EXT IN] Dewsbury Station: Coring, Trial Pits & Paint Samples - Survey Info Available | milestone | 0d | 2020-10-02 | 2020-10-02 | A65330.351 (other project) |  | 103d | 0d |  |
| A68630 |  | [EXT IN] Drainage Complete - Area A Surveys | milestone | 0d | 2020-10-05 | 2020-10-05 | A68630 (other project) |  | 10d | 0d | A03 5 Day Workweek (BH & Xmas as Work) |
| A65330.151 |  | [EXT IN] Window Samples - Survey Info Available | milestone | 0d | 2020-10-23 | 2020-10-23 | A65330.151 (other project) |  | 39d | 0d |  |
| A65330.261 |  | [EXT IN] Structural Coring & Paint Samples - Survey Info Available | milestone | 0d | 2020-10-30 | 2020-10-30 | A65330.261 (other project) |  | 441d | 28d |  |
| A65330.171 |  | [EXT IN] Boreholes - Survey Info Available | milestone | 0d | 2020-11-13 | 2020-11-13 | A65330.171 (other project) |  | 23d | 0d |  |
| A65330.591 |  | [EXT IN] Drainage - Survey Info Available | milestone | 0d | 2020-11-13 | 2020-11-13 | A65330.591 (other project) |  | 235d | 0d |  |

| ID | WBS | Activity | Type | Duration | Start | Finish | Predecessors | Total float | Free float | Calendar |
| --- | --- | --- | --- | --- | --- | --- | --- | --- | --- | --- |
|  | 2 | **SECTION B - 34m 54ch to 38m 10ch** |  |  | 2020-07-07 | 2020-12-01 |  |  |  |  |
| A65330.471 |  | [EXT IN] Batley Station On & Off Track Survey & MDL1/27, MDL1/28, MDL1/29 - Data Available | milestone | 0d | 2020-07-07 | 2020-07-07 | A65330.471 (other project) | 246d | 0d |  |
| A65330.461 |  | [EXT IN] Track Survey - 34m70ch - 35m30ch - Fence to Fence Where Possible inc. Platforms - Data Available | milestone | 0d | 2020-07-15 | 2020-07-15 | A65330.461 (other project) | 548d | 135d |  |
| A65330.481 |  | [EXT IN] Track Survey 35m 30ch to 35m 70ch - Data Available | milestone | 0d | 2020-07-22 | 2020-07-22 | A65330.481 (other project) | 541d | 128d |  |
| A65330.281 |  | [EXT IN] Structural Trial Pits - Survey Info Available | milestone | 0d | 2020-07-31 | 2020-07-31 | A65330.281 (other project) | 532d | 119d |  |
| A65330.311 |  | [EXT IN] Structural Slit Trench/GPR - Survey Info Available | milestone | 0d | 2020-07-31 | 2020-07-31 | A65330.311 (other project) | 532d | 119d |  |
| A65330.401 |  | [EXT IN] Batley Station GPR - Survey Info Available | milestone | 0d | 2020-07-31 | 2020-07-31 | A65330.401 (other project) | 222d | 0d |  |
| A65330.421 |  | [EXT IN] Batley Station Off-Track Drainage - Survey Info Available | milestone | 0d | 2020-08-03 | 2020-08-03 | A65330.421 (other project) | 219d | 0d |  |
| A65330.491 |  | [EXT IN] Track Survey 35m 70ch to 36m 20ch inc. MDL1/34, MDL1/35 - Data Available | milestone | 0d | 2020-08-19 | 2020-08-19 | A65330.491 (other project) | 513d | 100d |  |
| A65330.631 |  | [EXT IN] Morley Tunnel Trial Pits - Survey Info Available | milestone | 0d | 2020-08-21 | 2020-08-21 | A65330.631 (other project) | 511d | 98d |  |
| A65330.241 |  | [EXT IN] Boreholes - Survey Info Available | milestone | 0d | 2020-09-18 | 2020-09-18 | A65330.241 (other project) | 30d | 0d |  |
| A65330.411 |  | [EXT IN] Batley Station Asbestos - Survey Info Available | milestone | 0d | 2020-09-18 | 2020-09-18 | A65330.411 (other project) | 173d | 28d |  |
| A65330.601 |  | [EXT IN] Drainage - Survey Info Available | milestone | 0d | 2020-09-24 | 2020-09-24 | A65330.601 (other project) | 285d | 10d |  |
| A65330.651 |  | [EXT IN] Morley Tunnel Geophysics - Survey Info Available | milestone | 0d | 2020-10-02 | 2020-10-02 | A65330.651 (other project) | 135d | 0d |  |
| A68650 |  | [EXT IN] Drainage Complete - Area B Surveys | milestone | 0d | 2020-10-05 | 2020-10-05 | A68650 (other project) | 10d | 0d | A03 5 Day Workweek (BH & Xmas as Work) |
| A65330.501 |  | [EXT IN] Morley Tunnel Survey 36m 20ch to 38m 20ch - Data Available | milestone | 0d | 2020-10-07 | 2020-10-07 | A65330.501 (other project) | 464d | 51d |  |
| A65330.181 |  | [EXT IN] ABS (On Track) - Survey Info Available | milestone | 0d | 2020-10-16 | 2020-10-16 | A65330.181 (other project) | 9d | 0d |  |
| A65330.391 |  | [EXT IN] Batley Station: Coring & Paint Samples - Survey Info Available | milestone | 0d | 2020-10-16 | 2020-10-16 | A65330.391 (other project) | 145d | 0d |  |
| A65330.291 |  | [EXT IN] Structural Coring - Survey Info Available | milestone | 0d | 2020-10-23 | 2020-10-23 | A65330.291 (other project) | 448d | 35d |  |
| A65330.641 |  | [EXT IN] Morley Tunnel Drainage (Tunnel Bore & Portals) - Survey Info Available | milestone | 0d | 2020-11-13 | 2020-11-13 | A65330.641 (other project) | 427d | 14d |  |
| A65330.621 |  | [EXT IN] Morley Tunnel Coring - Survey Info Available | milestone | 0d | 2020-11-27 | 2020-11-27 | A65330.621 (other project) | 413d | 0d |  |
| A65330.191 |  | [EXT IN] Window Samples - Survey Info Available | milestone | 0d | 2020-12-01 | 2020-12-01 | A65330.191 (other project) | 5d | 0d |  |
|  | 3 | **SECTION C - 39m 62ch to 41m 78ch** |  |  | 2020-07-03 | 2020-12-03 |  |  |  |  |
| A65330.511 |  | [EXT IN] Track Survey - 39m 60ch to 40m 30ch Churwell Viaduct - Data Available | milestone | 0d | 2020-07-03 | 2020-07-03 | A65330.511 (other project) | 560d | 147d |  |
| A65330.581 |  | [EXT IN] Track Survey - 41m40ch to 42m20ch - Data Available | milestone | 0d | 2020-07-03 | 2020-07-03 | A65330.581 (other project) | 560d | 147d |  |
| A65330.541 |  | [EXT IN] Track Survey - 40m 30ch to 41m 10ch - Data Available | milestone | 0d | 2020-07-17 | 2020-07-17 | A65330.541 (other project) | 546d | 133d |  |
| A65330.231 |  | [EXT IN] Trial Pits - Survey Info Available | milestone | 0d | 2020-07-31 | 2020-07-31 | A65330.231 (other project) | 79d | 0d |  |
| A65330.321 |  | [EXT IN] Structural Trial Pits - Survey Info Available | milestone | 0d | 2020-07-31 | 2020-07-31 | A65330.321 (other project) | 532d | 119d |  |
| A65330.531 |  | [EXT IN] Off-Track Survey - MDL1/41A Cottingley Footbridge - Data Available | milestone | 0d | 2020-08-06 | 2020-08-06 | A65330.531 (other project) | 526d | 113d |  |
| A65330.551 |  | [EXT IN] Track Survey - 41m 10ch to 41m 40ch & Off Track - MDL1/47 Whitehall Road / Dragon bridge - Data Available | milestone | 0d | 2020-08-06 | 2020-08-06 | A65330.551 (other project) | 526d | 113d |  |
| A65330.521 |  | [EXT IN] Off-Track Survey - MDL1/40 Churwell Viaduct - Data Available | milestone | 0d | 2020-08-07 | 2020-08-07 | A65330.521 (other project) | 525d | 112d |  |
| A65330.571 |  | [EXT IN] Off-Track Survey - MDL1/48 Search's Footbridge - Data Available | milestone | 0d | 2020-08-21 | 2020-08-21 | A65330.571 (other project) | 511d | 98d |  |
| A65330.561 |  | [EXT IN] Track Survey - MDL1/49 to DOL2/41 - Data Available | milestone | 0d | 2020-08-27 | 2020-08-27 | A65330.561 (other project) | 505d | 92d |  |
| A68700 |  | [EXT IN] Drainage Complete - Area C Surveys | milestone | 0d | 2020-09-11 | 2020-09-11 | A68700 (other project) | 65d | 0d | A03 5 Day Workweek (BH & Xmas as Work) |
| A65330.341 |  | [EXT IN] Structural Off-Track Drainage - Survey Info Available | milestone | 0d | 2020-09-18 | 2020-09-18 | A65330.341 (other project) | 483d | 70d |  |
| A65330.331 |  | [EXT IN] Structural Coring & Paint Samples - Survey Info Available | milestone | 0d | 2020-10-02 | 2020-10-02 | A65330.331 (other project) | 469d | 56d |  |
| A65330.211 |  | [EXT IN] ABS (On Track) - Survey Info Available C | milestone | 0d | 2020-10-16 | 2020-10-16 | A65330.211 (other project) | 46d | 0d |  |
| A65330.611 |  | [EXT IN] Drainage - Survey Info Available | milestone | 0d | 2020-10-23 | 2020-10-23 | A65330.611 (other project) | 49d | 0d |  |
| A65330.221 |  | [EXT IN] Window Samples - Survey Info Available | milestone | 0d | 2020-12-03 | 2020-12-03 | A65330.221 (other project) | -2d | 0d |  |

| ID | WBS | Activity | Type | Duration | Start | Finish | Predecessors | Total float | Free float |
| --- | --- | --- | --- | --- | --- | --- | --- | --- | --- |
|  | 4 | **FULL W4 MILEAGE - 33m 42ch to 41m 78ch** |  |  | 2020-07-31 | 2021-06-11 |  |  |  |
| A65330.721 |  | [EXT IN] Telecoms: Cable Route - Survey Info Available | milestone | 0d | 2020-07-31 | 2020-07-31 | A65330.721 (other project) | 82d | 2d |
| A65330.681 |  | [EXT IN] Gauging - Survey Info Available | milestone | 0d | 2020-08-14 | 2020-08-14 | A65330.681 (other project) | 103d | 0d |
| A65330.691 |  | [EXT IN] Pedestrian Flow - Survey Info Available | milestone | 0d | 2020-08-14 | 2020-08-14 | A65330.691 (other project) | 269d | 0d |
| A65330.701 |  | [EXT IN] Off-Track Culvert Inspections - Survey Info Available | milestone | 0d | 2020-08-28 | 2020-08-28 | A65330.701 (other project) | 312d | 0d |
| A65330.711 |  | [EXT IN] E&P - Survey Info Available | milestone | 0d | 2020-09-09 | 2020-09-09 | A65330.711 (other project) | 270d | 0d |
| A65330.731 |  | [EXT IN] Telecoms: SISS, Cable Verification & Fringe Signal Box - Survey Info Available | milestone | 0d | 2020-09-11 | 2020-09-11 | A65330.731 (other project) | 96d | 0d |
| A65330.671 |  | [EXT IN] Powerline Crossings / Heights & Staggers / Bonding - Survey Info Available | milestone | 0d | 2020-09-18 | 2020-09-18 | A65330.671 (other project) | 263d | 0d |
| A65330.661 |  | [EXT IN] OLE Trial Holes - Survey Info Available | milestone | 0d | 2021-06-11 | 2021-06-11 | A65330.661 (other project) | 217d | 0d |
|  | 4 | **EXT IN (SP_C)** |  |  |  |  |  |  |  |
|  | 2 | **EXT OUT (SP_C)** |  |  |  |  |  |  |  |
|  | 2 | **Internal Interfaces** |  |  |  |  |  |  |  |
|  | 1 | **INT** |  |  |  |  |  |  |  |
|  | 1 | **Signalling** |  |  |  |  |  |  |  |
|  | 2 | **E&P** |  |  |  |  |  |  |  |
|  | 3 | **Networks** |  |  |  |  |  |  |  |
|  | 4 | **Control Systems** |  |  |  |  |  |  |  |
|  | 5 | **Telecoms** |  |  |  |  |  |  |  |
|  | 2 | **Project Team** |  |  |  |  |  |  |  |
|  | 1 | **Reviews, Meetings and Reports** |  |  |  |  |  |  |  |
|  | 2 | **Validation & Early GRIP 4** |  |  |  |  |  |  |  |
|  | 1 | **GRIP 4 Schedule Development** |  |  |  |  |  |  |  |
|  | 3 | **GRIP 4 - AIP Design** |  |  |  |  |  |  |  |
|  | 22 | **Morley Station Validation New Scope** |  |  |  |  |  |  |  |
|  | 1 | **W5 General** |  |  |  |  |  |  |  |
|  | 4 | **W5 TQ's & RFI's** |  |  |  |  |  |  |  |
|  | 6 | **01 Track Design** |  |  |  |  |  |  |  |
|  | 1 | **General** |  |  |  |  |  |  |  |
|  | 1 | **Input** |  |  |  |  |  |  |  |
|  | 1 | **Key Survey Dates - Area A** |  |  |  |  |  |  |  |
|  | 2 | **Key Survey Dates - Area B** |  |  |  |  |  |  |  |
|  | 3 | **Key Survey Dates - Area C** |  |  |  |  |  |  |  |
|  | 2 | **Reports/Assessments** |  |  |  |  |  |  |  |
|  | 6 | **Area M - Morley Station Track** |  |  |  |  |  |  |  |
|  | 2 | **Area A - Dewsbury to Batley Track Design** |  |  |  |  |  |  |  |
|  | 4 | **PWay AIP** |  |  |  |  |  |  |  |
|  | 1 | **PWay AIP DELETE AFTER LOGIC TRACING** |  |  |  |  |  |  |  |
|  | 2 | **Reports** |  |  |  |  |  |  |  |
|  | 3 | **Update Track Design - Dewsbury to Batley** |  |  |  |  |  |  |  |
|  | 3 | **Area B - Batley to Morley Track Design** |  |  |  |  |  |  |  |
|  | 4 | **PWay AIP** |  |  |  |  |  |  |  |
|  | 1 | **PWay AIP DELETE AFTER LOGIC TRACING** |  |  |  |  |  |  |  |
|  | 2 | **Reports** |  |  |  |  |  |  |  |
|  | 3 | **Update Track Design - Batley to Morley** |  |  |  |  |  |  |  |
|  | 4 | **Area C - Morley to Copley Hill Track Design-** |  |  |  |  |  |  |  |
|  | 4 | **PWay AIP** |  |  |  |  |  |  |  |
|  | 1 | **PWay AIP DELETE AFTER LOGIC TRACING** |  |  |  |  |  |  |  |
|  | 2 | **Reports** |  |  |  |  |  |  |  |
|  | 3 | **Update Track Design - Morley to Copley Hill** |  |  |  |  |  |  |  |
|  | 5 | **Area D - Copley Hill to Leeds Central Track Design - TBC (Scope not yet Authorised)** |  |  |  |  |  |  |  |
|  | 4 | **PWay AIP new actys** |  |  |  |  |  |  |  |
|  | 1 | **PWay AIP DELETE AFTER LOGIC TRACING** |  |  |  |  |  |  |  |
|  | 2 | **Reports** |  |  |  |  |  |  |  |
|  | 3 | **Update Track Design - Copley Hill to Leeds Central** |  |  |  |  |  |  |  |
|  | 2 | **02 OLE** |  |  |  |  |  |  |  |
|  | 23 | **02 OLE Design** |  |  |  |  |  |  |  |
|  | 8 | **General** |  |  |  |  |  |  |  |
|  | 2 | **Inputs** |  |  |  |  |  |  |  |
|  | 1 | **Reports / Assesments** |  |  |  |  |  |  |  |
|  | 1 | **Area M - Morley Station OLE** |  |  |  |  |  |  |  |
|  | 5 | **Area A - Dewsbury to Batley OLE** |  |  |  |  |  |  |  |
|  | 1 | **Design Development** |  |  |  |  |  |  |  |
|  | 6 | **Area B - Batley to Morley OLE** |  |  |  |  |  |  |  |
|  | 1 | **Design Development** |  |  |  |  |  |  |  |
|  | 7 | **Area C - Morley to Copley Hill OLE** |  |  |  |  |  |  |  |
|  | 1 | **Design Development** |  |  |  |  |  |  |  |
|  | 2 | **Area A - Dewsbury to Batley OLE Design** |  |  |  |  |  |  |  |
|  | 1 | **OLE Design** |  |  |  |  |  |  |  |
|  | 2 | **Layout Design** |  |  |  |  |  |  |  |
|  | 3 | **Form A** |  |  |  |  |  |  |  |

| WBS | Activity |
| --- | --- |
| 4 | **Update OLE Design - Dewsbury to Batley** |
| 4 | **Area B - Batley to Morley OLE Design** |
| 1 | **OLE Design** |
| 2 | **Layout Design** |
| 3 | **Form A** |
| 4 | **Update OLE Design - Batley to Morley** |
| 3 | **Area C - Morley to Copley Hill OLE Design** |
| 1 | **OLE Design** |
| 2 | **Layout Design** |
| 3 | **Form A** |
| 4 | **Update OLE Design - Morley to Copley Hill** |
| 3 | **03 Telecoms** |
| 11 | **Telecoms Morley Station** |
| 2 | **System Architecture** |
| 4 | **Testing Strategy** |
| 3 | **AiP - SISS Telecoms** |
| 1 | **AiP - Ops Comms** |
| 8 | **Input** |
| 2 | **Reference System Design (SISS)** |
| 1 | **Dewsbury Station** |
| 2 | **Batley Station** |
| 1 | **Reference System Design (SCADA)** |
| 10 | **High Level Design (SCADA)** |
| 9 | **SCADA** |
| 1 | **SCADA - Design** |
| 5 | **Update SCADA (following Multid IDC)** |
| 3 | **Reference System Design (Ops)** |
| 4 | **Route Wide Security plan** |
| 6 | **Route Wide Cable Route Strategy** |
| 7 | **Telecoms Testing Strategy** |
| 5 | **TENE FTN Scheme Outline Design** |
| 34 | **Update Telecomms AiP** |
| 16 | **03 Telecoms SP_C** |
| 1 | **Surveys** |
| 1 | **Grip 4 Surveys** |
| 2 | **Telecoms Survey Report** |
| 3 | **Cable Route Report** |
| 2 | **Circuit Allocation Spreadsheet [CAS]** |
| 3 | **Outline Telecoms Cable & Route Design** |
| 4 | **Siting Information** |
| 5 | **Straight Line Diagrams** |
| 6 | **HMI Layouts** |
| 1 | **NR Review** |
| 2 | **LOM Review** |
| 7 | **Telecoms Reference System Design** |
| 8 | **Auto Reconfigurable Power Suppiy [ARPS]** |
| 9 | **NRT SOD Production** |
| 10 | **Test Strategy** |
| 13 | **04 Distribution** |
| 10 | **Routewide Design Documents - Form A** |
| 11 | **Update W4 Routewide Distribution Design Documents** |
| 2 | **Distribution at Leeds MPTSC** |
| 1 | **Input** |
| 2 | **Design Subcontractor Surveys** |
| 3 | **Distribution - Form A** |
| 4 | **Update W4 Distribution Design** |
| 5 | **Building Services - Form 001** |
| 6 | **Update W4 Building Services Design** |
| 3 | **Distribution at Batley TSL** |
| 1 | **Input** |
| 2 | **Design Subcontractor Surveys** |
| 3 | **Distribution - Form A** |
| 4 | **Update W4 Distribution Design** |
| 5 | **Building Services - Form 001** |
| 6 | **Update W4 Building Services Design** |
| 14 | **04 E&P** |
| 21 | **E&P Morley Station** |
| 4 | **LV Power Supply and Distribution** |
| 2 | **Lighting** |
| 6 | **Station Car Park Lighting** |

| WBS | Activity |
| --- | --- |
| 5 | **EMC** |
| 1 | **Earthing and Bondings** |
| 3 | **Signalling Power** |
| 14 | **E&P Unique Activities** |
| 17 | **LV Supplies to Lineside Signalling REB** |
| 18 | **LV Supplies to Lineside Signalling Axle ACE** |
| 19 | **LV Supplies to Motor Operated Switch (MOS) Batley** |
| 20 | **LV Supplies to Traction Power Site (Leeds MPTSC)** |
| 3 | **Station LV Surveys & Reports (including lighting survey report) (3no)** |
| 1 | **Points Heating - Form A** |
| 4 | **LV Supplies to Lineside Telecoms** |
| 1 | **Dewsbury Station** |
| 2 | **Batley Station** |
| 5 | **Station E&P LV** |
| 1 | **Dewsbury Station** |
| 2 | **Batley Station** |
| 6 | **Station lightning risk assessment (Dewsbury)** |
| 7 | **LV supplies to signalling - Form A** |
| 8 | **Station Lighting** |
| 1 | **Dewsbury Station** |
| 2 | **Batley Station** |
| 9 | **Station Earthing & Bonding** |
| 1 | **Batley Station** |
| 2 | **Dewsbury Station** |
| 3 | **Morley to Copley Hill** |
| 10 | **EMC Control Plan** |
| 11 | **EMC Hazard Report** |
| 12 | **Signalling Power - Form A** |
| 13 | **Station Lift Schedule by Manufacturer** |
| 15 | **Junction Lighting Requirement Assessment** |
| 2 | **E&P Design** |
| 16 | **E&P Update following Multidisc IDC** |
| 15 | **04 E&P SP_C** |
| 1 | **E&P Site Surveys** |
| 1 | **Points Heating** |
| 2 | **Signalling Power** |
| 3 | **Signalling Power** |
| 3 | **W4 Signalling Power Form A AIP Package** |
| 1 | **Feeder Diagram** |
| 2 | **Block Cable Diagram** |
| 4 | **DNO Quotations** |
| 44 | **PSP** |
| 5 | **Feeder Design** |
| 9 | **E&P Staging Test Strategy** |
| 6 | **Points Heating Form A** |
| 7 | **Junction Lighting Form A** |
| 8 | **E & B Strategy** |
| 17 | **05 Signalling SP_C** |
| 41 | **Signal Sighting Model** |
| 40 | **Signalling Morley Station** |
| 2 | **Signal Sighting Forms** |
| 4 | **Signalling Scheme Plan to AiP** |
| 10 | **Sign Sighting Forms** |
| 3 | **Signal Sighting Report** |
| 9 | **General Management** |
| 1 | **Source Record Assessment / Request** |
| 2 | **Source Record Management Plan** |
| 3 | **Drawing Register** |
| 4 | **Clearance Point Survey** |
| 5 | **Correlation Spec** |
| 6 | **Correlation Prep and Issue sets** |
| 7 | **Signal Sighting** |
| 1 | **Signal Sighting Forms - Area A** |
| 2 | **Sign Sighting Forms - Area A** |
| 3 | **Signal Sighting Report - Area A** |
| 4 | **Signal Sighting Forms - Area B** |
| 5 | **Sign Sighting Forms - Area B** |
| 6 | **Signal Sighting Report - Area B** |
| 7 | **Signal Sighting Forms - Area C** |
| 9 | **Sign Sighting Forms - Area C** |

| WBS | Activity |
| --- | --- |
| 8 | **Signal Sighting Report - Area C** |
| 8 | **Asset Condition Assessment** |
| 9 | **Technology and Compliance Report** |
| 10 | **Signalling Project Risk Assessment Plan** |
| 11 | **Signalling Design Specification** |
| 12 | **Signalling Project Specification** |
| 13 | **Technical Interface Definition Specification** |
| 14 | **Signalling Scheme Plan To AIP** |
| 15 | **Scheme Plan Supporting Documents** |
| 1 | **Braking Calculations / Signal Spacing** |
| 2 | **Aspect Sequence Charts** |
| 3 | **TPWS Effectiveness Calculations** |
| 4 | **Headway Modelling [Calcs & Report]** |
| 5 | **Design Log / Design Risk Log / Design Risk Assessment** |
| 16 | **Stage Scheme Sketches** |
| 17 | **Risk Assessment Planning** |
| 1 | **SORAT [RSK]** |
| 2 | **Workshops [RSK]** |
| 3 | **Plans / Reports [RSK]** |
| 1 | **SORAT** |
| 2 | **Driveability** |
| 4 | **Signalling Risk Assessments** |
| 18 | **Operational Requirements** |
| 19 | **High Level System Architecture** |
| 20 | **Interlocking Requirements Specification** |
| 21 | **Cable Route Design Input** |
| 22 | **Location Area Plan [LAP]** |
| 23 | **Train Detection Strategy [Incl. IRJ Recovery]** |
| 24 | **Bonding Plan** |
| 25 | **IOM Allocations/ WTS Schematic** |
| 26 | **Fringe Requirements Spec - Thornhill LNW RRI** |
| 27 | **Fringe Requirements Spec - Leeds Smartlock** |
| 28 | **Axle Counter Schedule** |
| 29 | **Clamplock Pump Unit & Point Machine Schedule** |
| 30 | **Points Equipment Cupboards Siting Forms** |
| 31 | **Staff Protection Siting Forms** |
| 32 | **Equipment Housing Siting Forms** |
| 33 | **Signalling Power Loading - Input For E&P Form A** |
| 34 | **Interlocking Data Development Plan [IDDP]** |
| 35 | **Control Tables** |
| 36 | **Compatibility Report** |
| 37 | **Digital Ready NR11711** |
| 38 | **HAZiD Report** |
| 39 | **Product Acceptance Strategy** |
| 18 | **05 Test SP_C** |
| 1 | **Correlation** |
| 2 | **Test Strategy** |
| 19 | **05 Control Systems SP_C** |
| 1 | **Control Systems Design Spec** |
| 2 | **YROC Operation and Control Spec** |
| 3 | **YROC VDU Screen Layouts** |
| 4 | **YROC Alarm Strategy / Specification** |
| 5 | **YROC Ergonomic / Workload Assessment** |
| 6 | **YROC ARS ORS Requirements Spec** |
| 7 | **Fringe TD / EA Report** |
| 8 | **IP Addressing - Systems** |
| 20 | **05 Installation SP_C** |
| 1 | **WPP** |
| 2 | **Site Investigations** |
| 3 | **Constructability Report** |
| 4 | **Construction Strategy** |
| 5 | **Siting Forms** |
| 1 | **Staff Protection Siting Forms** |
| 2 | **Point Cabinet Siting Forms** |
| 3 | **Axle Counter Siting Forms** |
| 4 | **Equipment Housing Siting Forms** |
| 6 | **Surveys** |
| 1 | **Point Condition Assessment** |
| 2 | **Cross Track Cable Management** |
| 3 | **Cable Route Survey** |

| WBS | Activity |
| --- | --- |
| 21 | **05 Networks SP_C** |
| 1 | **Network Design Architecture** |
| 2 | **Network Design Description Schedule / Report** |
| 3 | **Network Design Specification** |
| 4 | **Network Management Design** |
| 5 | **Network IP Addressing** |
| 6 | **Network Test Strategy** |
| 11 | **06 Lineside Civils** |
| 16 | **Morley Station** |
| 00 | **Inputs** |
| 01 | **UTX** |
| 02 | **Cable Containment** |
| 03 | **Access Point** |
| 04 | **Signalling Equipment** |
| 05 | **Track Equipment (RRAP)** |
| 06 | **Power Equipment** |
| 07 | **Lineside Fencing** |
| 08 | **Standard OLE Foundations** |
| 09 | **Bespoke OLE Foundations** |
| 1 | **Continuous Position of Safety** |
| 2 | **Compound Design** |
| 1 | **Input** |
| 2 | **UTX 01** |
| 3 | **Cable Containment 02** |
| 4 | **Access Point 03** |
| 5 | **Signalling Equipment 04** |
| 6 | **Track Equipment 05** |
| 7 | **Power Equipment 06** |
| 8 | **Lineside Fencing 07** |
| 9 | **GSMR Moves 08** |
| 10 | **Bespoke OLE Foundation (3no) 09** |
| 13 | **Standard OLE Foundation 25** |
| 14 | **Continuous Position of Safety (CPOS)** |
| 15 | **MPTSC design** |
| 11 | **Ancilliary Civils Reports** |
| 12 | **Lineside Civils Approval Process** |
| 1 | **Multidiscipline IDC - Dewsbury to Batley** |
| 2 | **Multidiscipline IDC - Batley to Morley** |
| 3 | **Multidiscipline IDC - Morley to Copley Hill** |
| 9 | **07 Civils Structures** |
| 10 | **Structures Morley Station** |
| 9 | **F001 & F002** |
| 1 | **MDL1/36P2 Valley Road (Parapet Works)** |
| 2 | **MDL1/37AA Natasha Elliot Footbridge (Parapet/Minor Works)** |
| 3 | **MDL1/38 Hardings Footbridge (Parapet)** |
| 10 | **Structural Assessments** |
| 1 | **MDL1/36P2 Valley Road** |
| 2 | **MDL1/39 Structural Assessment** |
| 8 | **MDL1/40 Structural Assessment** |
| 12 | **Diversity Impact Assessments** |
| 13 | **Derailment Assessments** |
| 14 | **CRAS Culvert Assessment** |
| 6 | **MDL1/37A** |
| 1 | **CRAS Culvert Assessment** |
| 15 | **Others** |
| 1 | **Architectural Design** |
| 7 | **Civils Structures Milestones** |
| 1 | **O/B Recon, U/B Recon & Demolition for Electrification** |
| 2 | **MDL1/47 - A58 Whitehall Rd** |
| 8 | **MDL1/34 - West End Footbridge - Footbridge Removal** |
| 9 | **MDL1/16 - George St (Recon) - U/B Recon (Grade II Listed)** |
| 4 | **New Structures** |
| 7 | **Lady Anne Footbridge - New Footbridge** |
| 5 | **Structure Repairs** |
| 10 | **MDL1/28 - Subway bearings, waterproof, minor steel repairs and painting** |
| 2 | **O/B Parapet works & Registration for Electrification** |
| 5 | **MDL1/23 - Wood Ln (Grade II Listed)** |
| 1 | **MDL1/17 Ashworth Rd** |
| 2 | **MDL1/29 - Soothill Lane** |
| 3 | **MDL1/41A - Cottingley Station Footbridge** |

| WBS | Activity |
| --- | --- |
| 4 | **MDL1/43 - Gelderd Rd** |
| 3 | **Parapet Works** |
| 5 | **MDL1/41B - Beeston Royds - Registration for Electrification** |
| 1 | **MDL1/48 - Footbridge & MDL1/48A - Water Pipe Bridge** |
| 6 | **MDL1/48A - Water Pipe Bridge DEL** |
| 2 | **DOL2/41 & MDL1/49 - Intersection Bridge** |
| 3 | **MDL1/51 - Footbridge** |
| 6 | **Attach OLE Portals to Grade II Listed Viaduct** |
| 1 | **MDL1/19 - Dewsbury Viaduct (Grade II Listed)** |
| 2 | **MDL1/27 - Batley Viaduct (Grade II Listed)** |
| 3 | **MDL1/40 - Churwell Viaduct (Grade II Listed)** |
| 11 | **Structural Assessment** |
| 1 | **MDL1/14A UB Structural Assessment** |
| 2 | **MDL1/15 UB Structural Assessment** |
| 3 | **MDL1/19 UB Structural Assessment** |
| 4 | **MDL1/20 UB Structural Assessment** |
| 5 | **MDL1/21 UB Structural Assessment** |
| 6 | **MDL1/24 UB Structural Assessment (Grade II Listed)** |
| 7 | **MDL1/27 UB Structural Assessment** |
| 8 | **MDL1/30 UB Structural Assessment** |
| 9 | **MDL1/35 UB Structural Assessment** |
| 10 | **MDL1/40 UB Structural Assessment** |
| 11 | **MDL1/44A UB Structural Assessment** |
| 12 | **MDL1/52 UB Structural Assessment** |
| 13 | **DOL2/44A UB Structural Assessment** |
| 12 | **Reports / Assessments** |
| 1 | **Diversity Impact Assessments MDL1/17, 23, 29, 34, 41A, 43, 47, 48, 51** |
| 2 | **Road Vehicle Incursions MDL1/17, 29, 43, 47** |
| 3 | **Derailment Assessments MDL1/34, 41A, 48A, 48, 51, DOL2/41** |
| 13 | **Retaining Walls** |
| 1 | **MDL1/34F2 & MDL1/34G1 poor condition/ ballast issues** |
| 4 | **MDL1/34G1 poor condition/ ballast issues** |
| 2 | **MDL1/33 Intersection Bridge Disused Abutments** |
| 3 | **Retaining Walls support ground above track within 2.2m from cess rail** |
| 14 | **Civils Input** |
| 1 | **Input to Environmental** |
| 2 | **Input to OLE CRE for GL/RT1210 Risk Assessments.** |
| 3 | **Input to Surveys** |
| 4 | **Input to Highways Road Safety Audits** |
| 5 | **Input to Heritage** |
| 7 | **Consents - Heritage & Planning** |
| 1 | **LDY ANN** |
| 9 | **MDL 1/16** |
| 3 | **MDL 1/17** |
| 2 | **MDL 1/19** |
| 14 | **MDL 1/23** |
| 13 | **MDL 1/24** |
| 10 | **MDL 1/27** |
| 12 | **MDL 1/29** |
| 5 | **MDL 1/30** |
| 8 | **MDL 1/34** |
| 4 | **MDL 1/35** |
| 16 | **MDL 1/40** |
| 15 | **MDL 1/41A** |
| 11 | **MDL 1/47** |
| 7 | **MDL 1/52** |
| 6 | **DOL 2/44A** |
| 6 | **Input to Schedule** |
| 15 | **Structures IDC & Approval Process** |
| 5 | **08 Earthworks** |
| 15 | **Geotech Morley Station** |
| 1 | **General** |
| 11 | **Ground Investigation Report** |
| 12 | **TBI Interpretive Report** |
| 13 | **Earthworks Assessment** |
| 2 | **Earthwork Stabilisation - Rock Netting 62000 Form 001** |
| 3 | **Earthwork Stabilisation - Cherwell 64300 Form 001** |
| 1 | **Input** |
| 2 | **Ground Investigation / Geotechnical Design Report** |
| 3 | **Track Bed Interpretive Report** |

| WBS | Activity |
| --- | --- |
| 4 | **Earthwork Assessment Report** |
| 5 | **Earthwork Stabilization** |
| 1 | **Area A** |
| 2 | **Area B** |
| 3 | **Area C** |
| 4 | **Area D** |
| 10 | **09 Stations** |
| 13 | **Listed Building Application Morley Station** |
| 8 | **Inputs** |
| 16 | **Morley Station** |
| 4 | **Interfaces** |
| 1 | **Station and Footbridge design** |
| 2 | **Station Capacity Analysis & Fire Engineering Report** |
| 5 | **DIA** |
| 6 | **Architectural Activities** |
| 1 | **Dewsbury Station** |
| 2 | **Dewsbury Station F001/F002/F004** |
| 7 | **Station Footbridge Level 2 Assessment** |
| 4 | **Dewsbury Station Footbridge Form F001/F002** |
| 8 | **Dewsbury Station Footbridge Form F004** |
| 1 | **Assessments & Reports** |
| 1 | **Diversity Impact Assessments** |
| 5 | **Dewsbury Station Consents Inputs** |
| 3 | **Stations Building** |
| 5 | **Dewsbury Station Ancillaries (inc OLE)** |
| 6 | **Update Dewsbury Station AiP** |
| 2 | **Batley Station** |
| 1 | **Inputs** |
| 2 | **Batley Station F001/F002 (inc. OLE Foundations)** |
| 3 | **Lifts Civils** |
| 4 | **Batley Station AiP Approval Process** |
| 1 | **Design Available** |
| 2 | **Multidisc IDC** |
| 3 | **Update following IDC** |
| 12 | **10 Tunnels** |
| 6 | **Tunnels Morley Station** |
| 5 | **NEW** |
| 1 | **Input** |
| 2 | **Morley Tunnel Design** |
| 3 | **Other Reports** |
| 4 | **Update Tunnel AiP Design** |
| 7 | **11 Drainage** |
| 4 | **Drainage Morley Station** |
| 3 | **General** |
| 1 | **Input** |
| 1 | **Drainage Routewide** |
| 2 | **Update Drainage Design** |
| 8 | **12 Utilities** |
| 1 | **C3** |
| 2 | **C4** |
| 4 | **Multi-Discipline IDCs** |
| 5 | **Multi-Discipline IDCs - Routewide** |
| 02 | **03 04 05 Rail Systems Routewide** |
| 01 | **06 09 10 Other Routewide** |
| 1 | **07 Structures Routewide** |
| 6 | **Multi-Discipline IDCs - Areas** |
| 1 | **01 02 08 Area A - Dewsbury to Batley** |
| 2 | **01 02 08 Area B - Batley to Morley** |
| 3 | **01 02 08 Area C - Morley to Copley Hill** |
| 5 | **Project Management Deliverables** |
| 1 | **Construction** |
| 1 | **Constructability & Logisitics Report (inc Engineering Access)** |
| 2 | **Engineering Access** |
| 2 | **Sustainability** |
| 1 | **Environmental & Social Performance Appraisal** |
| 2 | **Environmental Statement and Appendices** |
| 9 | **Environmental & Social Management Plan** |
| 3 | **Environmental Impact Assessment Screening** |
| 4 | **Weather Resilience & Climate Change Risk Report** |
| 10 | **Consultation Report** |

| WBS | Activity |
| --- | --- |
| 5 | **Biodiversity Calculator** |
| 11 | **Future Needs Analysis** |
| 12 | **Heritage Assessment** |
| 13 | **Visual Landscape Assessment** |
| 14 | **Resource Efficiency Workshop and Policy** |
| 15 | **Transport Report** |
| 16 | **Workforce Travel Plan** |
| 17 | **Water Quality** |
| 21 | **Risk and Resilience** |
| 22 | **Socio-Economic Impact Assessment (Including Social Impact Tool)** |
| 23 | **Transpire Access Strategy Report** |
| 24 | **Diversity Impact Assessment Report** |
| 25 | **Community Impact Assessment Report** |
| 6 | **Land and Consents Commitments Register** |
| 7 | **Land and Consents Strategy** |
| 8 | **Statement of Community & Technical Consulation (TWAO schemes)** |
| 3 | **Planning and Controls** |
| 1 | **Project Management Plan** |
| 2 | **LoC Assessment (Mgt LoC)** |
| 3 | **GRIP 5-8 Project Programme/Schedule** |
| 4 | **Programme/Schedule Quantitative Schedule Risk Assessment** |
| 5 | **Quantitative Cost Risk Assessment (QCRA)** |
| 6 | **Assumptions & Deficiencies Register** |
| 7 | **Risk Register** |
| 8 | **Formal Cost Planning Report** |
| 9 | **Cost Analysis Framework** |
| 10 | **LCC GRIP 4 Report** |
| 4 | **Client Services** |
| 1 | **State Gate Checklist & Certficate** |
| 5 | **Health and Safety** |
| 1 | **Safety Risk & Mitigation Log** |
| 6 | **Transformation and Stakeholder** |
| 1 | **VM Lessons Learnt** |
| 7 | **Organisation** |
| 6 | **W4 Engineering Management Deliverables** |
| 1 | **Engineering Assurance** |
| 1 | **Ergonomics AIP Form F005** |
| 2 | **NR/L2/INI/02009 Forms F0037,38,39,40,41,42,43** |
| 3 | **Schedule of Deviations from Standards / Technical Non-Compliance (TNC)** |
| 4 | **VM Value Engineering** |
| 2 | **CDM** |
| 1 | **Health and Safety File** |
| 2 | **Principal Designer Review Summary Report (CDM)** |
| 3 | **CSM** |
| 40 | **Hazid Activities** |
| 1 | **Project Authorisation Strategy** |
| 2 | **System Definition Early GRIP 4** |
| 7 | **System Definition Late GRIP 4** |
| 3 | **System Safety Plan** |
| 4 | **Safety Justification Report** |
| 5 | **Safety Assessment Report** |
| 6 | **Project Hazard Record** |
| 4 | **Asset Management** |
| 1 | **Ergonomics AIP Form F005 (duplicate???)** |
| 2 | **Emergency Response Plan (ERPs)** |
| 3 | **GRIP 4 Survey Specification** |
| 4 | **Predictive Workload Analysis** |
| 5 | **LCC GRIP 4 Report** |
| 6 | **Asset Management Plan (AMP Process)** |
| 7 | **RAM Plan** |
| 8 | **RAM Report** |
| 5 | **Requirements V&V** |
| 1 | **Intervention - Client Requirements Doc (I-CRD)** |
| 2 | **Intervention - Route Requirements Doc (I-RRD)** |
| 3 | **Intervention - Detailed Requirements Doc (I-DRRD)** |
| 4 | **V&V Plan (Sub Programme)** |
| 5 | **V&V Matrix against i-CRD** |
| 6 | **V&V Matrix against i-RRD** |
| 7 | **Design Compliance Verrification Report (I-CRD)** |
| 8 | **Design Compliance Verification Report (I-RRD)** |

| WBS | Activity |
| --- | --- |
| 6 | **Programme Operations** |
| 1 | **Operational and Maintenance Requirements Specification** |
| 2 | **Statement of Capabilities** |
| 7 | **Interfacing and Architecture** |
| 1 | **System Architecture Plan** |
| 2 | **Systems Architecture** |
| 3 | **Technical Interface Register** |
| 8 | **BIM** |
| 1 | **BIM Compliance (CADQA) Report** |
| 2 | **BIM Model** |
| 3 | **Deliverables Matrix or MIDP** |
| 9 | **W5 Engineering Management Deliverables** |
| 1 | **Engineering Assurance** |
| 1 | **Ergonomics AIP Form F005** |
| 2 | **NR/L2/INI/02009 Forms F0037,38,39,40,41,42,43** |
| 3 | **Schedule of Deviations from Standards / Technical Non-Compliance (TNC)** |
| 4 | **VM Value Engineering** |
| 2 | **CDM** |
| 1 | **Health and Safety File** |
| 2 | **Principal Designer Review Summary Report (CDM)** |
| WOL-CSM | **CSM** |
| 1 | **Project Preperation -** |
| 6 | **CSM Deliverables Set** |
| 1 | **Project System Safety Plan (SSP)** |
| 2 | **Project Authorisation Strategy (PAS)** |
| 3 | **Project System Definition Document (SDD)** |
| 4 | **Project System Justification Report (SJR)** |
| 5 | **Project Hazard Record (HR)** |
| 4 | **CSM Document Set** |
| 2 | **AsBo Review** |
| 3 | **Final Submission** |
| 4 | **Asset Management** |
| 1 | **Ergonomics AIP Form F005 (duplicate???)** |
| 2 | **Emergency Response Plan (ERPs)** |
| 3 | **GRIP 4 Survey Specification** |
| 4 | **Predictive Workload Analysis** |
| 5 | **LCC GRIP 4 Report** |
| 6 | **Asset Management Plan (AMP Process)** |
| 7 | **RAM Plan** |
| 8 | **RAM Report** |
| 5 | **Requirements V&V** |
| 1 | **Intervention - Client Requirements Doc (I-CRD)** |
| 2 | **Intervention - Route Requirements Doc (I-RRD)** |
| 3 | **Intervention - Detailed Requirements Doc (I-DRRD)** |
| 4 | **Verification & Validation Plan (Sub Programme)** |
| 5 | **V & V Matrix against i-CRD** |
| 6 | **V & V Matrix against i-RRD** |
| 7 | **Design Compliance Verrification Report (I-CRD)** |
| 8 | **Design Compliance Verification Report (I-RRD)** |
| 6 | **Programme Operations** |
| 1 | **Operational and Maintenance Requirements Specification** |
| 2 | **Statement of Capabilities ???** |
| 7 | **Interfacing and Architecture** |
| 1 | **System Architecture Plan** |
| 2 | **Systems Architecture** |
| 3 | **Technical Interface Register** |
| 8 | **BIM** |
| 1 | **BIM Compliance (CADQA) Report** |
| 2 | **BIM Model** |
| 3 | **Deliverables Matrix or MIDP** |
| SPC3 | **SP&C Project Management** |
| 1 | **Commercial SP_C** |
| 1 | **Sub-Contract Orders SP_C** |
| 1 | **RSK** |
| 2 | **PSP Subcontractor** |
| 2 | **Documentation SP_C** |
| 1 | **Project Management Plan [PMP] SP_C** |
| 1 | **Amey - PMP SP_C** |
| 2 | **Siemens - PMP SP_C** |
| 2 | **Heatth & Safety Plan SP_C** |

| WBS | Activity |
| --- | --- |
| 3 | **Site Inspections Work Package Plan - Surveys SP_C** |
| 4 | **Test WPP - Correlation SP_C** |
| 3 | **Development SP_C** |
| 1 | **Tendering & Estimating SP_C** |
| SPC4 | **SP&C Engineering** |
| 1 | **Engineering Management Plan - Amey SP_C** |
| 2 | **Engineering Management Plan - Siemens SP_C** |
| 3 | **Ops and Maintenance Strategy SP_C** |
| 4 | **Interface Specification SP_C** |
| 5 | **Compatibility Report SP_C** |
| 6 | **Remote Condition Monitoring Plan SP_C** |
| 7 | **Recoveries Report / Plan SP_C** |
| 8 | **Bill Of Materials [BOM] SP_C** |
| 9 | **Signal Sighting Model SP_C** |
| 10 | **Engineering Compliance Report SP_C** |
| 11 | **Engineering Compliance Certificate SP_C** |
| SPC5 | **SP&C Assurance** |
| 1 | **Fracas Report / Plan SP_C** |
| 2 | **Initial Assurance Assessment Report SP_C** |
| 3 | **Initial Reliability Predictions SP_C** |
| 4 | **Safety Assurance Plan SP_C** |
| 11 | **W5 Design Deliverables - Option 5B** |
| 5 | **GRIP 5-8 Target Cost & Governance** |
| M | **Milestones** |
| 2 | **Design** |
| 1 | **Scopes** |
| 1 | **Scope Split** |
| 2 | **Next Section Scope** |
| 3 | **GRIP 5 / 6 Scope** |
| 4 | **Design for Estimating** |
| 5 | **Construction Methodologies** |
| 2 | **Schedule** |
| 1 | **Development** |
| 2 | **Assurance** |
| 3 | **Pricing** |
| 2 | **Bill of Quantities** |
| 3 | **Sub-Participant / Supplier Pricing** |
| 4 | **Indirect Costs (Prelims)** |
| 5 | **Direct Costs** |
| 6 | **Finalise Estimate** |
| 4 | **Risk Report** |
| 1 | **Compilation** |
| 2 | **Analysis** |
| 6 | **Final Governance** |
| 1 | **Alliance Governance** |
| 2 | **NOP Governance** |
| 3 | **Owner Governance** |
| 12 | **W5 PM Deliverables - Option 5B** |
| 8 | **Section 9 Part 1 Section Proposal** |
| M | **Milestones** |
| 1 | **Section Proposal** |
| 2 | **Design** |
| 1 | **Scopes** |
| 1 | **Scope Split** |
| 3 | **GRIP 5 Scope** |
| 2 | **Schedule** |
| 1 | **Development** |
| 2 | **Assurance** |
| 3 | **Pricing** |
| 4 | **Indirect Costs (Prelims)** |
| 5 | **Direct Costs** |
| 6 | **Finalise Estimate** |
| 4 | **Risk Report** |
| 1 | **Compilation** |
| 2 | **Analysis** |
| 5 | **Section Proposal** |
| 1 | **Document Preparation** |
| 2 | **Document Finalisation** |
| 6 | **Final Governance** |
| 1 | **Alliance Governance** |

| WBS | Activity |
| --- | --- |
| 2 | **NOP Governance** |
| 3 | **Owner Governance** |
| 4 | **Stage Gate Estimating** |
| M | **Milestones** |
| 2 | **Design** |
| 1 | **Scopes** |
| 1 | **Scope Split** |
| 2 | **GRIP 5 / 6 Scope** |
| 5 | **Construction Methodologies** |
| 2 | **Schedule** |
| 1 | **Development** |
| 2 | **Assurance** |
| 3 | **Pricing** |
| 3 | **Sub-Participant / Supplier Pricing** |
| 4 | **Indirect Costs (Prelims)** |
| 5 | **Direct Costs** |
| 6 | **Finalise Estimate** |
| 4 | **Risk Report** |
| 1 | **Compilation** |
| 2 | **Analysis** |
| 5 | **Section Proposal** |
| 1 | **Document Preparation** |
| 2 | **Document Finalisation** |
| 6 | **Final Governance** |
| 1 | **Alliance Governance** |
| 2 | **NOP Governance** |
| 3 | **Owner Governance** |
| 5 | **GRIP 4 - iELC** |
| 1 | **iELC Deliverables Available** |
| 2 | **iELC Meeting** |
| 6 | **GRIP 4 - Stage Gate** |
| 1 | **SG Deliverables** |
| 2 | **SG Readiness** |
| 3 | **SG Meeting** |
| 3 | **PMO** |
| 1 | **Intervention** |
| 1 | **ES** |
| 1 | **Asset Management** |
| 1 | **Ergonomics AIP Form F005** |
| 2 | **Emergency Response Plan (ERPs)** |
| 3 | **GRIP 4 Survey Specification** |
| 4 | **Predictive Workload Analysis** |
| 5 | **LCC GRIP 4 Report** |
| 6 | **Asset Management Plan (AMP Process)** |
| 7 | **RAM Plan** |
| 8 | **RAM Report** |
| 2 | **Engineering Services Leads** |
| 58 | **VM Value Engineering** |
| 3 | **CSM** |
| 1 | **Project Authorisation Strategy** |
| 2 | **System Definition** |
| 3 | **Safety Justification Report** |
| 4 | **Safety Assessment Report** |
| 5 | **Project Hazard Record** |
| 4 | **CDM** |
| 1 | **Health and Safety File** |
| 2 | **Principal Designer Review Summary Report (CDM)** |
| 5 | **Interfacing and Architecture** |
| 1 | **Project Level Systems Architecture (Physical)** |
| 2 | **Technical Interface Management Plan (PW)** |
| 3 | **Technical Interface Register** |
| 6 | **Programme Operations** |
| 1 | **Statement of Capabilities** |
| 2 | **Operational and Maintenance Requirements Specification** |
| 7 | **Requirements V&V** |
| 1 | **Client Requirements Doc (I-CRD)** |
| 2 | **Detailed Requirements Doc (I-DRRD)** |
| 3 | **Route Requirements Doc (I-RRD)** |
| 4 | **V&V Matrix (I-CRD)** |
| 5 | **V&V Matrix (I-RRD)** |

| WBS | Activity |
| --- | --- |
| 6 | **V&V Activities Spec-(ICRD)** |
| 7 | **V&V Activities Spec (IRRD)** |
| 8 | **Design Compliance Verrification Report (I-CRD)** |
| 9 | **Design Compliance Verification Report (I-RRD)** |
| 8 | **Engineering Deliverables** |
| 1 | **BIM Compliance Report** |
| 2 | **PMO** |
| 1 | **Engineering Assurance** |
| 1 | **Ergonomics AIP Form F005** |
| 2 | **NR/L2/INI/02009 Forms F0037,38,39,40,41,42,43** |
| 2 | **Construction** |
| 1 | **Constructability Report** |
| 3 | **Health and Safety** |
| 1 | **Safety Strategy** |
| 2 | **Safety Risk & Mitigation Log** |
| 4 | **Planning and Controls** |
| 1 | **Project Management Plan** |
| 2 | **LoC Assessment (Mgt LoC)** |
| 3 | **Project Programme/Schedule** |
| 4 | **Programme/Schedule Quantitative Schedule Risk Assessment** |
| 5 | **Quantitative Cost Risk Assessment (QCRA)** |
| 6 | **Possession Quantitative Schedule Risk Assessment** |
| 7 | **Assumptions & Deficiencies Register** |
| 5 | **Engineering Deliverables** |
| 1 | **Inter Disciplinary Design Review (IDR)** |
| 2 | **Schedule of Deviations from Standards (TNC)** |
| 3 | **Track Position Strategy** |
| 6 | **Client Services** |
| 1 | **Network Change** |
| 2 | **Station Change** |
| 3 | **State Gate Checklist & Certficate** |
| 7 | **Land and Consents** |
| 1 | **Land and Consents Commitments Register** |
| 2 | **Land and Consents Strategy** |
| 8 | **Sustainability** |
| 1 | **Environmental & Social Review Acceptance Form** |
| 2 | **Environmental Appraisal** |
| 3 | **Weather Resilience & Climate Change Risk Report** |
| 4 | **Biodiversity Calculator** |
| 5 | **Diversity Impact Assessment ?** |
| 6 | **Environmental & Social Management Plan** |
| 9 | **Transformation and Stakeholder** |
| 1 | **Stakeholder & Customer Management Plan** |
| 2 | **VM Lessons Learnt** |
| 7 | **DELETED ACTIVITIES** |

# Project W5 GRIP 4 SI/GI Programme

Schedule from Primavera P6, 2020-05-02 to 2020-07-17, data date 2020-07-05, A marks actual dates.

## Calendars

- A04 7 Day Workweek (BH & Xmas as Work): Mon-Sun 08:00-12:00, 13:00-17:00.
- A03 5 Day Workweek (BH & Xmas as Work): Mon-Fri 08:00-12:00, 13:00-17:00; Sat-Sun off.

## Schedule

| WBS | Activity |
| --- | --- |
| 7 | **GRIP 4 DESIGN** |
| 1 | **Reporting Milestones** |
| 2 | **Morley** |
| 2 | **Survey Milestones** |
| 2 | **3rd Party Land Access** |
| 3 | **Surveys Outstanding** |
| 2 | **Morley** |
| 1 | **Footbridge Foundations** |
| 2 | **OLE Foundations** |
| 3 | **Retaining Wall Foundations** |
| 4 | **Platform Fill** |
| 5 | **Riser Wall Foundations** |
| 6 | **Track Bed Investigation** |
| 1 | **Non Possession Dependant** |
| 2 | **Morley** |
| 3 | **Non-Possession Dependant Surveys** |
| 23 | **Temp. Works Design for River Arches** |
| 16 | **Traffic Management** |
| 4 | **Week 16 (14th - 20th July)** |
| 1 | **Victoria** |
| 2 | **Morley** |
| 5 | **Week 17 (21st - 27th July)** |
| 1 | **Victoria** |
| 2 | **Morley** |
| 6 | **Week 18 (28th - 3rd August)** |
| 1 | **Victoria** |
| 2 | **Morley** |
| 7 | **Week 19 (4th - 10th August)** |
| 1 | **Victoria** |
| 2 | **Morley** |
| 8 | **Week 20 (11th - 17th August)** |
| 1 | **Victoria** |
| 2 | **Morley** |
| 1 | **Week 21 (18th - 24th August)** |
| 1 | **Victoria** |
| 2 | **Morley** |
| 2 | **Week 22 (25th - 31st August)** |
| 1 | **Victoria** |
| 2 | **Morley** |
| 3 | **Week 23 (1st - 7th September)** |
| 1 | **Victoria** |
| 2 | **Morley** |
| 9 | **Week 24 (8th - 14th September)** |
| 1 | **Victoria** |
| 2 | **Morley** |
| 10 | **Week 25 (15th - 21st September)** |
| 1 | **Victoria** |
| 2 | **Morley** |
| 11 | **Week 26 (22nd - 28th September)** |
| 1 | **Victoria** |
| 2 | **Morley** |
| 12 | **Week 27 (29th - 5th October)** |
| 1 | **Victoria** |
| 2 | **Morley** |
| 13 | **Week 28 (6th October - 12th October)** |
| 1 | **Victoria** |
| 2 | **Morley** |
| 14 | **Week 29 (13th October - 19th October)** |
| 1 | **Victoria** |
| 2 | **Morley** |
| 15 | **Week 30 (20th October - 26th October)** |
| 1 | **Victoria** |
| 2 | **Morley** |
| 19 | **Week 31 (27th October - 2nd November)** |
| 1 | **Victoria** |
| 2 | **Morley** |
| 20 | **Week 32 (3rd November - 9th November)** |
| 1 | **Victoria** |
| 2 | **Morley** |
| 17 | **Week 33 (10th November - 16th November)** |

| WBS | Activity |
| --- | --- |
| 1 | **Victoria** |
| 2 | **Morley** |
| 18 | **Week 34 (17th November - 23rd November)** |
| 1 | **Victoria** |
| 2 | **Morley** |
| 21 | **Week 35 (24th November - 30th November)** |
| 1 | **Victoria** |
| 2 | **Morley** |
| 22 | **Week 36 (1st December - 7th December)** |
| 1 | **Victoria** |
| 2 | **Morley** |
| 24 | **Week 37 (8th December - 14th December)** |
| 1 | **Victoria** |
| 2 | **Morley** |
| 26 | **Week 38 (15th December - 21st December)** |
| 1 | **Victoria** |
| 2 | **Morley** |
| 28 | **Week 41 (5th January - 11th January)** |
| 1 | **Victoria** |
| 2 | **Morley** |
| 25 | **Week 42 (12th January - 18th January)** |
| 1 | **Victoria** |
| 2 | **Morley** |
| 29 | **Week 43 (19th January - 25th January)** |
| 1 | **Victoria** |
| 2 | **Morley** |
| 27 | **Week 44 (26th January - 1st February)** |
| 1 | **Victoria** |
| 2 | **Morley** |
| 30 | **Week 45 (2nd February - 8th February)** |
| 1 | **Victoria** |
| 2 | **Morley** |
| 31 | **Week 46 (9th February - 15th February)** |
| 1 | **Victoria** |
| 2 | **Morley** |
| 32 | **Week 47 (16th February - 22nd February)** |
| 1 | **Victoria** |
| 2 | **Morley** |
| 33 | **Week 48 (23rd February - 1st March)** |
| 1 | **Victoria** |
| 2 | **Morley** |
| 36 | **Week 49 (2nd March - 8th March)** |
| 1 | **Victoria** |
| 2 | **Morley** |
| 34 | **Week 50 (9th March - 15th March)** |
| 1 | **Victoria** |
| 2 | **Morley** |
| 35 | **Week 51 (16th March - 22nd March)** |
| 1 | **Victoria** |
| 2 | **Morley** |
| 37 | **Week 52 (23rd March - 29th March)** |
| 1 | **Victoria** |
| 2 | **Morley** |
| 38 | **Week 01 (30th March - 5th April)** |
| 1 | **Victoria** |
| 2 | **Morley** |
| 39 | **Week 02 (6th April - 12th April)** |
| 1 | **Victoria** |
| 42 | **Week 03** |
| 43 | **Week 04** |
| 44 | **Week 05** |
| 1 | **Morley** |
| 45 | **Week 06** |
| 46 | **Week 07** |
| 47 | **Week 08** |
| 48 | **Week 09** |
| 52 | **.Week 11** |
| 53 | **.Week 13** |
| 49 | **.Week 16** |
| 50 | **.Week 17** |

| WBS | Activity | Start | Finish |
| --- | --- | --- | --- |
| 51 | **.Week 18** |  |  |
| 54 | **.Week 19** |  |  |
| 55 | **.Week 20** |  |  |
| 56 | **.Week 23** |  |  |
| 57 | **.Week 26** |  |  |
| 58 | **.Week 27** |  |  |
| 59 | **.Week 28** |  |  |
| 60 | **.Week 30** |  |  |
| 61 | **.Week 31** |  |  |
| 62 | **.Week 42** |  |  |
| 64 | **.Week 43** |  |  |
| 63 | **.Week 44** |  |  |
| 65 | **.Week 45** |  |  |
| 68 | **.Week 47** |  |  |
| 67 | **.Week 48** |  |  |
| 66 | **.Week 50** |  |  |
| 69 | **.Week 51** |  |  |
| 70 | **.Week 52** |  |  |
| 71 | **.Week 53** |  |  |
| 72 | **.Week 01** |  |  |
| 73 | **.Week 08** |  |  |
| 74 | **.Week 10** |  |  |
| 75 | **Week 11** |  |  |
| 76 | **Week 12** |  |  |
| 77 | **Week 13** |  |  |
| 78 | **Week 17** |  |  |
| 40 | **Week 25** |  |  |
| 41 | **Awaiting Repsonse on Status of Activity** |  |  |
| 1 | **Victoria** |  |  |
| 2 | **Telecoms / E&P** |  |  |
| 4 | **Possession Dependant Surveys** | 2020-05-02 | 2020-05-02 |
| 16 | **Week 11** |  |  |
| 8 | **Weekend Works** |  |  |
| 1 | **Manchester Victoria East to Miles Platting (0040 Sun to 0910 Sun) - 0m 2ch to 1m 45ch** |  |  |
| 1 | **SPO 7.2** |  |  |
| 2 | **Phillips Park West to Stalybridge (0020 Sun to 0820 Sun) - 1m 79ch to 7m 39ch** |  |  |
| 2 | **SPO 8.3** |  |  |
| 7 | **Thorn Hill (LNW Junction) to Copley Hill East Junction** |  |  |
| 3 | **Zone 5 - SPO ADD 5.7** |  |  |
| 1 | **Midweek Works** |  |  |
| 1 | **Manchester Victoria East to Miles Platting** |  |  |
| 1 | **SPO 7.2** |  |  |
| 2 | **Phillips Park West to Stalybridge (2350 Mon to 0645) - 1m 48ch to 7m 39ch** |  |  |
| 2 | **SPO 8.3** |  |  |
| 1 | **Monday 11th June** |  |  |
| 2 | **Tuesday 12th June** |  |  |
| 7 | **Thorn Hill (LNW Junction) to Copley Hill East Junction** |  |  |
| 3 | **Zone 5 - SPO ADD 5.7** |  |  |
| 1 | **Week 12 - NO WORKS PLANNED** |  |  |
| 8 | **Weekend Works** |  |  |
| 1 | **Manchester Victoria East to Miles Platting** |  |  |
| 1 | **SPO 7.2** |  |  |
| 2 | **Phillips Park West to Stalybridge (0020 Sun to 0820 Sun) 1m76ch - 3m27ch** |  |  |
| 2 | **SPO 8.3** |  |  |
| 7 | **Thorn Hill (LNW Junction) to Copley Hill East Junction** |  |  |
| 1 | **Zone 5 - SPO 5.12** |  |  |
| 2 | **Zone 5 - SPO 15.4** |  |  |
| 3 | **Zone 5 - SPO ADD 5.7** |  |  |
| 1 | **Midweek Works** |  |  |
| 1 | **Manchester Victoria East to Miles Platting** |  |  |
| 1 | **SPO 7.2** |  |  |
| 2 | **Phillips Park West to Stalybridge** |  |  |
| 2 | **SPO 8.3** |  |  |
| 7 | **Thorn Hill (LNW Junction) to Copley Hill East Junction** |  |  |
| 3 | **Zone 5 - SPO ADD 5.7** |  |  |
| 2 | **Week 13** |  |  |
| 8 | **Weekend Works** |  |  |
| 1 | **Manchester Victoria East to Baguley Fold (0040 Sun - 0710 Sun) 0m - 2m42ch & PPA's** |  |  |
| 1 | **SPO 7.2** |  |  |
| 2 | **Phillips Park West to Stalybridge** |  |  |

| WBS | Activity |
| --- | --- |
| 2 | **SPO 8.3** |
| 7 | **Thorn Hill (LNW Junction) to Copley Hill East Junction** |
| 1 | **Zone 5 - SPO 5.12** |
| 2 | **Zone 5 - SPO 15.4** |
| 3 | **Zone 5 - SPO ADD 5.7** |
| 1 | **Midweek Works** |
| 1 | **Manchester Victoria East to Miles Platting** |
| 1 | **SPO 7.2** |
| 2 | **Phillips Park West to Stalybridge** |
| 2 | **SPO 8.3** |
| 7 | **Thorn Hill (LNW Junction) to Copley Hill East Junction** |
| 3 | **Zone 5 - SPO ADD 5.7** |
| 3 | **Week 14** |
| 8 | **Weekend Works** |
| 1 | **Manchester Victoria East to Philips Park West (0040 Sun - 0710 Sun) 0m - 1m45ch** |
| 1 | **SPO 7.2** |
| 2 | **Phillips Park West to Stalybridge (0020 Sun to 0820 Sun) - 1m 79ch to 3m 27ch** |
| 2 | **SPO 8.3** |
| 7 | **Thorn Hill (LNW Junction) to Copley Hill East Junction (0040 Sat to 0510 Sat) - 35m42ch - 39m60ch** |
| 3 | **Zone 5 - SPO ADD 5.7** |
| 1 | **Midweek Works** |
| 1 | **Manchester Victoria East to Miles Platting** |
| 1 | **SPO 7.2** |
| 2 | **Phillips Park West to Stalybridge** |
| 2 | **SPO 8.3** |
| 7 | **Thorn Hill (LNW Junction) to Copley Hill East Junction** |
| 3 | **Zone 5 - SPO ADD 5.7** |
| 1 | **Monday (2350 Mon to 0550 Tues) - 35m 42ch - 39m 60ch** |
| 2 | **Tuesday (2350 Tues to 0550 Wed) - 35m 42ch - 39m 60ch** |
| 3 | **Wednesday (2350 Wed to 0550 Thurs) - 35m 42ch - 39m 60ch** |
| 4 | **Thursday (2350 Thurs to 0550 Fri) - 35m 42ch - 39m 60ch (Grinding Train at 38m to 41m 40ch DN)** |
| 4 | **Week 15** |
| 8 | **Weekend Works** |
| 1 | **Manchester Victoria East to Philips Park West (0040 Sun - 0710 Sun) 0m40ch - 1m45ch** |
| 1 | **SPO 7.2** |
| 2 | **Phillips Park West to Stalybridge (0020 Sun to 0820 Sun) - 1m 76ch - 3m 27ch** |
| 2 | **SPO 8.3** |
| 7 | **Thorn Hill (LNW Junction) to Copley Hill East Junction** |
| 3 | **Zone 5 - SPO ADD 5.7** |
| 1 | **Midweek Works** |
| 1 | **Manchester Victoria East to Miles Platting** |
| 1 | **SPO 7.2** |
| 2 | **Phillips Park West to Stalybridge** |
| 2 | **SPO 8.3** |
| 7 | **Thorn Hill (LNW Junction) to Copley Hill East Junction** |
| 3 | **Zone 5 - SPO ADD 5.7** |
| 5 | **Week 16** |
| 8 | **Weekend Works** |
| 1 | **Manchester Victoria East to Philips Park West (0040 Sun to 0710 Sun) - 0m 60ch to 2m 00ch** |
| 1 | **SPO 7.2 - METROLINK POSSESSION ONLY** |
| 2 | **Ravensthorpe to Copley Hill East (0040 Sat - 0510 Sat) 33m60ch - 41m60ch** |
| 2 | **SPO 8.3** |
| 7 | **Mirfield East to Copley Hill (2350 Sat - 0820 Sun) 32m16ch - 38m35ch** |
| 3 | **Zone 5 - SPO ADD 5.7** |
| 3 | **Thorn Hill (LNW Junction) to Copley Hill East Junction (0015 Sun to 0730 Sun) - 38m 20ch to 39m 60ch** |
| 3 | **Zone 5 - SPO ADD 5.7** |
| 1 | **Midweek Works** |
| 1 | **Manchester Victoria East to Miles Platting** |
| 1 | **SPO 7.2** |
| 2 | **Phillips Park West to Stalybridge** |
| 2 | **SPO 8.3** |
| 7 | **Thorn Hill (LNW Junction) to Copley Hill East Junction** |
| 3 | **Zone 5 - SPO ADD 5.7** |
| 6 | **Week 17** |
| 8 | **Weekend Works** |
| 1 | **Manchester Victoria East Baguley Fold (0040 Sun to 0710 Sun) - 0m 08ch to 2m 42ch & PPA's** |
| 1 | **SPO 7.2** |
| 2 | **Phillips Park West to Stalybridge (0020 Sun to 0820 Sun) - 1m 79ch to 3m 27ch** |
| 2 | **SPO 8.3** |
| 7 | **Thorn Hill (LNW Junction) to Copley Hill East Junction** |

| WBS | Activity |
| --- | --- |
| 3 | **Zone 5 - SPO ADD 5.7** |
| 1 | **Midweek Works** |
| 1 | **Manchester Victoria East to Miles Platting** |
| 1 | **SPO 7.2** |
| 2 | **Phillips Park West to Stalybridge** |
| 2 | **SPO 8.3** |
| 1 | **Monday 23rd July (2350 Mon to 0645 Tues) - 1m 30ch to 3m 20ch (+1m 59 to 0m15ch Brewery Junction)** |
| 2 | **Tuesday 24th July (2350 Tues to 0645 Wed) - 1m 30ch to 3m 20ch (+1m 59 to 0m15ch Brewery Junction)** |
| 3 | **Wed 25th July (2350 Wed to 0645 Thurs) - 1m 30ch to 3m 20ch (+1m 59 to 0m15ch Brewery Junction)** |
| 4 | **Thursday 26th July (2350 Thurs to 0645 Fri) - 1m 30ch to 3m 20ch (+1m 59 to 0m15ch Brewery Junction)** |
| 7 | **Thorn Hill (LNW Junction) to Copley Hill East Junction** |
| 3 | **Zone 5 - SPO ADD 5.7** |
| 7 | **Week 18** |
| 8 | **Weekend Works** |
| 1 | **Manchester Victoria East to Miles Platting (0040 Sun to 0710 Sun) - 0m 00ch to 1m 45ch** |
| 1 | **SPO 7.2 - METROLINK POSSESSION & ISOLATION** |
| 2 | **Phillips Park West to Stalybridge (0020 Sun to 0820 Sun) - 1m 76ch to 3m 27ch** |
| 2 | **SPO 8.3** |
| 7 | **Thorn Hill (LNW Junction) to Copley Hill East Junction (0040 Sat - 0510 Sat ) 38m20ch to 39m60ch** |
| 3 | **Zone 5 - SPO ADD 5.7** |
| 1 | **Midweek Works** |
| 1 | **Manchester Victoria East to Miles Platting** |
| 1 | **SPO 7.2** |
| 2 | **Phillips Park West to Stalybridge** |
| 2 | **SPO 8.3** |
| 7 | **Thorn Hill (LNW Junction) to Copley Hill East Junction** |
| 3 | **Zone 5 - SPO ADD 5.7** |
| 8 | **Week 19** |
| 8 | **Weekend Works** |
| 1 | **Manchester Victoria East to Miles Platting (0040 Sun to 0710 Sun) - 0m 00ch to 2m 57ch** |
| 1 | **SPO 7.2 - METROLINK POSSESSION & ISOLATION** |
| 2 | **Phillips Park West to Stalybridge (0020 Sun to 0820 Sun) - 1m 76ch to 3m 27ch** |
| 2 | **SPO 8.3** |
| 7 | **Thorn Hill (LNW Junction) to Copley Hill East Junction** |
| 3 | **Zone 5 - SPO ADD 5.7** |
| 1 | **Midweek Works** |
| 1 | **Manchester Victoria East to Miles Platting** |
| 1 | **SPO 7.2** |
| 2 | **Phillips Park West to Stalybridge** |
| 2 | **SPO 8.3** |
| 7 | **Thorn Hill (LNW Junction) to Copley Hill East Junction** |
| 3 | **Zone 5 - SPO ADD 5.7** |
| 9 | **Week 20** |
| 8 | **Weekend Works** |
| 1 | **Manchester Victoria East to Miles Platting (0040 Sun to 0710 Sun) - 0m 00ch to 1m 45ch** |
| 1 | **SPO 7.2 - METROLINK POSSESSION & ISOLATION** |
| 2 | **Phillips Park West to Stalybridge (0020 Sun to 0820 Sun) - 1m 76ch to 3m 27ch** |
| 2 | **SPO 8.3** |
| 7 | **Thorn Hill to Copley Hill East Jun - (00:40 Sat - 05:10 Sat) 33m0ch to 33m65ch & 36m20ch to 39m60ch** |
| 3 | **Zone 5 - SPO ADD 5.7** |
| 1 | **Midweek Works** |
| 1 | **Manchester Victoria East to Miles Platting** |
| 1 | **SPO 7.2** |
| 2 | **Phillips Park West to Stalybridge** |
| 2 | **SPO 8.3** |
| 7 | **Thorn Hill (LNW Junction) to Copley Hill East Junction - 35m 0ch to 39m60ch** |
| 5 | **Line Block - 33m 40ch 34m 20ch (13th August) 2300 to 0500** |
| 3 | **Monday 13th August (2350 Mon to 0555 Tues)** |
| 1 | **Tuesday 14th August (2350 Tues to 0555 Wed)** |
| 6 | **Line Block - 33m 40ch - 35m 15ch (14th August) 2300 to 0500** |
| 2 | **Wednesday 15th August (2350 Wed to 0555 Thurs)** |
| 7 | **Line Block - 33m 40ch - 35m 15ch (15th August) 2300 to 0500** |
| 4 | **Thursday 16th August (2350 Thurs to 0555 Fri)** |
| 10 | **Week 21** |
| 8 | **Weekend Works** |
| 1 | **Manchester Victoria East to Miles Platting (0040 Sun to 0710 Sun) - 0m 00ch to 1m 45ch** |
| 1 | **SPO 7.2 - METROLINK POSSESSION & ISOLATION** |
| 2 | **Phillips Park West to Stalybridge (0020 Sun to 0820 Sun) - 1m 76ch to 3m 27ch** |
| 2 | **SPO 8.3** |
| 7 | **Thorn Hill (LNW Junction) to Copley Hill East Junction** |

| WBS | Activity |
| --- | --- |
| 1 | **Line Block - 40m 03ch to 41m 42ch (17th August)** |
| 3 | **Zone 5 - SPO ADD 5.7** |
| 1 | **Midweek Works** |
| 2 | **Phillips Park West to Stalybridge** |
| 2 | **SPO 8.3** |
| 7 | **Thorn Hill (LNW Junction) to Copley Hill East Junction** |
| 3 | **Zone 5 - SPO ADD 5.7** |
| 12 | **Week 22** |
| 8 | **Weekend Works** |
| 1 | **Manchester Victoria East to Miles Platting (0040 Sun to 0710 Sun) - 0m 00ch to 1m 45ch** |
| 1 | **SPO 7.2** |
| 2 | **Phillips Park West to Stalybridge (0020 Sun to 0820 Sun) - 1m 76ch to 3m 27ch** |
| 2 | **SPO 8.3** |
| 7 | **Thorn Hill (LNW Junction) to Copley Hill East Junction 0040 Sat to 0510 Sat 36m 20 to 40m 55ch** |
| 3 | **Zone 5 - SPO ADD 5.7** |
| 1 | **Midweek Works** |
| 1 | **Manchester Victoria East to Miles Platting** |
| 1 | **SPO 7.2** |
| 2 | **Phillips Park West to Stalybridge** |
| 2 | **SPO 8.3** |
| 7 | **Thorn Hill (LNW Junction) to Copley Hill East Junction** |
| 3 | **Zone 5 - SPO ADD 5.7** |
| 13 | **Week 23** |
| 8 | **Weekend Works** |
| 1 | **Manchester Victoria East to Miles Platting (0040 Sun to 0710 Sun) - 0m 00ch to 1m 45ch** |
| 1 | **SPO 7.2** |
| 2 | **Phillips Park West to Stalybridge (0020 Sun to 0820 Sun) - 1m 76ch to 3m 27ch** |
| 2 | **SPO 8.3** |
| 7 | **Thorn Hill (LNW Junction) to Copley Hill East Junction** |
| 3 | **Zone 5 - SPO ADD 5.7** |
| 1 | **Midweek Works** |
| 1 | **Manchester Victoria East to Miles Platting** |
| 1 | **SPO 7.2** |
| 2 | **Phillips Park West to Stalybridge** |
| 2 | **SPO 8.3** |
| 7 | **Thorn Hill (LNW Junction) to Copley Hill East Junction** |
| 3 | **Zone 5 - SPO ADD 5.7** |
| 14 | **Week 24** |
| 8 | **Weekend Works** |
| 1 | **Manchester Victoria East to Miles Platting (0040 Sun to 0710 Sun) - 0m 40ch to 1m 45ch** |
| 1 | **SPO 7.2** |
| 2 | **Phillips Park West to Stalybridge (0020 Sun to 0820 Sun) - 1m 76ch to 3m 27ch** |
| 2 | **SPO 8.3** |
| 7 | **Thorn Hill (LNW Junction) to Copley Hill East Junction 0040 to 0510 33m 40ch to 41m 20ch** |
| 3 | **Zone 5 - SPO ADD 5.7** |
| 1 | **Midweek Works** |
| 1 | **Manchester Victoria East to Miles Platting** |
| 1 | **SPO 7.2** |
| 2 | **Phillips Park West to Stalybridge** |
| 2 | **SPO 8.3** |
| 7 | **Thorn Hill (LNW Junction) to Copley Hill East Junction** |
| 3 | **Zone 5 - SPO ADD 5.7** |
| 15 | **Week 25** |
| 8 | **Weekend Works** |
| 1 | **Manchester Victoria East to Miles Platting (0040 Sun to 0710 Sun) - 0m 00ch to 1m 45ch** |
| 1 | **SPO 7.2** |
| 2 | **Phillips Park West to Stalybridge (0020 Sun to 0820 Sun) - 1m 76ch to 7m 0ch** |
| 2 | **SPO 8.3** |
| 7 | **Thorn Hill (LNW Junction) to Copley Hill East Junction** |
| 3 | **Zone 5 - SPO ADD 5.7** |
| 1 | **Midweek Works** |
| 1 | **Manchester Victoria East to Miles Platting** |
| 1 | **SPO 7.2** |
| 2 | **Phillips Park West to Stalybridge** |
| 2 | **SPO 8.3** |
| 7 | **Thorn Hill (LNW Junction) to Copley Hill East Junction** |
| 3 | **Morley** |
| 1 | **Monday 17th September** |
| 2 | **Tuesday 18th September** |
| 3 | **Wednesday 19th September** |

| WBS | Activity |
| --- | --- |
| 4 | **Thursday 20th September** |
| 17 | **Week 26** |
| 8 | **Weekend Works** |
| 1 | **Manchester Victoria East to Miles Platting (0040 Sun to 0710 Sun) - 0m 00ch to 1m 45ch** |
| 1 | **SPO 7.2** |
| 2 | **Phillips Park West to Stalybridge (0020 Sun to 0820 Sun) - 1m 76ch to 3m 27ch** |
| 2 | **SPO 8.3** |
| 7 | **Thorn Hill (LNW Junction) to Copley Hill East Junction** |
| 3 | **Zone 5 - SPO ADD 5.7** |
| 1 | **Midweek Works** |
| 1 | **Manchester Victoria East to Miles Platting** |
| 1 | **SPO 7.2** |
| 2 | **Phillips Park West to Stalybridge** |
| 2 | **SPO 8.3** |
| 7 | **Thorn Hill (LNW Junction) to Copley Hill East Junction** |
| 1 | **Morley** |
| 1 | **Monday 24th September** |
| 2 | **Tuesday 25th September** |
| 3 | **Wednesday 26th September** |
| 4 | **Thursday 27th September** |
| 3 | **Zone 5 - SPO ADD 5.7** |
| 18 | **Week 27** |
| 8 | **Weekend Works** |
| 1 | **Manchester Victoria East to Miles Platting (0040 Sun to 0710 Sun) - 0m 00ch to 1m 45ch** |
| 1 | **SPO 7.2** |
| 2 | **Phillips Park West to Stalybridge (0020 Sun to 0820 Sun) - 1m 76ch to 3m 27ch** |
| 2 | **SPO 8.3** |
| 7 | **Thorn Hill (LNW Junction) to Copley Hill East Junction** |
| 3 | **Zone 5 - SPO ADD 5.7** |
| 1 | **Midweek Works** |
| 1 | **Manchester Victoria East to Miles Platting** |
| 1 | **SPO 7.2** |
| 2 | **Phillips Park West to Stalybridge** |
| 2 | **SPO 8.3** |
| 7 | **Thorn Hill (LNW Junction) to Copley Hill East Junction** |
| 3 | **Zone 5 - SPO ADD 5.7** |
| 19 | **Week 28** |
| 8 | **Weekend Works** |
| 1 | **Manchester Victoria East to Miles Platting (0040 Sun to 0710 Sun) - 0m 00ch to 1m 45ch** |
| 1 | **SPO 7.2** |
| 2 | **Phillips Park West to Stalybridge (0020 Sun to 0820 Sun) - 1m 76ch to 3m 27ch** |
| 2 | **SPO 8.3** |
| 7 | **Thorn Hill (LNW Junction) to Copley Hill East Junction** |
| 3 | **Zone 5 - SPO ADD 5.7** |
| 1 | **Midweek Works** |
| 1 | **Manchester Victoria East to Miles Platting** |
| 1 | **SPO 7.2** |
| 2 | **Phillips Park West to Stalybridge** |
| 2 | **SPO 8.3** |
| 7 | **Thorn Hill (LNW Junction) to Copley Hill East Junction** |
| 3 | **Zone 5 - SPO ADD 5.7** |
| 22 | **Week 29** |
| 8 | **Weekend Works** |
| 1 | **Manchester Victoria East to Miles Platting (0700 Sun to 1900 Sun) 0m 0ch to 1m 45ch** |
| 1 | **SPO 7.2** |
| 2 | **Phillips Park West to Stalybridge (0020 Sun to 0820 Sun) - 1m 76ch to 3m 27ch** |
| 2 | **SPO 8.3** |
| 7 | **Thorn Hill (LNW Junction) to Copley Hill East Junction (38m 27ch to 38m 42ch - 2100 Sun to 0230 Mon)** |
| 3 | **Zone 5 - SPO ADD 5.7** |
| 1 | **Midweek Works** |
| 1 | **Manchester Victoria East to Miles Platting** |
| 1 | **SPO 7.2** |
| 2 | **Phillips Park West to Stalybridge 1m 40ch to 3m 27ch** |
| 2 | **SPO 8.3** |
| 1 | **Monday 15th October 2355 to 0635** |
| 3 | **Tuesday 16th October 2355 to 0635** |
| 4 | **Wednesday 17th October 2355 to 0635** |
| 5 | **Thursday 18th October 2355 to 0635** |
| 7 | **Thorn Hill (LNW Junction) to Copley Hill East Junction** |
| 3 | **Zone 5 - SPO ADD 5.7** |

| WBS | Activity |
| --- | --- |
| 25 | **Week 30** |
| 8 | **Weekend Works** |
| 1 | **Manchester Victoria East to Miles Platting (0040 Sun to 0710 Sun) - 0m 00ch to 1m 45ch** |
| 1 | **SPO 7.2** |
| 2 | **Phillips Park West to Stalybridge (0020 Sun to 0820 Sun) - 1m 76ch to 3m 27ch** |
| 2 | **SPO 8.3** |
| 7 | **Thorn Hill (LNW Junction) to Copley Hill East Junction** |
| 3 | **Zone 5 - SPO ADD 5.7** |
| 1 | **Midweek Works** |
| 1 | **Manchester Victoria East to Miles Platting** |
| 1 | **SPO 7.2** |
| 2 | **Phillips Park West to Stalybridge** |
| 2 | **SPO 8.3** |
| 7 | **Thorn Hill (LNW Junction) to Copley Hill East Junction** |
| 3 | **Zone 5 - SPO ADD 5.7** |
| 20 | **Week 31** |
| 8 | **Weekend Works** |
| 1 | **Manchester Victoria East to Miles Platting (0040 Sun to 0710 Sun) - 0m 26ch to 1m 45ch** |
| 1 | **SPO 7.2** |
| 2 | **Phillips Park West to Stalybridge (0020 Sun to 0820 Sun) - 1m 79ch to 7m 33ch** |
| 2 | **SPO 8.3** |
| 7 | **Thorn Hill (LNW Junction) to Copley Hill East Junction (2355 to 1100) 35m 52ch to 41m 53ch** |
| 3 | **Zone 5 - SPO ADD 5.7** |
| 1 | **Midweek Works** |
| 1 | **Manchester Victoria East to Miles Platting** |
| 1 | **SPO 7.2** |
| 2 | **Phillips Park West to Stalybridge** |
| 2 | **SPO 8.3** |
| 7 | **Thorn Hill (LNW Junction) to Copley Hill East Junction** |
| 3 | **Zone 5 - SPO ADD 5.7** |
| 23 | **Week 32** |
| 8 | **Weekend Works** |
| 1 | **Manchester Victoria East to Miles Platting (0040 Sun to 0710 Sun) - 0m 00ch to 1m 45ch** |
| 1 | **SPO 7.2** |
| 2 | **Phillips Park West to Stalybridge (0020 Sun to 0820 Sun) - 1m 76ch to 3m 27ch** |
| 2 | **SPO 8.3** |
| 7 | **Thorn Hill (LNW Junction) to Copley Hill East Junction (2355 Sat to 1100 Sun) 33m 30ch to 40m 5ch** |
| 3 | **Zone 5 - SPO ADD 5.7** |
| 3 | **Dewsbury East (2355 Sat to 0700 Sun) 40m 20ch to 40m 60ch** |
| 1 | **Midweek Works** |
| 1 | **Manchester Victoria East to Miles Platting** |
| 1 | **SPO 7.2** |
| 2 | **Phillips Park West to Stalybridge** |
| 2 | **SPO 8.3** |
| 7 | **Thorn Hill (LNW Junction) to Copley Hill East Junction** |
| 3 | **Zone 5 - SPO ADD 5.7** |
| 24 | **Week 33** |
| 8 | **Weekend Works** |
| 1 | **Manchester Victoria East to Miles Platting (0040 Sun to 0710 Sun) - 0m 00ch to 1m 45ch** |
| 1 | **SPO 7.2** |
| 2 | **Phillips Park West to Stalybridge (0020 Sun to 0820 Sun) - 1m 76ch to 3m 27ch** |
| 2 | **SPO 8.3** |
| 7 | **Thorn Hill (LNW Junction) to Copley Hill East Junction (2355 to1100) 33m 40ch to 40m 12ch** |
| 3 | **Zone 5 - SPO ADD 5.7** |
| 1 | **Midweek Works** |
| 1 | **Manchester Victoria East to Miles Platting** |
| 1 | **SPO 7.2** |
| 2 | **Phillips Park West to Stalybridge** |
| 2 | **SPO 8.3** |
| 7 | **Thorn Hill (LNW Junction) to Copley Hill East Junction** |
| 3 | **Zone 5 - SPO ADD 5.7** |
| 21 | **Week 34** |
| 8 | **Weekend Works** |
| 1 | **Manchester Victoria East to Miles Platting (0040 Sun to 0710 Sun) - 0m 00ch to 1m 45ch** |
| 1 | **SPO 7.2** |
| 2 | **Phillips Park West to Stalybridge (0020 Sun to 0820 Sun) - 1m 76ch to 3m 27ch** |
| 2 | **SPO 8.3** |
| 7 | **Thorn Hill (LNW Junction) to Copley Hill East Junction (2355 to 1100) 37m 0ch to 40m 2ch** |
| 3 | **Zone 5 - SPO ADD 5.7** |
| 1 | **Midweek Works** |

| WBS | Activity |
| --- | --- |
| 1 | **Manchester Victoria East to Miles Platting** |
| 1 | **SPO 7.2** |
| 2 | **Phillips Park West to Stalybridge** |
| 2 | **SPO 8.3** |
| 7 | **Thorn Hill (LNW Junction) to Copley Hill East Junction** |
| 3 | **Zone 5 - SPO ADD 5.7** |
| 26 | **Week 35** |
| 8 | **Weekend Works** |
| 1 | **Manchester Victoria East to Miles Platting (0040 Sun to 0710 Sun)** |
| 1 | **SPO 7.2** |
| 2 | **Phillips Park West to Stalybridge (0020 Sun to 0820 Sun)** |
| 2 | **SPO 8.3** |
| 7 | **Thorn Hill (LNW Junction) to Copley Hill East Junction (0040 Sat to 0510Sat) 37m 0ch to 40m 5ch** |
| 3 | **Zone 5 - SPO ADD 5.7** |
| 9 | **Midweek Works** |
| 1 | **Area 2 - Phillips Park West to Stalybridge - 1m 23ch to 3m 50ch** |
| 1 | **Monday 26th November** |
| 2 | **Tuesday 27th November** |
| 3 | **Wednesday 28th November** |
| 4 | **Thursday 29th November** |
| 27 | **Week 36** |
| 8 | **Weekend Works** |
| 1 | **Manchester Victoria East to Miles Platting (0040 Sun to 0710 Sun) 0m0ch to 1m45ch** |
| 1 | **SPO 7.2** |
| 2 | **Phillips Park West to Stalybridge (0020 Sun to 0820 Sun) 1m 67ch to 7m 33ch** |
| 3 | **Phillips Park West to Stalybridge (0020 Sun to 0820 Sun) 7m 38ch to 10m 40ch** |
| 7 | **Thorn Hill (LNW Junction) to Copley Hill East Junction (0040 Sun to 0510 Sun) 34m0ch to 35m10ch** |
| 4 | **Thorn Hill (LNW Junction) to Copley Hill East Junction (0040 Sun to 0510 Sun) 38m20ch to 40m02ch** |
| 1 | **Midweek Works** |
| 1 | **Manchester Victoria East to Miles Platting** |
| 1 | **SPO 7.2** |
| 2 | **Phillips Park West to Stalybridge** |
| 2 | **SPO 8.3** |
| 7 | **Thorn Hill (LNW Junction) to Copley Hill East Junction** |
| 3 | **Zone 5 - SPO ADD 5.7** |
| 28 | **Week 37** |
| 8 | **Weekend Works** |
| 1 | **Manchester Victoria East to Miles Platting (0040 Sun to 0710 Sun)** |
| 1 | **SPO 7.2** |
| 2 | **Phillips Park West to Stalybridge (0020 Sun to 0820 Sun) 1m67ch to 7m39ch** |
| 2 | **SPO 8.3** |
| 7 | **Thorn Hill (LNW Junction) to Copley Hill East Junction (0040 Sun to 0510 Sun) 37m 0ch to 40m 5ch** |
| 3 | **Zone 5 - SPO ADD 5.7** |
| 1 | **Midweek Works** |
| 1 | **Manchester Victoria East to Miles Platting** |
| 1 | **SPO 7.2** |
| 2 | **Phillips Park West to Stalybridge** |
| 2 | **SPO 8.3** |
| 7 | **Thorn Hill (LNW Junction) to Copley Hill East Junction** |
| 3 | **Zone 5 - SPO ADD 5.7** |
| 29 | **Week 38** |
| 8 | **Weekend Works** |
| 1 | **Manchester Victoria East to Miles Platting (0040 Sun to 0710 Sun)** |
| 1 | **SPO 7.2** |
| 2 | **Phillips Park West to Stalybridge (0020 Sun to 0820 Sun) 1m 67ch to 7m 39ch** |
| 2 | **SPO 8.3** |
| 7 | **Thorn Hill (LNW Junction) to Copley Hill East Junction (0040 Sat to 0510 Sat) 38m20ch to 40m20ch** |
| 3 | **Zone 5 - SPO ADD 5.7** |
| 1 | **Midweek Works** |
| 1 | **Manchester Victoria East to Miles Platting** |
| 1 | **SPO 7.2** |
| 2 | **Phillips Park West to Stalybridge** |
| 2 | **SPO 8.3** |
| 7 | **Thorn Hill (LNW Junction) to Copley Hill East Junction 36m 0ch to 42m 0ch** |
| 3 | **Monday 2350 to 0545** |
| 1 | **Tuesday 2350 to 0545** |
| 2 | **Wednesday 2350 to 0545** |
| 4 | **Thursday 2350 to 0545** |
| 30 | **Week 39** |
| 8 | **Weekend Works** |

| WBS | Activity |
| --- | --- |
| 1 | **Manchester Victoria East to Miles Platting (0040 Sun to 0710 Sun)** |
| 1 | **SPO 7.2** |
| 2 | **Phillips Park West to Stalybridge (0020 Sun to 0820 Sun)** |
| 2 | **SPO 8.3** |
| 7 | **Thorn Hill (LNW Junction) to Copley Hill East Junction (0040 Sun to 0510 Sun) 38m20ch to 40m20ch** |
| 3 | **Zone 5 - SPO ADD 5.7** |
| 1 | **Midweek Works** |
| 1 | **Manchester Victoria East to Miles Platting** |
| 1 | **SPO 7.2** |
| 2 | **Phillips Park West to Stalybridge** |
| 2 | **SPO 8.3** |
| 7 | **Thorn Hill (LNW Junction) to Copley Hill East Junction 36m 0ch to 42m 0ch** |
| 3 | **Monday 2350 to 0545** |
| 1 | **Tuesday 2350 to 0545** |
| 2 | **Wednesday 2350 to 0545** |
| 4 | **Thursday 2350 to 0545** |
| 31 | **Week 40** |
| 8 | **Weekend Works** |
| 1 | **Manchester Victoria East to Miles Platting (0040 Sun to 0710 Sun)** |
| 1 | **SPO 7.2** |
| 2 | **Phillips Park West to Stalybridge (0020 Sun to 0820 Sun)** |
| 2 | **SPO 8.3** |
| 7 | **Thorn Hill (LNW Junction) to Copley Hill East Junction (0040 Sun to 0510 Sun) 38m20ch to 40m20ch** |
| 3 | **Zone 5 - SPO ADD 5.7** |
| 1 | **Midweek Works** |
| 1 | **Manchester Victoria East to Miles Platting** |
| 1 | **SPO 7.2** |
| 2 | **Phillips Park West to Stalybridge** |
| 2 | **SPO 8.3** |
| 7 | **Thorn Hill (LNW Junction) to Copley Hill East Junction 36m 0ch to 42m 0ch** |
| 3 | **Monday 2350 to 0545** |
| 1 | **Tuesday 2350 to 0545** |
| 2 | **Wednesday 2350 to 0545** |
| 4 | **Thursday 2350 to 0545** |
| 32 | **Week 41** |
| 8 | **Weekend Works** |
| 1 | **Manchester Victoria East to Miles Platting (0040 Sun to 0710 Sun)** |
| 1 | **SPO 7.2** |
| 2 | **Phillips Park West to Stalybridge (0020 Sun to 0820 Sun)** |
| 2 | **SPO 8.3** |
| 7 | **Thorn Hill (LNW Junction) to Copley Hill East Junction (0040 Sun to 0510 Sun) 38m20ch to 40m20ch** |
| 3 | **Zone 5 - SPO ADD 5.7** |
| 1 | **Midweek Works** |
| 1 | **Manchester Victoria East to Miles Platting** |
| 1 | **SPO 7.2** |
| 2 | **Phillips Park West to Stalybridge** |
| 2 | **SPO 8.3** |
| 7 | **Thorn Hill (LNW Junction) to Copley Hill East Junction 36m 0ch to 42m 0ch** |
| 3 | **Monday 2350 to 0545** |
| 1 | **Tuesday 2350 to 0545** |
| 2 | **Wednesday 2350 to 0545** |
| 4 | **Thursday 2350 to 0545** |
| 33 | **Week 42** |
| 8 | **Weekend Works** |
| 1 | **Manchester Victoria East to Miles Platting (0040 Sun to 0710 Sun) 0m 0ch to 1m 45ch** |
| 1 | **SPO 7.2** |
| 2 | **Phillips Park West to Stalybridge (0020 Sun to 0820 Sun)** |
| 2 | **SPO 8.3** |
| 7 | **Thorn Hill (LNW Junction) to Copley Hill East Junction (0040 Sun to 0510 Sun) 38m20ch to 40m20ch** |
| 3 | **Zone 5 - SPO ADD 5.7** |
| 1 | **Midweek Works** |
| 1 | **Manchester Victoria East to Miles Platting** |
| 1 | **SPO 7.2** |
| 2 | **Phillips Park West to Stalybridge** |
| 2 | **SPO 8.3** |
| 7 | **Thorn Hill (LNW Junction) to Copley Hill East Junction 36m 0ch to 42m 0ch** |
| 3 | **Monday 2350 to 0545** |
| 1 | **Tuesday 2350 to 0545** |
| 2 | **Wednesday 2350 to 0545** |
| 4 | **Thursday 2350 to 0545** |

| WBS | Activity |
| --- | --- |
| 34 | **Week 43** |
| 8 | **Weekend Works** |
| 1 | **Manchester Victoria East to Miles Platting (0040 Sun to 0710 Sun) 0m to 2m 38ch** |
| 1 | **SPO 7.2** |
| 2 | **Phillips Park West to Stalybridge (0020 Sun to 0820 Sun)** |
| 2 | **SPO 8.3** |
| 7 | **Thorn Hill (LNW Junction) to Copley Hill East Junction (0040 Sun to 0510 Sun) 38m20ch to 40m20ch** |
| 3 | **Zone 5 - SPO ADD 5.7** |
| 1 | **Midweek Works** |
| 1 | **Manchester Victoria East to Miles Platting** |
| 1 | **SPO 7.2** |
| 2 | **Phillips Park West to Stalybridge** |
| 2 | **SPO 8.3** |
| 7 | **Thorn Hill (LNW Junction) to Copley Hill East Junction 36m 0ch to 42m 0ch** |
| 3 | **Monday 2350 to 0545** |
| 1 | **Tuesday 2350 to 0545** |
| 2 | **Wednesday 2350 to 0545** |
| 4 | **Thursday 2350 to 0545** |
| 35 | **Week 44** |
| 8 | **Weekend Works** |
| 1 | **Manchester Victoria East to Miles Platting (0040 Sun to 0710 Sun) 0m0ch to 2m 28ch** |
| 1 | **SPO 7.2** |
| 2 | **Phillips Park West to Stalybridge (0020 Sun to 0820 Sun)** |
| 2 | **SPO 8.3** |
| 7 | **Thorn Hill (LNW Junction) to Copley Hill East Junction 38m 10 ch to 39m 60ch** |
| 3 | **Zone 5 - SPO ADD 5.7** |
| 1 | **Midweek Works** |
| 1 | **Manchester Victoria East to Miles Platting** |
| 1 | **SPO 7.2** |
| 2 | **Phillips Park West to Stalybridge** |
| 2 | **SPO 8.3** |
| 7 | **Thorn Hill (LNW Junction) to Copley Hill East Junction 36m 0ch to 42m 0ch** |
| 3 | **Monday 2350 to 0545** |
| 1 | **Tuesday 2350 to 0545** |
| 2 | **Wednesday 2350 to 0545** |
| 4 | **Thursday 2350 to 0545** |
| 36 | **Week 45** |
| 8 | **Weekend Works** |
| 1 | **Manchester Victoria East to Miles Platting** |
| 1 | **SPO 7.2** |
| 2 | **Phillips Park West to Stalybridge (0020 Sun to 0820 Sun)** |
| 2 | **SPO 8.3** |
| 7 | **Thorn Hill (LNW Junction) to Copley Hill East Junction** |
| 3 | **Zone 5 - SPO ADD 5.7** |
| 1 | **Midweek Works** |
| 1 | **Manchester Victoria East to Miles Platting** |
| 1 | **SPO 7.2** |
| 2 | **Phillips Park West to Stalybridge** |
| 2 | **SPO 8.3** |
| 7 | **Thorn Hill (LNW Junction) to Copley Hill East Junction 36m 0ch to 42m 0ch** |
| 3 | **Monday 2350 to 0545** |
| 1 | **Tuesday 2350 to 0545** |
| 2 | **Wednesday 2350 to 0545** |
| 4 | **Thursday 2350 to 0545** |
| 37 | **Week 46** |
| 8 | **Weekend Works** |
| 1 | **Manchester Victoria East to Miles Platting** |
| 1 | **SPO 7.2** |
| 2 | **Phillips Park West to Stalybridge (0020 Sun to 0820 Sun)** |
| 2 | **SPO 8.3** |
| 7 | **Thorn Hill (LNW Junction) to Copley Hill East Junction (0040 Sat - 0510 Sat) 32m28ch to 42m02ch** |
| 3 | **Zone 5 - SPO ADD 5.7** |
| 1 | **Midweek Works** |
| 1 | **Manchester Victoria East to Miles Platting** |
| 1 | **SPO 7.2** |
| 2 | **Phillips Park West to Stalybridge** |
| 2 | **SPO 8.3** |
| 7 | **Thorn Hill (LNW Junction) to Copley Hill East Junction 36m 0ch to 42m 0ch** |
| 3 | **Monday 2350 to 0545** |
| 1 | **Tuesday 2350 to 0545** |

| WBS | Activity |
| --- | --- |
| 2 | **Wednesday 2350 to 0545** |
| 4 | **Thursday 2350 to 0545** |
| 41 | **Week 47** |
| 8 | **Weekend Works** |
| 1 | **Manchester Victoria East to Miles Platting** |
| 1 | **SPO 7.2** |
| 2 | **Phillips Park West to Stalybridge** |
| 2 | **SPO 8.3** |
| 7 | **Thorn Hill (LNW Junction) to Copley Hill East Junction 32m56ch to 35m20ch** |
| 3 | **Mossley to Diggle (0030 Sun - 0820 Sun) 10m00ch to 14m64ch** |
| 1 | **Midweek Works** |
| 1 | **Manchester Victoria East to Miles Platting** |
| 1 | **SPO 7.2** |
| 2 | **Phillips Park West to Stalybridge** |
| 2 | **SPO 8.3** |
| 7 | **Thorn Hill (LNW Junction) to Copley Hill East Junction 36m 0ch to 42m 0ch** |
| 42 | **Week 48** |
| 8 | **Weekend Works** |
| 1 | **Manchester Victoria East to Miles Platting** |
| 1 | **SPO 7.2** |
| 2 | **Phillips Park West to Stalybridge** |
| 2 | **SPO 8.3** |
| 7 | **Thorn Hill (LNW Junction) to Copley Hill East Junction (0040 Sat - 0510 Sat) 38m 20ch to 39m 60ch** |
| 3 | **Zone 5 - SPO ADD 5.7** |
| 1 | **Midweek Works** |
| 1 | **Manchester Victoria East to Miles Platting** |
| 1 | **SPO 7.2** |
| 2 | **Phillips Park West to Stalybridge** |
| 2 | **SPO 8.3** |
| 7 | **Thorn Hill (LNW Junction) to Copley Hill East Junction 36m 0ch to 42m 0ch** |
| 43 | **Week 49** |
| 8 | **Man Vic East to Miles Platting (0040 Sun to 0710 Sun) 0m0ch to 1m45ch (MVM/MVL1) to 1m30ch MVM/MPR1** |
| 1 | **Manchester Victoria East to Miles Platting** |
| 1 | **SPO 7.2** |
| 2 | **Phillips Park West to Stalybridge** |
| 2 | **SPO 8.3** |
| 7 | **Thorn Hill (LNW Junction) to Copley Hill East Junction** |
| 3 | **Zone 5 - SPO ADD 5.7** |
| 1 | **Midweek Works** |
| 1 | **Manchester Victoria East to Miles Platting** |
| 1 | **SPO 7.2** |
| 2 | **Phillips Park West to Stalybridge** |
| 2 | **SPO 8.3** |
| 7 | **Thorn Hill (LNW Junction) to Copley Hill East Junction 36m 0ch to 42m 0ch** |
| 38 | **Week 50** |
| 8 | **Weekend Works** |
| 1 | **Man Vic East to Miles Platting (0040-0710 Sun) 0m0ch-1m45ch (MVM/MVL1) 0m0ch- 1m30ch (MVM/MPR1)** |
| 1 | **SPO 7.2** |
| 2 | **Phillips Park West to Stalybridge (0020 Sun to 0820 Sun)** |
| 2 | **SPO 8.3** |
| 7 | **Thorn Hill (LNW Junction) to Copley Hill East Jn (0040 Sat to 0510 Sat) 32m28ch - 42m02ch** |
| 3 | **Zone 5 - SPO ADD 5.7** |
| 1 | **Midweek Works** |
| 1 | **Manchester Victoria East to Miles Platting** |
| 1 | **SPO 7.2** |
| 2 | **Phillips Park West to Stalybridge** |
| 2 | **SPO 8.3** |
| 7 | **Thorn Hill (LNW Junction) to Copley Hill East Junction 36m 0ch to 42m 0ch** |
| 3 | **Monday 2350 to 0545** |
| 1 | **Tuesday 2350 to 0545** |
| 2 | **Wednesday 2350 to 0545** |
| 4 | **Thursday 2350 to 0545** |
| 40 | **Week 51** |
| 8 | **Weekend Works** |
| 1 | **Man Vic East to Miles Platting (0040-0710 Sun) 0m0ch-1m45ch (MVM/MVL1) 0m0ch- 1m30ch (MVM/MPR1)** |
| 2 | **Phillips Park West to Stalybridge (0020 Sun to 0820 Sun)** |
| 2 | **SPO 8.3** |
| 1 | **Midweek Works** |
| 1 | **Manchester Victoria East to Miles Platting** |
| 1 | **SPO 7.2** |

| WBS | Activity |
| --- | --- |
| 2 | **Phillips Park West to Stalybridge** |
| 2 | **SPO 8.3** |
| 7 | **Thorn Hill (LNW Junction) to Copley Hill East Junction 36m 0ch to 42m 0ch** |
| 3 | **Monday 2350 to 0545** |
| 1 | **Tuesday 2350 to 0545** |
| 2 | **Wednesday 2350 to 0545** |
| 4 | **Thursday 2350 to 0545** |
| 44 | **Week 52** |
| 8 | **Weekend Works** |
| 1 | **Man Vic East to Baguley Fold (0040 Sun - 0710 Sun) 0m0ch to 1m45ch (MVL1) & 1m30ch (MPR1)** |
| 2 | **Phillips Park West to Stalybridge (0020 Sun to 0820 Sun)** |
| 2 | **SPO 8.3** |
| 1 | **Midweek Works** |
| 1 | **Manchester Victoria East to Miles Platting** |
| 1 | **SPO 7.2** |
| 2 | **Phillips Park West to Stalybridge** |
| 2 | **SPO 8.3** |
| 7 | **Thorn Hill (LNW Junction) to Copley Hill East Junction 36m 0ch to 42m 0ch** |
| 3 | **Monday 2350 to 0545** |
| 1 | **Tuesday 2350 to 0545** |
| 2 | **Wednesday 2350 to 0545** |
| 4 | **Thursday 2350 to 0545** |
| 45 | **Week 01** |
| 8 | **Weekend Works** |
| 1 | **Man Vic East to Miles Platting (0040 Sun - 0710 Sun) 0m0ch to 1m45ch (MVL1) & 1m30ch (MPR1)** |
| 2 | **Phillips Park West to Stalybridge (0020 Sun to 0820 Sun)** |
| 2 | **SPO 8.3** |
| 1 | **Midweek Works** |
| 1 | **Manchester Victoria East to Miles Platting** |
| 1 | **SPO 7.2** |
| 2 | **Phillips Park West to Stalybridge** |
| 2 | **SPO 8.3** |
| 7 | **Thorn Hill (LNW Junction) to Copley Hill East Junction 36m 0ch to 42m 0ch** |
| 3 | **Monday 2350 to 0545** |
| 1 | **Tuesday 2350 to 0545** |
| 2 | **Wednesday 2350 to 0545** |
| 4 | **Thursday 2350 to 0545** |
| 39 | **Week 02** |
| 8 | **Weekend Works** |
| 1 | **Man Vic East to Miles Platting (0100 Sun - 0710 Sun) 0m0ch to 1m45ch (MVL1) & 1m30ch (MPR1)** |
| 2 | **Phillips Park West to Stalybridge (0020 Sun to 0820 Sun)** |
| 2 | **SPO 8.3** |
| 7 | **Mirfield East to Copley Hill East Junction (0040 Sat - 0510 Sat) 35m0ch to 40m76ch** |
| 1 | **Midweek Works** |
| 1 | **Manchester Victoria East to Miles Platting** |
| 1 | **SPO 7.2** |
| 2 | **Phillips Park West to Stalybridge** |
| 2 | **SPO 8.3** |
| 7 | **Thorn Hill (LNW Junction) to Copley Hill East Junction 36m 0ch to 42m 0ch** |
| 3 | **Monday 2350 to 0545** |
| 1 | **Tuesday 2350 to 0545** |
| 2 | **Wednesday 2350 to 0545** |
| 4 | **Thursday 2350 to 0545** |
| 46 | **Week 04** |
| 1 | **Weekend** |
| 1 | **Mirfield East to Copley Hill East Junction (0040 Sat - 0510 Sat) 35m0ch to 39m40ch** |
| 2 | **Baguley Fold to Stalybridge (0020 Sun to 0820 Sun) 3m45ch - 7m39ch** |
| 2 | **Midweek** |
| 1 | **Monday - Thorn Hill (LNW Junction) to Copley Hill East Junction (2350 to 0545) 35m 0ch to 38m24ch** |
| 2 | **Thursday - Thorn Hill (LNW Junction) to Copley Hill East Junction (2350 to 0545) 35m 0ch to 39m40ch** |
| 51 | **Week 05** |
| 47 | **Week 06** |
| 1 | **Weekend** |
| 2 | **Man Victoria East to Miles Platting (0040 Sun - 0710 Sun) 0m0ch - 1m45ch & 1m30ch (MPR)** |
| 1 | **Mirfield East to Copley Hill East Junction (0040 Sat - 0510 Sat) 35m0ch to 39m40ch** |
| 3 | **Stalybridge to Guide Bridge (0030 Mon - 0510 Mon) 7m0ch - 8m0ch & 2m8ch - 0m20ch** |
| 2 | **Midweek** |
| 50 | **Week 07** |
| 2 | **Weekend** |
| 1 | **Man Victoria East to Baguley Fold (0040 Sun - 0710 Sun) 0m0ch - 2m42ch & 1m30ch / 1m59ch-1m79ch PPA** |

| WBS | Activity |
| --- | --- |
| 48 | **Week 08** |
| 1 | **Weekend** |
| 1 | **Mirfield East to Copley Hill East Junction (0040 Sat - 0510 Sat) 38m20ch to 41m60ch** |
| 2 | **Mirfield East to Copley Hill East Junction (2350 Sat - 0820 Sun) 38m20ch to 41m40ch** |
| 2 | **Midweek** |
| 49 | **Week 10** |
| 1 | **Weekend** |
| 2 | **Mirfield East to Copley Hill East Junction (0040 Sat - 0510 Sat) 32m16ch to 38m40ch** |
| 3 | **Mirfield East to Copley Hill East Junction (0001 Sun - 1600 Sun) 36m25ch to 38m30ch** |
| 2 | **Midweek** |
| 1 | **Monday- Thornhill LNW Jn - Copley Hill (2350 - 0545) 33m40ch - 35m62ch** |
| 2 | **Tuesday- Thornhill LNW Jn - Copley Hill (2350 - 0545) 33m40ch - 35m62ch** |
| 3 | **Wednesday- Thornhill LNW Jn - Copley Hill (2350 - 0545) 35m20ch - 36m20ch** |
| 4 | **Thursday- Thornhill LNW Jn - Copley Hill (2350 - 0545) 35m20ch - 36m20ch** |
| 52 | **Week 11-1** |
| 1 | **Weekend** |
| 1 | **Manchester Victoria - Phillips Park West (0040 Sun - 0710 Sun) 0m - 1m45ch** |
| 53 | **Week 12-1** |
| 1 | **Weekend** |
| 1 | **Manchester Victoria - Phillips Park West (0040 Sun - 0710 Sun) 0m40ch - 1m45ch** |
| 2 | **Mirfield East to Copley Hill (0040 Sat - 0510 Sat) 33m40ch - 41m00ch** |
| 54 | **Week 13-1** |
| 1 | **Weekend** |
| 1 | **Manchester Victoria - Phillips Park West (0040 Sun - 0710 Sun) 0m - 2m42ch inc. PPA's** |
| 55 | **Week 14-1** |
| 1 | **Weekend** |
| 1 | **Manchester Victoria - Phillips Park West (0040 Sun - 0710 Sun) 0m - 1m45ch** |
| 57 | **Week 15-1** |
| 1 | **Weekend** |
| 1 | **Manchester Victoria - Phillips Park West (0040 Sun - 0710 Sun) 0m - 1m45ch** |
| 56 | **Week 16-1** |
| 8 | **Weekend Works** |
| 1 | **Manchester Victoria East to Philips Park West (0040 Sun to 0710 Sun) - 0m 60ch to 2m 00ch** |
| 2 | **Ravensthorpe to Copley Hill East (0040 Sat - 0510 Sat) 33m60ch - 41m60ch** |
| 7 | **Mirfield East to Copley Hill (2350 Sat - 0820 Sun) 32m33ch - 38m35ch** |
| 3 | **Thorn Hill (LNW Junction) to Copley Hill East Junction (0015 Sun to 0730 Sun) - 38m 20ch to 39m 60ch** |
| 3 | **Zone 5 - SPO ADD 5.7** |
| 1 | **Midweek Works** |
| 1 | **Ravensthorpe to Whitehall West Junc (2350 Mon - 0545 Tues) 41m72ch - 185m20ch** |
| 2 | **Ravensthorpe to Whitehall West Junc (2350 Tues - 0545 Weds) 41m72ch - 185m20ch** |
| 3 | **Ravensthorpe to Whitehall West Junc (2350 Weds - 0545 Tues) 41m40ch to 185m20ch** |
| 7 | **Ravensthorpe to Whitehall West Junc (2350 Thurs - 0545 Weds) 41m40ch to 185m20ch** |
| 58 | **Week 17-1** |
| 1 | **Weekend** |
| 1 | **Manchester Victoria - Phillips Park West (0040 Sun - 0710 Sun) 0m - 1m45ch** |
| 59 | **Week 18-1** |
| 8 | **Weekend Works** |
| 1 | **Ravensthorpe to Copley Hill East (0040 Sat - 0510 Sat) 33m60ch - 41m60ch-1** |
| 2 | **Ravensthorpe to Copley Hill East (0040 Sat - 0510 Sat) 32m28ch - 38m40ch** |
| 7 | **Mirfield East to Copley Hill (2350 Sat - 0820 Sun) 32m16ch - 38m35ch** |
| 3 | **Thorn Hill (LNW Junction) to Copley Hill East Junction (0015 Sun to 0730 Sun) - 38m 20ch to 39m 60ch** |
| 3 | **Zone 5 - SPO ADD 5.7** |
| 1 | **Midweek Works** |
| 1 | **Manchester Victoria East to Miles Platting** |
| 1 | **SPO 7.2** |
| 2 | **Phillips Park West to Stalybridge** |
| 2 | **SPO 8.3** |
| 7 | **Thorn Hill (LNW Junction) to Copley Hill East Junction** |
| 3 | **Zone 5 - SPO ADD 5.7** |
| 60 | **Week 20-1** |
| 8 | **Weekend Works** |
| 1 | **Manchester Victoria East to Philips Park West (0040 Sun to 0710 Sun) - 0m 60ch to 2m 00ch** |
| 2 | **Ravensthorpe to Copley Hill East (0050 Sat - 0510 Sat) 33m40ch - 38m40ch** |
| 7 | **Mirfield East to Copley Hill (2350 Sat - 0820 Sun) 32m16ch - 38m35ch** |
| 3 | **Thorn Hill (LNW Junction) to Copley Hill East Junction (0015 Sun to 0730 Sun) - 38m 20ch to 39m 60ch** |
| 3 | **Zone 5 - SPO ADD 5.7** |
| 1 | **Midweek Works** |
| 1 | **Manchester Victoria East to Miles Platting** |
| 1 | **SPO 7.2** |
| 2 | **Phillips Park West to Stalybridge** |

| WBS | Activity |
| --- | --- |
| 2 | **SPO 8.3** |
| 7 | **Thorn Hill (LNW Junction) to Copley Hill East Junction** |
| 3 | **Zone 5 - SPO ADD 5.7** |
| 61 | **Week 22-1** |
| 8 | **Weekend Works** |
| 1 | **Manchester Victoria East to Philips Park West (0040 Sun to 0710 Sun) - 0m 60ch to 2m 00ch** |
| 2 | **Ravensthorpe to Copley Hill East (0040 Sat - 0510 Sat) 33m40ch - 38m40ch** |
| 7 | **Mirfield East to Copley Hill (2350 Sat - 0820 Sun) 32m16ch - 38m35ch** |
| 3 | **Thorn Hill (LNW Junction) to Copley Hill East Junction (0015 Sun to 0730 Sun) - 38m 20ch to 39m 60ch** |
| 3 | **Zone 5 - SPO ADD 5.7** |
| 1 | **Midweek Works** |
| 1 | **Mon - Ravensthorpe to Copley Hill (2350 - 0545) 35m - 41m60ch** |
| 2 | **Tues- - Ravensthorpe to Copley Hill (2350 - 0545) 35m - 41m60ch** |
| 3 | **Weds- - Ravensthorpe to Copley Hill (2350 - 0545) 35m - 41m60ch** |
| 7 | **Thurs- - Ravensthorpe to Copley Hill (2350 - 0545) 35m - 41m60ch** |
| 62 | **Week 24-1** |
| 8 | **Weekend Works** |
| 1 | **Manchester Victoria East to Philips Park West (0040 Sun to 0710 Sun) - 0m 60ch to 2m 00ch** |
| 2 | **Ravensthorpe to Copley Hill East (0040 Sat - 0510 Sat) 33m40ch - 38m40ch** |
| 7 | **Mirfield East to Copley Hill (2350 Sat - 0820 Sun) 33m20ch - 38m60ch** |
| 3 | **Thorn Hill (LNW Junction) to Copley Hill East Junction (0015 Sun to 0730 Sun) - 33m 20ch to 38m 60ch** |
| 3 | **Zone 5 - SPO ADD 5.7** |
| 1 | **Midweek Works** |
| 1 | **Mon - Ravensthorpe to Copley Hill** |
| 2 | **Tues- - Ravensthorpe to Copley Hill** |
| 3 | **Weds- - Ravensthorpe to Copley Hill** |
| 7 | **Thurs- - Ravensthorpe to Copley Hill** |
| 63 | **Week 26-1** |
| 8 | **Weekend Works** |
| 1 | **Manchester Victoria East to Philips Park West (0040 Sun to 0710 Sun) - 0m 60ch to 2m 00ch** |
| 2 | **Ravensthorpe to Copley Hill East (0040 Sat - 0510 Sat) 33m60ch - 41m60ch** |
| 7 | **Mirfield East to Copley Hill (2350 Sat - 0820 Sun) 32m16ch - 38m35ch** |
| 3 | **Thorn Hill (LNW Junction) to Copley Hill East Junction (0015 Sun to 0730 Sun) - 38m 20ch to 39m 60ch** |
| 3 | **Zone 5 - SPO ADD 5.7** |
| 1 | **Midweek Works** |
| 1 | **Mon - Ravensthorpe to Copley Hill** |
| 2 | **Tues- - Ravensthorpe to Copley Hill** |
| 3 | **Weds- - Ravensthorpe to Copley Hill** |
| 7 | **Thurs- - Ravensthorpe to Copley Hill** |
| 64 | **Week 28-1** |
| 8 | **Weekend Works** |
| 1 | **Manchester Victoria East to Philips Park West (0040 Sun to 0710 Sun) - 0m 60ch to 2m 00ch** |
| 2 | **Ravensthorpe to Copley Hill East (0040 Sat - 0510 Sat) 33m60ch - 41m60ch** |
| 7 | **Mirfield East to Copley Hill (2350 Sat - 0820 Sun) 32m16ch - 38m35ch** |
| 3 | **Thorn Hill (LNW Junction) to Copley Hill East Junction (0015 Sun to 0730 Sun) - 38m 20ch to 39m 60ch** |
| 3 | **Zone 5 - SPO ADD 5.7** |
| 1 | **Midweek Works** |
| 1 | **Mon - Ravensthorpe to Copley Hill** |
| 2 | **Tues- - Ravensthorpe to Copley Hill** |
| 3 | **Weds- - Ravensthorpe to Copley Hill** |
| 7 | **Thurs- - Ravensthorpe to Copley Hill** |
| 65 | **Week 30-1** |
| 8 | **Weekend Works** |
| 1 | **Manchester Victoria East to Philips Park West (0040 Sun to 0710 Sun) - 0m 60ch to 2m 00ch** |
| 2 | **Ravensthorpe to Copley Hill East (0040 Sat - 0510 Sat) 33m60ch - 41m60ch** |
| 7 | **Mirfield East to Copley Hill (2350 Sat - 0820 Sun) 32m16ch - 38m35ch** |
| 3 | **Thorn Hill (LNW Junction) to Copley Hill East Junction (0015 Sun to 0730 Sun) - 38m 20ch to 39m 60ch** |
| 3 | **Zone 5 - SPO ADD 5.7** |
| 1 | **Midweek Works** |
| 1 | **Mon - Ravensthorpe to Copley Hill** |
| 2 | **Tues- - Ravensthorpe to Copley Hill** |
| 3 | **Weds- - Ravensthorpe to Copley Hill** |
| 7 | **Thurs- - Ravensthorpe to Copley Hill** |
| 69 | **Week 32-1** |
| 8 | **Weekend Works** |
| 1 | **Manchester Victoria East to Philips Park West (0040 Sun to 0710 Sun) - 0m 60ch to 2m 00ch** |
| 2 | **Ravensthorpe to Copley Hill East (0040 Sat - 0510 Sat) 32m28ch - 41m20ch** |
| 7 | **Ravensthorpe to Copley Hill East Jn (0015 Sun - 0845 Sun) 32m20ch - 38m40ch** |
| 3 | **Thorn Hill (LNW Junction) to Copley Hill East Junction (0015 Sun to 0730 Sun) - 38m 20ch to 39m 60ch** |
| 3 | **Zone 5 - SPO ADD 5.7** |

| WBS | Activity |
| --- | --- |
| 1 | **Midweek Works** |
| 1 | **Mon - Ravensthorpe to Copley Hill** |
| 2 | **Tues- - Ravensthorpe to Copley Hill** |
| 3 | **Weds- - Ravensthorpe to Copley Hill** |
| 7 | **Thurs- - Ravensthorpe to Copley Hill** |
| 70 | **Week 33-1** |
| 1 | **Weekend Works** |
| 1 | **Ravensthorpe to Copley Hill East Jn (2355 Sat - 0910 Sun) 32m20ch - 40m17ch** |
| 66 | **Week 34-1** |
| 8 | **Weekend Works** |
| 1 | **Manchester Victoria East to Philips Park West (0040 Sun to 0710 Sun) - 0m 60ch to 2m 00ch** |
| 2 | **Ravensthorpe to Copley Hill East (0040 Sat - 0510 Sat) 32m28ch - 41m20ch** |
| 7 | **Mirfield East to Copley Hill (2350 Sat - 0820 Sun) 32m16ch - 38m35ch** |
| 3 | **Thorn Hill (LNW Junction) to Copley Hill East Junction (0015 Sun to 0730 Sun) - 38m 20ch to 39m 60ch** |
| 3 | **Zone 5 - SPO ADD 5.7** |
| 1 | **Midweek Works** |
| 1 | **Mon - Ravensthorpe to Copley Hill** |
| 2 | **Tues- - Ravensthorpe to Copley Hill** |
| 3 | **Weds- - Ravensthorpe to Copley Hill** |
| 7 | **Thurs- - Ravensthorpe to Copley Hill** |
| 72 | **Week 35-1** |
| 1 | **Weekend Works** |
| 1 | **Ravensthorpe to Copley Hill East Jn (2355 Sat - 0905 Sun) 32m20ch - 38m40ch** |
| 67 | **Week 36-1** |
| 8 | **Weekend Works** |
| 1 | **Manchester Victoria East to Philips Park West (0040 Sun to 0710 Sun) - 0m 60ch to 2m 00ch** |
| 2 | **Ravensthorpe to Copley Hill East (0040 Sat - 0510 Sat) 33m60ch - 41m60ch** |
| 7 | **Mirfield East to Copley Hill (2350 Sat - 0820 Sun) 32m16ch - 38m35ch** |
| 3 | **Thorn Hill (LNW Junction) to Copley Hill East Junction (0015 Sun to 0730 Sun) - 38m 20ch to 39m 60ch** |
| 3 | **Zone 5 - SPO ADD 5.7** |
| 1 | **Midweek Works** |
| 1 | **Mon - Ravensthorpe to Copley Hill** |
| 2 | **Tues- - Ravensthorpe to Copley Hill** |
| 3 | **Weds- - Ravensthorpe to Copley Hill** |
| 7 | **Thurs- - Ravensthorpe to Copley Hill** |
| 71 | **Week 38-1** |
| 8 | **Weekend Works** |
| 1 | **Manchester Victoria East to Philips Park West (0040 Sun to 0710 Sun) - 0m 60ch to 2m 00ch** |
| 2 | **Ravensthorpe to Copley Hill East (0040 Sat - 0510 Sat) 33m60ch - 41m60ch** |
| 7 | **Mirfield East to Copley Hill (2350 Sat - 0820 Sun) 32m16ch - 38m35ch** |
| 3 | **Thorn Hill (LNW Junction) to Copley Hill East Junction (0015 Sun to 0730 Sun) - 38m 20ch to 39m 60ch** |
| 3 | **Zone 5 - SPO ADD 5.7** |
| 1 | **Midweek Works** |
| 1 | **Mon - Ravensthorpe to Copley Hill** |
| 2 | **Tues- - Ravensthorpe to Copley Hill** |
| 3 | **Weds- - Ravensthorpe to Copley Hill** |
| 7 | **Thurs- - Ravensthorpe to Copley Hill** |
| 68 | **Week 39-1** |
| 8 | **Weekend Works** |
| 1 | **Manchester Victoria East to Philips Park West (0040 Sun to 0710 Sun) - 0m 60ch to 2m 00ch** |
| 2 | **Ravensthorpe to Copley Hill East (0040 Sat - 0510 Sat) 33m60ch - 41m60ch** |
| 7 | **Mirfield East to Copley Hill (2350 Sat - 0820 Sun) 32m16ch - 38m35ch** |
| 3 | **Thorn Hill (LNW Junction) to Copley Hill East Junction (0015 Sun to 0730 Sun) - 38m 20ch to 39m 60ch** |
| 3 | **Zone 5 - SPO ADD 5.7** |
| 1 | **Midweek Works** |
| 1 | **Xmas Blockade** |
| 2 | **Tues- - Ravensthorpe to Copley Hill** |
| 3 | **Weds- - Ravensthorpe to Copley Hill** |
| 7 | **Thurs- - Ravensthorpe to Copley Hill** |
| 73 | **Week 42-1** |
| 1 | **Weekend Works** |
| 1 | **Ravensthorpe to Copley Hill (0040 Sat - 0510 Sat) 32m20ch - 41m20ch** |
| 2 | **MIdweek Works** |
| 74 | **Week 44-1** |
| 1 | **Weekend Works** |
| 1 | **Ravensthorpe to Copley Hill (0040 Sat - 0510 Sat) 32m 30ch - 41m 70ch** |
| 75 | **Week 46-1** |
| 1 | **Weekend Works** |
| 1 | **Ravensthorpe to Copley Hill (0040 Sat - 0510 Sat) 33m 50ch - 40m 10ch** |
| 76 | **Week 48-1** |

| ID | WBS | Activity | Duration | Start | Finish | Predecessors | Complete | Constraint |
| --- | --- | --- | --- | --- | --- | --- | --- | --- |
|  | 1 | **Weekend Works** |  |  |  |  |  |  |
|  | 1 | **Ravensthorpe to Copley Hill (0040 Sat - 0510 Sat) 32m 30ch - 41m 70ch** |  |  |  |  |  |  |
|  | 2 | **Bradley to Copley Hill (2355 Sat - 0915 Sun) 38m19ch - 39m00ch** |  |  |  |  |  |  |
|  | 77 | **Week 49-1** |  |  |  |  |  |  |
|  | 1 | **Weekend Works** |  |  |  |  |  |  |
|  | 1 | **Ravensthorpe to Copley Hill (0040 Sat - 0510 Sat) 32m 30ch - 41m 70ch** |  |  |  |  |  |  |
|  | 2 | **Bradley to Copley Hill (2355 Sat - 0915 Sun) 38m19ch - 39m00ch** |  |  |  |  |  |  |
|  | 78 | **Week 51-1** |  |  |  |  |  |  |
|  | 1 | **Weekend Works** |  |  |  |  |  |  |
|  | 1 | **Ravensthorpe to Copley Hill (2355 Sat - 0915 Sun) 38m20ch - 41m00ch** |  |  |  |  |  |  |
|  | 79 | **Week 52-1** |  |  |  |  |  |  |
|  | 1 | **Weekend Works** |  |  |  |  |  |  |
|  | 2 | **Ravensthorpe to Copley Hill (0040 Sat - 0510 Sat) 32m26ch - 40m02ch** |  |  |  |  |  |  |
|  | 1 | **Bradley to Copley Hill (2355 Sat - 0915 Sun) 38m19ch - 39m00ch** |  |  |  |  |  |  |
|  | 2 | **Midweek Works** |  |  |  |  |  |  |
|  | 4 | **Mon Night - Ravensthorpe to Copley Hill (2350 - 0515) 38m40ch to 41m70ch** |  |  |  |  |  |  |
|  | 3 | **Tues Night - Ravensthorpe to Copley Hill (2350 - 0515) 38m40ch to 41m70ch** |  |  |  |  |  |  |
|  | 1 | **Weds Night - Ravensthorpe to Copley Hill (2350 - 0515) 38m40ch to 41m70ch** |  |  |  |  |  |  |
|  | 2 | **Thurs Night - Ravensthorpe to Copley Hill (2350 - 0515) 38m40ch to 41m70ch** |  |  |  |  |  |  |
|  | 80 | **Week 01-1** |  |  |  |  |  |  |
|  | 1 | **Weekend** |  |  |  |  |  |  |
|  | 1 | **Ravensthorpe to Copley Hill East Jct (0040 Sat - 0510 Sat) 32m 28ch - 41m 40ch** |  |  |  |  |  |  |
|  | 81 | **Week 05-1** |  | 2020-05-02 | 2020-05-02 |  |  |  |
|  | 1 | **Weekend** |  | 2020-05-02 | 2020-05-02 |  |  |  |
|  | 1 | **Ravensthorpe to Copley Hill East Jct (0040 Sat - 0510 Sat) 32m28ch - 42m 02ch** |  | 2020-05-02 | 2020-05-02 |  |  |  |
| A72570 |  | Drainage Walkout - Asset Location, Asset Data, Dye Trace & CCTV | 1d | 2020-05-02 A | 2020-05-02 A | A72630 (other project) | 100% | start on or after 2020-05-02 |

| ID | WBS | Activity | Duration | Start | Finish | Predecessors | Total float | Free float | Calendar |
| --- | --- | --- | --- | --- | --- | --- | --- | --- | --- |
|  | 2 | **Midweek** |  |  |  |  |  |  |  |
|  | 1 | **Weds Night - Ravensthorpe to Copley Hill (2350 - 0545) 38m28ch - 185m25ch** |  |  |  |  |  |  |  |
|  | 82 | **Week 07-1** |  |  |  |  |  |  |  |
|  | 1 | **Weekend** |  |  |  |  |  |  |  |
|  | 1 | **Ravensthorpe To Copley Hill (0040 Sat - 0510 Sat) 32m28ch - 41m40ch** |  |  |  |  |  |  |  |
|  | 83 | **Week 09-1** |  |  |  |  |  |  |  |
|  | 1 | **Weekend** |  |  |  |  |  |  |  |
|  | 1 | **Ravensthorpe To Copley Hill (0040 Sat - 0510 Sat) 32m28ch - 41m40ch** |  |  |  |  |  |  |  |
|  | 84 | **Week 11-2** |  |  |  |  |  |  |  |
|  | 1 | **Midweek** |  |  |  |  |  |  |  |
|  | 1 | **Monday Night - Ravensthorpe to Copley Hill (2350 - 0545) 32m26ch - 41m68ch** |  |  |  |  |  |  |  |
|  | 2 | **Tuesday Night - Ravensthorpe to Copley Hill (2350 - 0545) 32m26ch - 41m75ch** |  |  |  |  |  |  |  |
|  | 3 | **Wednesday Night - Ravensthorpe to Copley Hill (2350 - 0545) 32m26ch - 41m75ch** |  |  |  |  |  |  |  |
|  | 4 | **Thursday Night - Ravensthorpe to Copley Hill (2350 - 0545) 32m26ch - 41m75ch** |  |  |  |  |  |  |  |
|  | 85 | **Week 17-2** |  |  |  |  |  |  |  |
|  | 1 | **Midweek** |  |  |  |  |  |  |  |
|  | 4 | **Mon Night - Ravensthorpe to Copley Hill (23:50 Mon to 05:45 Tues) 32m20ch to 185m26ch** |  |  |  |  |  |  |  |
|  | 3 | **Tues Night - Ravensthorpe to Copley Hill (23:50 Tues to 05:45 Wed) 32m20ch to 185m26ch** |  |  |  |  |  |  |  |
|  | 2 | **Weds Night - Ravensthorpe to Copley Hill (23:50 Wed to 05:45 Thur) 32m20ch to 185m26ch** |  |  |  |  |  |  |  |
|  | 1 | **Thurs Night - Ravensthorpe to Copley Hill (23:50 Thur to 05:45 Fri) 32m20ch to 185m26ch** |  |  |  |  |  |  |  |
|  | 11 | **TO BE CONFIRMED** |  |  |  |  |  |  |  |
|  | 83 | **Unable To Complete Due To Working Methodologies - COVID-19** |  |  |  |  |  |  |  |
|  | 5 | **Survey Factual Reports** |  | 2020-07-06 | 2020-07-17 |  |  |  |  |
|  | 15 | **Morley Tunnel Trial Pits - Previous Information Not Satisfying Needs Of Design** |  | 2020-07-06 | 2020-07-17 |  |  |  |  |
| A56610 |  | Compile Draft Trial Hole Report | 10d | 2020-07-06 | 2020-07-17 | TRA1_15652 (other project), TRA1_15662 (other project), TRA1_15672 (other project), TRA1_15682 (other project) | 60d | 0d | A03 5 Day Workweek (BH & Xmas as Work) |

| WBS | Activity |
| --- | --- |
| 7 | **Boreholes - BH5601, BH5602 & BH5603** |
| 8 | **Additonal 8no. Trial Pits Morley Tunnel** |
| 1 | **Footbridge Foundations** |
| 1 | **Boreholes** |
| 5 | **Morley Factual Report - Telecoms Surveys (Cable Head, SISS & Cable Route)** |
| 9 | **OLE Foundations** |
| 1 | **Boreholes** |
| 2 | **Trial Pits** |
| 10 | **Retaining Wall Foundations** |
| 1 | **Trial Pits** |
| 11 | **Platform Fill** |
| 1 | **Trial Pits** |
| 12 | **Riser Wall Foundations** |
| 1 | **Trial Pits** |
| 13 | **Track Bed Investigation** |
| 1 | **ABS** |
| 2 | **Window Samples** |
| 3 | **Trial Pits** |
| 14 | **Structural Coring** |
| 2 | **Morley Factual Report - 53XX Additional Scope - Coring - Morley Tunnel** |
| 4 | **Morley** |
| 2 | **Morley Factual Report - Gauging** |
| 1 | **Morley Factual Report - Existing Services Survey (Buried Services)** |
| 19 | **Morley Factual Report - Topographical Survey (2500m East of Morley Tunnel) Off Track?** |
| 4 | **Morley Factual Report - E&P Asset Survey (On & Off Track Report)** |
| 5 | **Morley Factual Report - Telecoms Asset Survey On & Off Track Report)** |
| 8 | **Morley Factual Report - Track Conditon Survey** |
| 9 | **Morley Factual Report - ABS (Bam Ritchies)** |
| 10 | **Morley Factual Report - ABS (Central Alliance)** |
| 11 | **Morley Factual Report - Drainage** |
| 12 | **Morley Factual Report - Bridge Inspection Survey** |
| 13 | **Morley Factual Report - Geophysics** |
| 14 | **Morley Factual Report - Window Samples** |
| 15 | **Morley Factual Report - Topographical Survey - Datum (Eastern end of tunnel to 39m)** |
| 16 | **Morley Factual Report - Trial Pits - ADDITIONAL SCOPE** |
| 17 | **Morley Factual Report - Window Samples - ADDITIONAL SCOPE** |
| 7 | **Morley Factual Report - ABS - ADDITIONAL SCOPE (Central Alliance)** |
| 18 | **Morley Factual Report - ABS - ADDITIONAL SCOPE (Bam Ritchies)** |
| 6 | **Topographical Survey - Morley Tunnel & East Of Morley Station** |
| 3 | **Morley Factual Report - 53XX Additional Scope - Drainage/Buried Services** |
| 6 | **Survey Factual Reports - Non-Possession Dependant Surveys** |
| 4 | **Morley** |
| 11 | **Morley Factual Report - Signalling Asset Survey (Off Track)** |
| 15 | **Morley Factual Report - Bore Hole (Off Track)** |
| 8 | **Morley Factual Report - Drainage (Off Track)** |
| 7 | **Morley Factual Report - Pedestrian Flow Survey** |
| 6 | **Morley Factual Report - Asbestos Survey** |
| 1 | **Morley Factual Report - Paint Samples** |
| 2 | **Morley Factual Report - Telecoms - Trough Route Survey (On & Off Track Report)** |
| 3 | **Morley Factual Report - E&P Signalling Power Survey** |

# Project W2B GRIP 4 SI/GI Programme

Schedule from Primavera P6, 2020-06-08 to 2020-06-08, data date 2020-07-05, A marks actual dates.

## Calendars

- A04 7 Day Workweek (BH & Xmas as Work): Mon-Sun 08:00-12:00, 13:00-17:00.

## Schedule

| WBS | Activity | Start | Finish |
| --- | --- | --- | --- |
| 4 | **GRIP 4 DESIGN** |  |  |
| 2 | **Reporting Milestones** |  |  |
| 18 | **Survey Milestones** |  |  |
| 20 | **Non-Possession Dependant Surveys** |  |  |
| 24 | **Week 41** |  |  |
| 26 | **Week 43** |  |  |
| 5 | **Week 48** |  |  |
| 6 | **Week 49** |  |  |
| 7 | **Week 50** |  |  |
| 8 | **Week 51** |  |  |
| 9 | **Week 52** |  |  |
| 10 | **Week 1** |  |  |
| 11 | **Week 2** |  |  |
| 12 | **Week 3** |  |  |
| 13 | **Week 4** |  |  |
| 14 | **Week 5** |  |  |
| 15 | **Week 6** |  |  |
| 16 | **Week 7** |  |  |
| 17 | **Week 8** |  |  |
| 18 | **Week 9** |  |  |
| 19 | **Week 10** |  |  |
| 20 | **Week 11** |  |  |
| 1 | **Week 12** |  |  |
| 2 | **Week 13** |  |  |
| 3 | **Week 14** |  |  |
| 4 | **Week 15** |  |  |
| 22 | **Week 16** |  |  |
| 25 | **Week 17** |  |  |
| 27 | **Week 18** |  |  |
| 28 | **Week 19** |  |  |
| 29 | **Week 20** |  |  |
| 31 | **Week 21** |  |  |
| 30 | **Week 22** |  |  |
| 33 | **Week 23** |  |  |
| 32 | **Week 24** |  |  |
| 34 | **Week 25** |  |  |
| 35 | **Week 26** |  |  |
| 36 | **Week 27** |  |  |
| 21 | **Week 28** |  |  |
| 23 | **Week 29** |  |  |
| 37 | **Week 30** |  |  |
| 19 | **Possession Dependant Surveys** | 2020-06-08 | 2020-06-08 |
| 10 | **Week 10** |  |  |
| 8 | **Weekend Works** |  |  |
| 1 | **Area 1 - Man Victoria East to Miles Platting** |  |  |
| 2 | **Area 2 - Phillips Park West to Stalybridge** |  |  |
| 3 | **Area 3 - Stalybridge to Diggle Junction** |  |  |
| 4 | **Diggle Junction to Huddersfield (0030 Mon - 0515 Mon) 15m11ch - 23m70ch** |  |  |
| 5 | **Area 4b - Diggle Junction to Heaton Lodge** |  |  |
| 6 | **Area 5 - Heaton Lodge to Thorn Hill (LNW Junction)** |  |  |
| 7 | **Area 6 - Thorn Hill (LNW Junction) to Copley Hill East Junction** |  |  |
| 7 | **Midweek Works** |  |  |
| 7 | **Thorn Hill (LNW Junction) to Copley Hill East Junction** |  |  |
| 11 | **Week 11** |  |  |
| 8 | **Weekend Works** |  |  |
| 1 | **Area 1 - Man Victoria East to Miles Platting** |  |  |
| 2 | **Area 2 - Phillips Park West to Stalybridge** |  |  |
| 3 | **Area 3 - Stalybridge to Diggle Junction** |  |  |
| 4 | **Diggle Junction to Huddersfield (0040 Mon - 0510 Mon) 15m11ch - 22m00ch** |  |  |
| 5 | **Area 4b - Diggle Junction to Heaton Lodge** |  |  |
| 6 | **Area 5 - Heaton Lodge to Thorn Hill (LNW Junction)** |  |  |
| 7 | **Area 6 - Thorn Hill (LNW Junction) to Copley Hill East Junction** |  |  |
| 7 | **Midweek Works** |  |  |
| 4 | **Mon Night- Stalybridge to Greenfield (0020 Tues - 0515 Tues) 8m00ch to 12m00ch** |  |  |
| 5 | **Tues NIght- Stalybridge to Greenfield (0020 Weds - 0515 Weds) 8m05ch to 12m00ch** |  |  |
| 7 | **Thorn Hill (LNW Junction) to Copley Hill East Junction** |  |  |
| 15 | **Week 15** |  |  |
| 8 | **Weekend Works** |  |  |
| 1 | **Area 1 - Man Victoria East to Miles Platting** |  |  |
| 2 | **Diggle to Huddersfield (0030 Mon - 0515 Mon) 15m11ch - 22m0ch** |  |  |

| WBS | Activity |
| --- | --- |
| 3 | **Area 3 - Stalybridge to Diggle Junction** |
| 4 | **Area 4a - Diggle Junction to Huddersfield** |
| 5 | **Area 4b - Diggle Junction to Heaton Lodge** |
| 6 | **Area 5 - Heaton Lodge to Thorn Hill (LNW Junction)** |
| 7 | **Area 6 - Thorn Hill (LNW Junction) to Copley Hill East Junction** |
| 7 | **Midweek Works** |
| 7 | **Thorn Hill (LNW Junction) to Copley Hill East Junction** |
| 16 | **Week 16** |
| 8 | **Weekend Works** |
| 1 | **Area 1 - Man Victoria East to Miles Platting** |
| 2 | **Area 2 - Phillips Park West to Stalybridge (0020 Sun to 0820 Sun)** |
| 3 | **Area 3 - Stalybridge to Diggle Junction** |
| 4 | **Diggle Junction to Huddersfield (0030 Mon - 0515 Mon) 15m11ch - 22m0ch** |
| 5 | **Area 4b - Diggle Junction to Heaton Lodge** |
| 6 | **Area 5 - Heaton Lodge to Thorn Hill (LNW Junction)** |
| 7 | **Area 6 - Thorn Hill (LNW Junction) to Copley Hill East Junction** |
| 7 | **Midweek Works** |
| 7 | **Thorn Hill (LNW Junction) to Copley Hill East Junction** |
| 17 | **Week 17** |
| 8 | **Weekend Works** |
| 1 | **Area 1 - Man Victoria East to Miles Platting** |
| 2 | **Diggle to huddersfield (0030 Mon - 0515 Mon) 15m11ch - 19m00ch** |
| 3 | **Area 3 - Stalybridge to Diggle Junction** |
| 4 | **Area 4a - Diggle Junction to Huddersfield** |
| 5 | **Area 4b - Diggle Junction to Heaton Lodge** |
| 6 | **Area 5 - Heaton Lodge to Thorn Hill (LNW Junction)** |
| 7 | **Area 6 - Thorn Hill (LNW Junction) to Copley Hill East Junction** |
| 7 | **Midweek Works** |
| 7 | **Thorn Hill (LNW Junction) to Copley Hill East Junction** |
| 18 | **Week 18** |
| 8 | **Weekend Works** |
| 1 | **Area 1 - Man Victoria East to Miles Platting** |
| 2 | **Area 2 - Phillips Park West to Stalybridge (0020 Sun to 0820 Sun)** |
| 3 | **Area 3 - Stalybridge to Diggle Junction** |
| 4 | **Diggle Junction to Huddersfield (0030 Mon - 0515 Mon) 19m10ch - 25m51ch** |
| 5 | **Area 4b - Diggle Junction to Heaton Lodge** |
| 6 | **Area 5 - Heaton Lodge to Thorn Hill (LNW Junction)** |
| 7 | **Area 6 - Thorn Hill (LNW Junction) to Copley Hill East Junction** |
| 7 | **Midweek Works** |
| 7 | **Thorn Hill (LNW Junction) to Copley Hill East Junction** |
| 19 | **Week 19** |
| 8 | **Weekend Works** |
| 1 | **Area 1 - Man Victoria East to Miles Platting** |
| 2 | **Area 2 - Phillips Park West to Stalybridge (0020 Sun to 0820 Sun)** |
| 3 | **Area 3 - Stalybridge to Diggle Junction** |
| 4 | **Diggle Junction to Huddersfield (0030 Mon - 0515 Mon) 15m11ch - 21m21ch** |
| 5 | **Area 4b - Diggle Junction to Heaton Lodge** |
| 6 | **Area 5 - Heaton Lodge to Thorn Hill (LNW Junction)** |
| 7 | **Area 6 - Thorn Hill (LNW Junction) to Copley Hill East Junction** |
| 7 | **Midweek Works** |
| 7 | **Thorn Hill (LNW Junction) to Copley Hill East Junction** |
| 20 | **Week 20** |
| 8 | **Weekend Works** |
| 1 | **Area 1 - Man Victoria East to Miles Platting** |
| 2 | **Area 2 - Phillips Park West to Stalybridge (0020 Sun to 0820 Sun)** |
| 3 | **Area 3 - Stalybridge to Diggle Junction** |
| 4 | **Diggle Junction to Huddersfield (0030 Mon - 0515 Mon) 19m10ch - 24m60ch** |
| 5 | **Area 4b - Diggle Junction to Heaton Lodge** |
| 6 | **Area 5 - Heaton Lodge to Thorn Hill (LNW Junction)** |
| 7 | **Area 6 - Thorn Hill (LNW Junction) to Copley Hill East Junction** |
| 7 | **Midweek Works** |
| 7 | **Thorn Hill (LNW Junction) to Copley Hill East Junction** |
| 21 | **Week 21** |
| 8 | **Weekend Works** |
| 1 | **Area 1 - Man Victoria East to Miles Platting** |
| 2 | **Area 2 - Phillips Park West to Stalybridge (0020 Sun to 0820 Sun)** |
| 3 | **Area 3 - Stalybridge to Diggle Junction** |
| 4 | **Diggle to Huddersfield (0030 Mon - 0510 Mon) 15m11ch - 25m51ch** |
| 5 | **Area 4b - Diggle Junction to Heaton Lodge** |
| 6 | **Area 5 - Heaton Lodge to Thorn Hill (LNW Junction)** |

| WBS | Activity |
| --- | --- |
| 7 | **Area 6 - Thorn Hill (LNW Junction) to Copley Hill East Junction** |
| 7 | **Midweek Works** |
| 7 | **Thorn Hill (LNW Junction) to Copley Hill East Junction** |
| 22 | **Week 22** |
| 8 | **Weekend Works** |
| 1 | **Area 1 - Man Victoria East to Miles Platting** |
| 2 | **Area 2 - Phillips Park West to Stalybridge (0020 Sun to 0820 Sun)** |
| 3 | **Area 3 - Stalybridge to Diggle Junction** |
| 4 | **Diggle Junction to Huddersfield (0040 Mon - 0510 Mon) 15m11ch - 25m51ch** |
| 5 | **Area 4b - Diggle Junction to Heaton Lodge** |
| 6 | **Area 5 - Heaton Lodge to Thorn Hill (LNW Junction)** |
| 7 | **Area 6 - Thorn Hill (LNW Junction) to Copley Hill East Junction** |
| 7 | **Midweek Works** |
| 7 | **Thorn Hill (LNW Junction) to Copley Hill East Junction** |
| 23 | **Week 23** |
| 8 | **Weekend Works** |
| 1 | **Area 1 - Man Victoria East to Miles Platting** |
| 2 | **Lockwood to Penistone (0001 Sun - 0830 Sun) 1m20ch - 13m10ch PEH** |
| 3 | **Diggle to Huddersfield (0040 Mon - 0510 Mon) 0m02ch - 1m20ch PEH** |
| 4 | **Area 4a - Diggle Junction to Huddersfield** |
| 5 | **Area 4b - Diggle Junction to Heaton Lodge** |
| 6 | **Area 5 - Heaton Lodge to Thorn Hill (LNW Junction)** |
| 7 | **Area 6 - Thorn Hill (LNW Junction) to Copley Hill East Junction** |
| 7 | **Midweek Works** |
| 7 | **Thorn Hill (LNW Junction) to Copley Hill East Junction** |
| 26 | **Week 26** |
| 8 | **Weekend Works** |
| 1 | **Area 1 - Man Victoria East to Miles Platting** |
| 2 | **Area 2 - Phillips Park West to Stalybridge (0020 Sun to 0820 Sun)** |
| 3 | **Area 3 - Stalybridge to Diggle Junction** |
| 4 | **Diggle Junction to Huddersfield (0040 Mon - 0510 Mon) 19m55ch - 25m00ch** |
| 5 | **Area 4b - Diggle Junction to Heaton Lodge** |
| 6 | **Area 5 - Heaton Lodge to Thorn Hill (LNW Junction)** |
| 7 | **Area 6 - Thorn Hill (LNW Junction) to Copley Hill East Junction** |
| 7 | **Midweek Works** |
| 7 | **Thorn Hill (LNW Junction) to Copley Hill East Junction** |
| 29 | **Week 29** |
| 8 | **Weekend Works** |
| 1 | **Area 1 - Man Victoria East to Miles Platting** |
| 2 | **Area 2 - Phillips Park West to Stalybridge (0020 Sun to 0820 Sun)** |
| 3 | **Area 3 - Stalybridge to Diggle Junction** |
| 4 | **Area 4a - Diggle Junction to Huddersfield** |
| 5 | **Area 4b - Diggle Junction to Heaton Lodge** |
| 6 | **Area 5 - Heaton Lodge to Thorn Hill (LNW Junction)** |
| 7 | **Area 6 - Thorn Hill (LNW Junction) to Copley Hill East Junction** |
| 7 | **Midweek Works** |
| 7 | **Mon - Greenfield to Marsden (0020 - 0510) 12m52ch - 18m24ch** |
| 1 | **Tues - Greenfield to Marsden (0020 - 0510) 12m52ch - 18m24ch** |
| 2 | **Weds - Diggle Junction to Huddersfield (0040 - 0510) 15m11ch - 25m51ch** |
| 3 | **Thurs - Diggle Junction to Huddersfield (0040 - 0510) 15m11ch - 25m51ch** |
| 31 | **Week 31** |
| 8 | **Weekend Works** |
| 1 | **Area 1 - Man Victoria East to Miles Platting** |
| 2 | **Area 2 - Phillips Park West to Stalybridge (0020 Sun to 0820 Sun)** |
| 3 | **Area 3 - Stalybridge to Diggle Junction** |
| 4 | **Diggle Junction to Huddersfield (0040 Mon - 0510 Mon) 18m60ch - 23m75ch** |
| 5 | **Area 4b - Diggle Junction to Heaton Lodge** |
| 6 | **Area 5 - Heaton Lodge to Thorn Hill (LNW Junction)** |
| 7 | **Area 6 - Thorn Hill (LNW Junction) to Copley Hill East Junction** |
| 7 | **Midweek Works** |
| 7 | **Thorn Hill (LNW Junction) to Copley Hill East Junction** |
| 32 | **Week 32** |
| 8 | **Weekend Works** |
| 1 | **Area 1 - Man Victoria East to Miles Platting** |
| 2 | **Area 2 - Phillips Park West to Stalybridge (0020 Sun to 0820 Sun)** |
| 3 | **Area 3 - Stalybridge to Diggle Junction** |
| 4 | **Diggle Junction to Huddersfield (0040 Mon - 0510 Mon) 19m20ch - 24m70ch** |
| 5 | **Area 4b - Diggle Junction to Heaton Lodge** |
| 6 | **Area 5 - Heaton Lodge to Thorn Hill (LNW Junction)** |
| 7 | **Area 6 - Thorn Hill (LNW Junction) to Copley Hill East Junction** |

| WBS | Activity |
| --- | --- |
| 7 | **Midweek Works** |
| 7 | **Thorn Hill (LNW Junction) to Copley Hill East Junction** |
| 51 | **Week 35** |
| 8 | **Weekend Works** |
| 1 | **Area 1 - Man Victoria East to Miles Platting** |
| 2 | **Area 2 - Phillips Park West to Stalybridge (0020 Sun to 0820 Sun)** |
| 3 | **Area 3 - Stalybridge to Diggle Junction** |
| 4 | **Diggle Junction to Huddersfield (0040 Mon - 0510 Mon) 15m11ch - 24m20ch** |
| 5 | **Area 4b - Diggle Junction to Heaton Lodge** |
| 6 | **Area 5 - Heaton Lodge to Thorn Hill (LNW Junction)** |
| 7 | **Area 6 - Thorn Hill (LNW Junction) to Copley Hill East Junction** |
| 1 | **Midweek** |
| 3 | **Monday Night - Ashton Moss to Greenfield (0020 - 0515) 5m70ch to 10m40ch & SAJ** |
| 4 | **Tuesday Night - Ashton Moss to Greenfield (0020 - 0515) 5m70ch to 8m44ch & SAJ** |
| 5 | **Wednesday Night - Ashton Moss to Greenfield (0020 - 0515) 5m70ch to 10m40ch** |
| 6 | **Thursday Night - Ashton Moss to Greenfield (0020 - 0515) 5m70ch to 10m40ch & SAJ** |
| 52 | **Week 36** |
| 8 | **Weekend Works** |
| 1 | **Area 1 - Man Victoria East to Miles Platting** |
| 2 | **Area 2 - Phillips Park West to Stalybridge (0020 Sun to 0820 Sun)** |
| 3 | **Area 3 - Stalybridge to Diggle Junction** |
| 4 | **Diggle Junction to Huddersfield (0030 Mon - 0450 Mon) 15m11ch - 24m20ch** |
| 5 | **Area 4b - Diggle Junction to Heaton Lodge** |
| 6 | **Area 5 - Heaton Lodge to Thorn Hill (LNW Junction)** |
| 7 | **Area 6 - Thorn Hill (LNW Junction) to Copley Hill East Junction** |
| 1 | **Midweek** |
| 3 | **Monday Night - Ashton Moss to Greenfield (0020 - 0515) 5m70ch to 10m40ch & SAJ** |
| 4 | **Tuesday Night - Ashton Moss to Greenfield (0020 - 0515) 5m70ch to 8m44ch & SAJ** |
| 5 | **Wednesday Night - Ashton Moss to Greenfield (0020 - 0515) 5m70ch to 10m40ch** |
| 6 | **Thursday Night - Ashton Moss to Greenfield (0020 - 0515) 5m70ch to 10m40ch & SAJ** |
| 53 | **Week 37** |
| 8 | **Weekend Works** |
| 1 | **Area 1 - Man Victoria East to Miles Platting** |
| 2 | **Area 2 - Phillips Park West to Stalybridge (0020 Sun to 0820 Sun)** |
| 3 | **Area 3 - Stalybridge to Diggle Junction** |
| 4 | **Diggle Junction to Huddersfield (0030 Mon - 0450 Mon) 18m20ch - 24m60ch** |
| 5 | **Area 4b - Diggle Junction to Heaton Lodge** |
| 6 | **Area 5 - Heaton Lodge to Thorn Hill (LNW Junction)** |
| 7 | **Area 6 - Thorn Hill (LNW Junction) to Copley Hill East Junction** |
| 1 | **Midweek** |
| 3 | **Monday Night - Ashton Moss to Greenfield (0020 - 0515) 5m70ch to 10m40ch & SAJ** |
| 4 | **Tuesday Night - Ashton Moss to Greenfield (0020 - 0515) 5m70ch to 8m44ch & SAJ** |
| 5 | **Wednesday Night - Ashton Moss to Greenfield (0020 - 0515) 5m70ch to 10m40ch** |
| 6 | **Thursday Night - Ashton Moss to Greenfield (0020 - 0515) 5m70ch to 10m40ch & SAJ** |
| 35 | **Week 38** |
| 1 | **Weekend Works** |
| 1 | **Diggle to Huddersfield (0040 Mon - 0510 Mon) 15m11ch - 25m51ch** |
| 54 | **Week 41** |
| 1 | **Midweek Works** |
| 1 | **Mon - Diggle to Heaton Lodge (0020 - 0515) 21m55ch - 25m53ch** |
| 2 | **Tues - Diggle to Heaton Lodge (0020 - 0515) 21m55ch - 25m53ch** |
| 3 | **Weds - Diggle to Heaton Lodge (0020 - 0515) 21m55ch - 25m53ch** |
| 4 | **Thurs - Diggle to Heaton Lodge (0020 - 0515) 21m55ch - 25m53ch** |
| 55 | **Week 42** |
| 1 | **Weekend Works** |
| 1 | **Diggle to Huddersfield (0030 - 0510) 18m30ch - 25m20ch** |
| 36 | **Week 43** |
| 1 | **Weekend Works** |
| 1 | **Diggle to Huddersfield (0040 Mon - 0510 Mon) 18m30ch - 25m20ch** |
| 37 | **Week 44** |
| 1 | **Weekend Works** |
| 1 | **Diggle to Huddersfield (0040 Mon - 0510 Mon) 18m35ch - 24m55ch** |
| 38 | **Week 45** |
| 1 | **Weekend Works** |
| 1 | **Diggle to Huddersfield (0040 Mon - 0510 Mon) 18m30ch - 25m50ch** |
| 40 | **Week 47** |
| 1 | **Weekend Works** |
| 2 | **Guide Bridge to Mossley (0030 Mon - 0510 Mon) 7m00ch - 10m40ch** |
| 1 | **Diggle to Huddersfield (0040 Mon - 0510 Mon) 15m11ch - 25m00ch** |
| 41 | **Week 48** |

| WBS | Activity |
| --- | --- |
| 1 | **Weekend Works** |
| 2 | **Diggle to Huddersfield (0040 Mon - 0510 Mon) 15m11ch - 25m51ch.** |
| 3 | **Guide Bridge to Mossley (0030 Mon - 0450 Mon) 7m0ch to 10m40ch** |
| 1 | **Diggle to Huddersfield (0040 Mon - 0510 Mon) 15m11ch - 25m51ch** |
| 42 | **Week 49** |
| 1 | **Weekend Works** |
| 2 | **Diggle to Heaton Lodge (0030 Sun - 0845 Sun) 18m0ch to 24m0ch** |
| 1 | **Diggle to Huddersfield (0040 Mon - 0510 Mon) 15m11ch - 25m51ch *POSSESSION CANCELLED*** |
| 3 | **Guide Bridge to Mossley (0030 Mon - 0450 Mon) 7m0ch to 10m40ch** |
| 43 | **Week 50** |
| 1 | **Weekend Works** |
| 4 | **Philips Park to Mossley (0020 Sun - 0820 Sun) 3m00ch - 9m40ch & 0m00ch - 0m40ch AMJ** |
| 2 | **Diggle to Heaton Lodge (0030 Sun - 0845 Sun) 18m00ch - 24m40ch** |
| 3 | **Guide Bridge to Mossley (0030 Mon - 0450 Mon) 7m0ch to 10m40ch** |
| 1 | **Diggle to Huddersfield (0040 Mon - 0510 Mon) 15m11ch - 25m51ch** |
| 44 | **Week 51** |
| 1 | **Weekend Works** |
| 3 | **Philips Park West to Mossley (0020 Sun - 0820 Sun) 3m00ch - 10m40ch** |
| 2 | **Guide Bridge to Mossley (0030 Mon - 0450 Mon) 7m0ch to 10m40ch** |
| 1 | **Diggle to Heaton Lodge (0015 Sun - 0845 Sun) 18m00ch - 24m00ch *POSSESSION TBC*** |
| 45 | **Week 52** |
| 1 | **Weekend Works** |
| 3 | **Diggle to Heaton Lodge (0015 Sun - 0845 Sun) 18m00ch - 24m00ch** |
| 1 | **Diggle to Huddersfield (0040 Mon - 0510 Mon) 15m11ch - 25m00ch** |
| 2 | **Guide Bridge to Mossley (0030 Mon - 0450 Mon) 7m0ch to 10m40ch** |
| 46 | **.Week 53** |
| 1 | **Weekend Works** |
| 4 | **Diggle to Heaton Lodge (0015 Sun - 0845 Sun) 18m00ch - 24m00ch** |
| 2 | **Baguley Fold to Stalybridge (0020 Sun - 0820 Sun) 2m40ch - 14m60ch** |
| 3 | **Guide Bridge to Mossley (0030 Mon - 0450 Mon) 7m00ch - 14m00ch & SAJ** |
| 1 | **Diggle to Huddersfield (0040 Mon - 0510 Mon) 15m11ch - 25m51ch** |
| 2 | **Midweek Works** |
| 1 | **Monday Night - Stalybridge to Diggle (0005 - 0510) 7m60ch - 14m77ch** |
| 2 | **Tuesday Night - Stalybridge to Diggle (0005 - 0510) 7m60ch - 14m77ch** |
| 3 | **Wednesday Night - Stalybridge to Diggle (0005 - 0510) 7m60ch - 14m34ch** |
| 4 | **Thursday Night - Stalybridge to Diggle (0005 - 0510) 7m60ch - 14m34ch** |
| 47 | **.Week 01** |
| 1 | **Weekend Works** |
| 2 | **Guide Bridge to Mossley (0030 Mon - 0450 Mon) 7m00ch - 14m60ch & SAJ** |
| 1 | **Diggle to Huddersfield (0030 Mon - 0510 Mon) 15m11ch - 25m51ch** |
| 2 | **Midweek Works** |
| 1 | **Monday Night** |
| 2 | **Tuesday Night** |
| 3 | **Wednesday Night** |
| 4 | **Thursday Night** |
| 48 | **.Week 02** |
| 1 | **Weekend Works** |
| 2 | **Diggle to Huddersfield (0040 Mon - 0510 Mon) 15m11ch - 25m51ch** |
| 1 | **Guide Bridge to Mossley (0030 Mon - 0450 Mon) 7m00ch - 14m60ch & SAJ** |
| 2 | **Midweek Works** |
| 1 | **Monday Night** |
| 2 | **Tuesday Night** |
| 3 | **Wednesday Night** |
| 4 | **Thursday Night** |
| 49 | **.Week 03** |
| 1 | **Weekend** |
| 2 | **Diggle to Huddersfield (0040 Mon - 0510 Mon) 21m00ch - 25m51ch & PEH** |
| 1 | **Guide Bridge to Mossley (0030 Mon - 0450 Mon) 7m00ch - 14m00ch & SAJ** |
| 2 | **Midweek Works** |
| 1 | **Monday Night** |
| 2 | **Tuesday Night** |
| 3 | **Wednesday Night** |
| 4 | **Thursday Night** |
| 50 | **.Week 04** |
| 1 | **Weekend** |
| 1 | **Guide Bridge to Mossley (0030 Mon - 0450 Mon) 7m00ch - 14m60ch & SAJ** |
| 2 | **Diggle to Huddersfield (0040 Mon - 0510 Mon) 15m11ch - 25m51ch & PEH** |
| 2 | **Midweek Works** |
| 1 | **Monday Night** |
| 2 | **Tuesday Night** |

| ID | WBS | Activity | Duration | Start | Finish | Predecessors | Complete | Constraint |
| --- | --- | --- | --- | --- | --- | --- | --- | --- |
|  | 3 | **Wednesday Night** |  |  |  |  |  |  |
|  | 4 | **Thursday Night** |  |  |  |  |  |  |
|  | 56 | **.Week 05** |  |  |  |  |  |  |
|  | 1 | **Weekend** |  |  |  |  |  |  |
|  | 1 | **Guide Bridge to Mossley (0030 Mon - 0450 Mon) 7m00ch - 14m00ch & SAJ** |  |  |  |  |  |  |
|  | 2 | **Diggle to Huddersfield (0030 Mon - 0510 Mon) 15m11ch - 25m51ch MVL3 & 0m02ch - 0m40ch PEH** |  |  |  |  |  |  |
|  | 2 | **.Week 06** |  |  |  |  |  |  |
|  | 1 | **Weekend** |  |  |  |  |  |  |
|  | 5 | **Guide Bridge to Mossley (0030 Mon - 0450 Mon) 6m00ch - 14m00ch & SAJ** |  |  |  |  |  |  |
|  | 6 | **Diggle to Huddersfield (0030 Mon - 0510 Mon) 15m11ch - 25m51ch MVL3 & 0m02ch - 0m40ch PEH** |  |  |  |  |  |  |
|  | 2 | **Midweek** |  |  |  |  |  |  |
|  | 6 | **LNW** |  |  |  |  |  |  |
|  | 1 | **Mon Night - Ashton Moss to Diggle (0001 - 0510) 5m70ch - 14m40ch** |  |  |  |  |  |  |
|  | 2 | **Tues Night - Ashton Moss to Diggle (0001 - 0510) 5m70ch - 14m40ch** |  |  |  |  |  |  |
|  | 3 | **Weds Night - Ashton Moss to Diggle (0001 - 0510) 5m70ch - 14m40ch** |  |  |  |  |  |  |
|  | 4 | **Thurs Night - Ashton Moss to Diggle (0001 - 0510) 5m70ch - 14m40ch** |  |  |  |  |  |  |
|  | 7 | **LNE** |  |  |  |  |  |  |
|  | 1 | **Mon Night - Diggle to Huddersfield (0020 - 0515) 24m00ch - 29m35ch & BBW** |  |  |  |  |  |  |
|  | 5 | **Thurs Night - Diggle to Huddersfield (0020 - 0515) 15m11ch to 24m45ch** |  |  |  |  |  |  |
|  | 3 | **.Week 07** |  |  |  |  |  |  |
|  | 1 | **Weekend** |  |  |  |  |  |  |
|  | 1 | **Guide Bridge to Mossley (0030 Mon - 0450 Mon) 6m00ch - 14m00ch & SAJ** |  |  |  |  |  |  |
|  | 2 | **Diggle to Huddersfield (0030 Mon - 0510 Mon) 15m11ch - 25m51ch MVL3 & 0m02ch - 0m40ch PEH** |  |  |  |  |  |  |
|  | 1 | **.Week 08** |  |  |  |  |  |  |
|  | 1 | **Weekend** |  |  |  |  |  |  |
|  | 3 | **Diggle to Heaton Lodge (0040 Sun - 0820 Sun) 15m11ch - 28m65ch & 0m02ch to 0m40ch (PEH)** |  |  |  |  |  |  |
|  | 1 | **Guide Bridge to Mossley (0030 Mon - 0450 Mon) 6m00ch - 13m77ch & SAJ** |  |  |  |  |  |  |
|  | 2 | **Diggle to Huddersfield (0030 Mon - 0510 Mon) 15m11ch - 25m51ch MVL3 & 0m02ch - 0m40ch PEH** |  |  |  |  |  |  |
|  | 4 | **Week 09** |  |  |  |  |  |  |
|  | 1 | **Weekend** |  |  |  |  |  |  |
|  | 1 | **Guide Bridge to Mossley (0030 Mon - 0450 Mon) 6m00ch to 13m77ch (MVL1/2/3) & SAJ** |  |  |  |  |  |  |
|  | 2 | **Diggle to Huddersfield (0030 Mon - 0510 Mon) 15m11ch - 25m51ch MVL3 & PEH - RERAIL @ 16m24ch** |  |  |  |  |  |  |
|  | 5 | **Week 10-1** |  | 2020-06-08 | 2020-06-08 |  |  |  |
|  | 1 | **Weekend** |  | 2020-06-08 | 2020-06-08 |  |  |  |
|  | 1 | **Guide Bridge to Mossley (0030 Mon - 0450 Mon) 6m00ch to 13m77ch (MVL1/2/3) & SAJ** |  |  |  |  |  |  |
|  | 2 | **Diggle to Huddersfield (0030 Mon - 0510 Mon) 15m11ch - 25m51ch MVL3 & 0m02ch - 1m20ch PEH** |  | 2020-06-08 | 2020-06-08 |  |  |  |
| A76330 |  | E&P Survey | 1d | 2020-06-08 A | 2020-06-08 A | A72630 (other project) | 100% | start on or after 2020-06-08 |

| WBS | Activity |
| --- | --- |
| 6 | **Week 11-1** |
| 1 | **Weekend** |
| 1 | **Guide Bridge to Mossley (0030 Mon - 0450 Mon) 6m00ch to 13m77ch (MVL1/2/3) & SAJ** |
| 2 | **Diggle to Huddersfield (0030 Mon - 0510 Mon) 15m11ch - 25m51ch MVL3 & 0m02ch - 0m40ch PEH** |
| 7 | **Week 12** |
| 2 | **Weekend** |
| 3 | **Guide Bridge to Mossley (0030 Mon - 0450 Mon) 6m00ch to 13m77ch (MVL1/2/3) & SAJ** |
| 1 | **Diggle to Huddersfield (0030 Mon - 0510 Mon) 15m11ch - 25m51ch MVL3 & 0m02ch - 0m40ch PEH** |
| 1 | **Midweek** |
| 1 | **Mon Night - Diggle to Huddersfield (0020 - 0515) 24m50ch - 29m40ch** |
| 2 | **Weds Night - Diggle to Huddersfield (0020 - 0515) 21m20ch - 29m40ch** |
| 3 | **Ashton Moss to Diggle (00:01 - 05:10 Tues / ) 5m70ch to 11m0ch (MVL1/2/3)** |
| 4 | **Ashton Moss to Diggle (00:01 - 05:10 Wed / ) 5m70ch to 11m0ch (MVL1/2/3)** |
| 5 | **Ashton Moss to Diggle (00:01 - 05:10 Thurs ) 5m70ch to 11m0ch (MVL1/2/3)** |
| 6 | **Ashton Moss to Diggle (00:01 - 05:10 Fri / ) 5m70ch to 11m0ch (MVL1/2/3)** |
| 8 | **Week 13** |
| 1 | **Weekend** |
| 1 | **Guide Bridge to Mossley (0030 Mon - 0450 Mon) 6m00ch to 13m77ch (MVL1/2/3) & SAJ** |
| 2 | **Diggle to Huddersfield (0030 Mon - 0510 Mon) 15m11ch - 25m51ch MVL3 & 0m02ch - 0m40ch PEH** |
| 9 | **Week 14** |
| 1 | **Weekend** |
| 1 | **Guide Bridge to Mossley (0030 Mon - 0450 Mon) 6m00ch to 13m77ch (MVL1/2/3) & SAJ** |
| 2 | **Diggle to Huddersfield (0030 Mon - 0510 Mon) 15m11ch - 25m51ch MVL3 & 0m02ch - 0m40ch PEH** |
| 12 | **Week 15-1** |
| 1 | **Weekend** |
| 2 | **Guide Bridge to Mossley (0030 Mon - 0450 Mon) 6m00ch to 13m77ch (MVL1/2/3) & SAJ** |
| 1 | **Diggle to Huddersfield (0030 Mon - 0510 Mon) 15m11ch - 25m51ch MVL3 & 0m02ch - 1m00ch PEH** |
| 13 | **Week 16-1** |
| 1 | **Weekend** |
| 3 | **Guide Bridge to Diggle (00:30 Mon to 04:50 Mon ) 6m00ch - 13m77ch & 2m08ch - 0m20ch SAJ** |
| 1 | **Diggle to Heaton Lodge (0040 Sun - 0820 Sun) 15m11ch - 28m00ch & 0m02ch to 1m00ch (PEH)** |
| 2 | **Diggle to Huddersfield (0030 Mon - 0510 Mon) 15m11ch - 25m51ch MVL3 & 0m02ch - 0m60ch PEH** |
| 14 | **Week 17-1** |
| 1 | **Weekend** |
| 1 | **Diggle to Huddersfield (0030 Mon - 0510 Mon) 15m11ch - 25m51ch MVL3 & 0m02ch - 0m40ch PEH** |
| 2 | **Guide Bridge to Diggle (00:30 Mon to 04:50 Mon) 6m0ch to 13m77ch (MVL1/2/3)** |
| 24 | **Week 18-1** |
| 1 | **Weekend** |
| 1 | **Diggle to Huddersfield (0030 Mon - 0510 Mon) 14m74ch - 25m51ch MVL3 & 0m02ch - 0m40ch PEH** |
| 2 | **Guide Bridge to Diggle (00:30 Mon to 04:50 Mon) 6m0ch to 13m77ch (MVL1/2/3)** |
| 3 | **MIdweek** |
| 1 | **Ashton Moss to Diggle (00:01 to 05:10 Tues) 10m50ch to 13m60c (MVL3)** |
| 2 | **Ashton Moss to Diggle (00:01 to 05:10 Wed) 10m50ch to 13m60c (MVL3)** |
| 3 | **Ashton Moss to Diggle (00:01 to 05:10 Thurs) 10m50ch to 13m60c (MVL3)** |
| 4 | **Ashton Moss to Diggle (00:01 to 05:10 Fri) 10m50ch to 13m60c (MVL3)** |
| 25 | **Week 19-1** |
| 1 | **Weekend** |
| 1 | **Guide Bridge to Diggle (00:30 Mon to 04:50 Mon) 6m0ch to 13m77ch (MVL1/2/3)** |
| 2 | **Diggle to Huddersfield (0030 Mon - 0510 Mon) 15m11ch - 25m51ch MVL3 & 0m02ch - 0m40ch PEH** |
| 27 | **Week 20-1** |
| 1 | **Weekend** |
| 1 | **Guide Bridge to Diggle (00:30 Mon to 04:50 Mon) 6m0ch to 13m77ch (MVL1/2/3)** |
| 2 | **(New WBS)** |
| 28 | **Week 21-1** |
| 1 | **Weekend** |
| 1 | **Guide Bridge to Diggle (00:30 Mon to 04:50 Mon) 6m0ch to 13m77ch (MVL1/2/3)** |
| 30 | **Week 22-1** |
| 1 | **Weekend** |
| 1 | **Guide Bridge to Diggle (00:30 Mon to 04:50 Mon) 6m0ch to 13m77ch (MVL1/2/3)** |
| 2 | **Diggle to Huddersfield (0030 Mon - 0510 Mon) 15m11ch - 25m51ch MVL3 & 0m02ch - 0m40ch PEH** |
| 57 | **Week 23-1** |
| 1 | **Weekend** |
| 1 | **Diggle to Heaton Lodge (0040 Sun - 0820 Sun) 15m11ch - 28m00ch & 0m02ch to 0m40ch (PEH)** |
| 2 | **Diggle to Huddersfield (0030 Mon - 0510 Mon) 15m11ch - 25m51ch MVL3 & 0m02ch - 0m40ch PEH** |
| 33 | **Week 24** |
| 1 | **Weekend** |
| 1 | **Guide Bridge to Diggle (00:30 Mon to 04:50 Mon) 6m0ch to 13m77ch (MVL1/2/3)** |
| 34 | **Week 25** |
| 1 | **Weekend** |
| 1 | **Guide Bridge to Diggle (00:30 Mon to 04:50 Mon) 6m0ch to 13m77ch (MVL1/2/3)** |

| WBS | Activity |
| --- | --- |
| 39 | **Week 26-1** |
| 1 | **Weekend** |
| 1 | **Guide Bridge to Diggle (00:30 Mon to 04:50 Mon) 6m0ch to 13m77ch (MVL1/2/3)** |
| 3 | **WORKS CANCELLED DUE TO COVID-19 AWAITING INSTRUCTION TO REPLAN** |
| 1 | **Survey Factual Reports - Possession Dependant Surveys** |
| 48 | **SAJ/12 - CLARENCE STREET - Track Level** |
| 1 | **Clarence Street - Topographical Survey & Point Cloud** |
| 2 | **Section A (Xm Ych - Xm Zch)** |
| 1 | **Design Team - Structures** |
| 2 | **Factual Report - Trial Pits - Structure MVL3/X, MVL3/Y, MVL3/Z** |
| 1 | **Structure MVL3/X - Live PW Logs For Review** |
| 2 | **Structure MVL3/Y - Live PW Logs For Review** |
| 3 | **Structure MVL3/Z - Live PW Logs For Review** |
| 1 | **Factual Report - Coring - Structure MVL3/X, MVL3/Y, MVL3/Z** |
| 3 | **Structure MVL3/X - Live PW Logs For Review** |
| 2 | **Structure MVL3/Y - Live PW Logs For Review** |
| 1 | **Structure MVL3/Z - Live PW Logs For Review** |
| 3 | **Design Team - Geotech** |
| 2 | **Factual Report - Trial Pits (Xm Ych - Xm Zch)** |
| 1 | **Upload Of Engineers Logs** |
| 1 | **Factual Report - ABS (Xm Ych - Xm Zch)** |
| 1 | **Upload Of Engineers Logs & Schedules** |
| 1 | **Drainage** |
| 2 | **Stalybridge Tunnel** |
| 1 | **Scout Tunnel** |
| 33 | **W2A Unplanned Works** |
